# -Grp3-A3

Schedule from MS Project, 2020-10-29 to 2022-11-22.

## Calendars

- Standard: Mon-Fri 08:00-12:00, 13:00-17:00; Sat-Sun off.

## Resources

| Resource |
| --- |
| Technical Architect |
| Performance Engineer |
| Security Analyst |
| Quality Assurance |
| Client Resource |
| Front End Developer |
| Business Analyst - 1 |
| Business Analyst - 2 |
| Front End Developer -1 |
| Front End Developer - 2 |
| Front End Developer -3 |
| Front End Developer - 4 |

## Schedule

| ID | WBS | Task | Duration | Start | Finish | Predecessors | Total slack | Free slack | Constraint | Resources | Work |
| --- | --- | --- | --- | --- | --- | --- | --- | --- | --- | --- | --- |
| 1 | 1 | **Project** | 539d | 2020-10-29 | 2022-11-22 |  | 0d |  |  |  | 16160h |
| 2 | 1.1 | **Cycle 1 Feature Sets: Implement the spaceship, basic character animation, basic gameplay environment & basic UI controls, and basic sabotaging capabilities.** | 514d | 2020-10-29 | 2022-10-18 |  | 25d |  |  |  | 7840h |
| 3 | 1.1.1 | **Requirements** | 70d | 2020-10-29 | 2021-02-03 |  | 469d |  |  |  | 320h |
| 4 | 1.1.1.1 | Requirements Elicitation | 15d | 2020-10-29 | 2020-11-18 |  | 469d | 0d |  | Business Analyst - 1 | 120h |
| 5 | 1.1.1.2 | Documentation of requirements | 15d | 2020-12-31 | 2021-01-20 | 4 | 469d | 0d |  | Business Analyst - 1 | 120h |
| 6 | 1.1.1.3 | Review requirements | 10d | 2021-01-21 | 2021-02-03 | 5 | 469d |  |  | Client Resource | 80h |
| 7 | 1.1.2 | **User Interface design** | 105d | 2020-10-29 | 2021-03-24 |  | 434d |  |  |  | 320h |
| 8 | 1.1.2.1 | Initial Wireframe design | 10d | 2020-10-29 | 2020-11-11 |  | 434d | 0d |  | Business Analyst - 2 | 80h |
| 9 | 1.1.2.2 | Review of wireframe | 5d | 2020-11-12 | 2020-11-18 | 8 | 434d | 0d |  | Client Resource | 40h |
| 10 | 1.1.2.3 | Create design based off feedback | 20d | 2021-02-04 | 2021-03-03 | 9 | 434d | 0d |  | Business Analyst - 2 | 160h |
| 11 | 1.1.2.4 | Review design | 5d | 2021-03-18 | 2021-03-24 | 10 | 434d |  |  | Client Resource | 40h |
| 12 | 1.1.3 | **Software Design** | 30d | 2021-02-08 | 2021-03-19 |  | 437d |  |  |  | 160h |
| 13 | 1.1.3.1 | Create design document | 10d | 2021-02-08 | 2021-03-05 |  | 437d | 0d | start no earlier than 2021-02-08 | Technical Architect | 80h |
| 14 | 1.1.3.2 | Review of design | 10d | 2021-03-08 | 2021-03-19 | 13 | 437d |  |  | Technical Architect | 80h |
| 15 | 1.1.4 | **F1. As a player, I will be dropped into the spaceship at the beginning of the round** | 300d | 2020-12-30 | 2022-02-22 |  | 195d |  |  |  | 1120h |
| 16 | 1.1.4.1 | **F1.1 While awaiting the maximum player count, the player will be placed into a spaceship lobby while awaiting more players** | 300d | 2020-12-30 | 2022-02-22 |  | 195d |  |  |  | 800h |
| 17 | 1.1.4.1.1 | **F1.1.1 When players join the match, the counter will increase showing how many players are remaining to start the match** | 295d | 2020-12-30 | 2022-02-15 |  | 200d |  |  |  | 480h |
| 18 | 1.1.4.1.1.1 | **Software Development** | 280d | 2021-01-13 | 2022-02-08 |  | 200d |  |  |  | 80h |
| 19 | 1.1.4.1.1.1.1 | Development of software | 5d | 2021-01-13 | 2021-01-19 |  | 200d | 0d | finish no earlier than 2021-01-12 | Front End Developer -1 | 40h |
| 20 | 1.1.4.1.1.1.2 | Code Review | 5d | 2022-02-02 | 2022-02-08 | 19 | 200d | 0d | finish no earlier than 2021-01-12 | Front End Developer -1 | 40h |
| 21 | 1.1.4.1.1.2 | **Unit Testing** | 280d | 2021-01-20 | 2022-02-15 |  | 200d |  |  |  | 80h |
| 22 | 1.1.4.1.1.2.1 | Creation of test cases | 5d | 2021-01-20 | 2021-01-26 |  | 470d | 270d | start no earlier than 2021-01-06 | Front End Developer - 2 | 40h |
| 23 | 1.1.4.1.1.2.2 | Execution of test cases | 5d | 2022-02-09 | 2022-02-15 | 22, 20 | 200d |  | start no earlier than 2021-01-06 | Front End Developer - 2 | 40h |
| 24 | 1.1.4.1.1.3 | **F1.1.3 The host of the game has the ability to start the game at anytime after four people have joined the game lobby** | 285d | 2020-12-30 | 2022-02-01 |  | 210d |  |  |  | 320h |
| 25 | 1.1.4.1.1.3.1 | **Software Development** | 35d | 2020-12-30 | 2021-02-16 |  | 210d |  |  |  | 160h |
| 26 | 1.1.4.1.1.3.1.1 | Development of software | 10d | 2020-12-30 | 2021-01-12 |  | 210d | 0d | finish no earlier than 2021-01-12 | Front End Developer -1 | 80h |
| 27 | 1.1.4.1.1.3.1.2 | Code Review | 10d | 2021-02-03 | 2021-02-16 | 26 | 210d | 0d | finish no earlier than 2021-01-12 | Front End Developer -1 | 80h |

| ID | WBS | Task | Duration | Start | Finish | Predecessors | Total slack | Free slack | Constraint | Resources | Work |
| --- | --- | --- | --- | --- | --- | --- | --- | --- | --- | --- | --- |
| 28 | 1.1.4.1.1.3.2 | **Unit Testing** | 280d | 2021-01-06 | 2022-02-01 |  | 210d |  |  |  | 160h |
| 29 | 1.1.4.1.1.3.2.1 | Creation of test cases | 10d | 2021-01-06 | 2021-01-19 |  | 230d | 20d | start no earlier than 2021-01-06 | Front End Developer - 2 | 80h |
| 30 | 1.1.4.1.1.3.2.2 | Execution of test cases | 10d | 2022-01-19 | 2022-02-01 | 29, 27 | 210d |  | start no earlier than 2021-01-06 | Front End Developer - 2 | 80h |
| 31 | 1.1.4.1.2 | **F1.1.2 When the maximum count of players are met, the game will automatically start** | 90d | 2021-01-06 | 2021-05-11 |  | 400d |  |  |  | 160h |
| 32 | 1.1.4.1.2.1 | **Software Development** | 35d | 2021-01-06 | 2021-02-23 |  | 400d |  |  |  | 80h |
| 33 | 1.1.4.1.2.1.1 | Development of software | 5d | 2021-01-06 | 2021-01-12 |  | 400d | 0d | finish no earlier than 2021-01-12 | Front End Developer -3 | 40h |
| 34 | 1.1.4.1.2.1.2 | Code Review | 5d | 2021-02-17 | 2021-02-23 | 33 | 400d | 0d | finish no earlier than 2021-01-12 | Front End Developer -3 | 40h |
| 35 | 1.1.4.1.2.2 | **Unit Testing** | 90d | 2021-01-06 | 2021-05-11 |  | 400d |  |  |  | 80h |
| 36 | 1.1.4.1.2.2.1 | Creation of test cases | 5d | 2021-01-06 | 2021-01-12 |  | 430d | 30d | start no earlier than 2021-01-06 | Front End Developer - 4 | 40h |
| 37 | 1.1.4.1.2.2.2 | Execution of test cases | 5d | 2021-05-05 | 2021-05-11 | 36, 34 | 400d |  | start no earlier than 2021-01-06 | Front End Developer - 4 | 40h |
| 38 | 1.1.4.1.3 | **F1.1.3 The host of the game has the ability to start the game at anytime after four people have joined the game lobby** | 285d | 2021-01-20 | 2022-02-22 |  | 195d |  |  |  | 160h |
| 39 | 1.1.4.1.3.1 | **Software Development** | 280d | 2021-01-20 | 2022-02-15 |  | 195d |  |  |  | 80h |
| 40 | 1.1.4.1.3.1.1 | Development of software | 5d | 2021-01-20 | 2021-01-26 |  | 195d | 0d | finish no earlier than 2021-01-12 | Front End Developer -1 | 40h |
| 41 | 1.1.4.1.3.1.2 | Code Review | 5d | 2022-02-09 | 2022-02-15 | 40 | 195d | 0d | finish no earlier than 2021-01-12 | Front End Developer -1 | 40h |
| 42 | 1.1.4.1.3.2 | **Unit Testing** | 280d | 2021-01-27 | 2022-02-22 |  | 195d |  |  |  | 80h |
| 43 | 1.1.4.1.3.2.1 | Creation of test cases | 5d | 2021-01-27 | 2021-02-02 |  | 465d | 270d | start no earlier than 2021-01-06 | Front End Developer - 2 | 40h |
| 44 | 1.1.4.1.3.2.2 | Execution of test cases | 5d | 2022-02-16 | 2022-02-22 | 43, 41 | 195d |  | start no earlier than 2021-01-06 | Front End Developer - 2 | 40h |
| 45 | 1.1.4.2 | **F1.2 After the host starts the game, I will be brought into the game map** | 95d | 2021-01-13 | 2021-05-25 |  | 390d |  |  |  | 320h |
| 46 | 1.1.4.2.1 | **F1.2.1 When the host hits start, a countdown will appear on the screen** | 90d | 2021-01-13 | 2021-05-18 |  | 395d |  |  |  | 160h |
| 47 | 1.1.4.2.1.1 | **Software Development** | 85d | 2021-01-13 | 2021-05-11 |  | 395d |  |  |  | 80h |
| 48 | 1.1.4.2.1.1.1 | Development of software | 5d | 2021-01-13 | 2021-01-19 |  | 395d | 0d | start no earlier than 2021-01-13 | Front End Developer -3 | 40h |
| 49 | 1.1.4.2.1.1.2 | Code Review | 5d | 2021-05-05 | 2021-05-11 | 48 | 395d | 0d | start no earlier than 2021-01-13 | Front End Developer -3 | 40h |
| 50 | 1.1.4.2.1.2 | **Unit Testing** | 90d | 2021-01-13 | 2021-05-18 |  | 395d |  |  |  | 80h |
| 51 | 1.1.4.2.1.2.1 | Creation of test cases | 5d | 2021-01-13 | 2021-01-19 |  | 475d | 80d | start no earlier than 2021-01-13 | Front End Developer - 4 | 40h |
| 52 | 1.1.4.2.1.2.2 | Execution of test cases | 5d | 2021-05-12 | 2021-05-18 | 51, 49 | 395d |  | start no earlier than 2021-01-13 | Front End Developer - 4 | 40h |

| ID | WBS | Task | Duration | Start | Finish | Predecessors | Total slack | Free slack | Constraint | Resources | Work |
| --- | --- | --- | --- | --- | --- | --- | --- | --- | --- | --- | --- |
| 53 | 1.1.4.2.2 | **F1.2.2 When the countdown hits zero, all players will start in the cafeteria room on the map** | 90d | 2021-01-20 | 2021-05-25 |  | 390d |  |  |  | 160h |
| 54 | 1.1.4.2.2.1 | **Software Development** | 85d | 2021-01-20 | 2021-05-18 |  | 390d |  |  |  | 80h |
| 55 | 1.1.4.2.2.1.1 | Development of software | 5d | 2021-01-20 | 2021-01-26 |  | 390d | 0d | start no earlier than 2021-01-13 | Front End Developer -3 | 40h |
| 56 | 1.1.4.2.2.1.2 | Code Review | 5d | 2021-05-12 | 2021-05-18 | 55 | 390d | 0d | start no earlier than 2021-01-13 | Front End Developer -3 | 40h |
| 57 | 1.1.4.2.2.2 | **Unit Testing** | 90d | 2021-01-20 | 2021-05-25 |  | 390d |  |  |  | 80h |
| 58 | 1.1.4.2.2.2.1 | Creation of test cases | 5d | 2021-01-20 | 2021-01-26 |  | 470d | 80d | start no earlier than 2021-01-13 | Front End Developer - 4 | 40h |
| 59 | 1.1.4.2.2.2.2 | Execution of test cases | 5d | 2021-05-19 | 2021-05-25 | 58, 56 | 390d |  | start no earlier than 2021-01-13 | Front End Developer - 4 | 40h |
| 60 | 1.1.5 | **F2. As a player, I can interact with objects within the game map** | 335d | 2021-01-27 | 2022-05-10 |  | 140d |  |  |  | 1600h |
| 61 | 1.1.5.1 | **F2.1 As a player, I cannot run through walls** | 295d | 2021-02-17 | 2022-04-05 |  | 165d |  |  |  | 160h |
| 62 | 1.1.5.1.1 | **F2.1.1 The system will not move the character through the wall** | 295d | 2021-02-17 | 2022-04-05 |  | 165d |  |  |  | 160h |
| 63 | 1.1.5.1.1.1 | **Unit Testing** | 270d | 2021-03-17 | 2022-03-29 |  | 165d |  |  |  | 80h |
| 64 | 1.1.5.1.1.1.1 | Creation of test cases | 5d | 2021-03-17 | 2021-03-23 |  | 165d | 0d | finish no earlier than 2021-01-26 | Front End Developer -1 | 40h |
| 65 | 1.1.5.1.1.1.2 | Execution of test cases | 5d | 2022-03-23 | 2022-03-29 | 64 | 165d | 0d | finish no earlier than 2021-01-26 | Front End Developer -1 | 40h |
| 66 | 1.1.5.1.1.2 | **Software Development** | 295d | 2021-02-17 | 2022-04-05 |  | 165d |  |  |  | 80h |
| 67 | 1.1.5.1.1.2.1 | Development of software | 5d | 2021-02-17 | 2021-02-23 |  | 450d | 285d | start no earlier than 2021-01-20 | Front End Developer - 2 | 40h |
| 68 | 1.1.5.1.1.2.2 | Code Review | 5d | 2022-03-30 | 2022-04-05 | 67, 65 | 165d |  | start no earlier than 2021-01-20 | Front End Developer - 2 | 40h |
| 69 | 1.1.5.2 | **F2.2 As a player, I cannot run through other players within the game** | 295d | 2021-01-27 | 2022-03-15 |  | 180d |  |  |  | 320h |
| 70 | 1.1.5.2.1 | **F2.2.1 The system will not move the character through other players** | 275d | 2021-02-24 | 2022-03-15 |  | 180d |  |  |  | 160h |
| 71 | 1.1.5.2.1.1 | **Software Development** | 270d | 2021-02-24 | 2022-03-08 |  | 180d |  |  |  | 80h |
| 72 | 1.1.5.2.1.1.1 | Development of software | 5d | 2021-02-24 | 2021-03-02 |  | 180d | 0d | start no earlier than 2021-01-20 | Front End Developer -1 | 40h |
| 73 | 1.1.5.2.1.1.2 | Code Review | 5d | 2022-03-02 | 2022-03-08 | 72 | 180d | 0d | start no earlier than 2021-01-20 | Front End Developer -1 | 40h |
| 74 | 1.1.5.2.1.2 | **Unit Testing** | 265d | 2021-03-10 | 2022-03-15 |  | 180d |  |  |  | 80h |
| 75 | 1.1.5.2.1.2.1 | Creation of test cases | 5d | 2021-03-10 | 2021-03-16 |  | 435d | 255d | finish no earlier than 2021-01-26 | Front End Developer - 2 | 40h |
| 76 | 1.1.5.2.1.2.2 | Execution of test cases | 5d | 2022-03-09 | 2022-03-15 | 73, 75 | 180d |  | finish no earlier than 2021-01-26 | Front End Developer - 2 | 40h |

| ID | WBS | Task | Duration | Start | Finish | Predecessors | Total slack | Free slack | Constraint | Resources | Work |
| --- | --- | --- | --- | --- | --- | --- | --- | --- | --- | --- | --- |
| 77 | 1.1.5.2.2 | **F2.2.2 The system will continue to display the character animation if running, but not move the character through other characters** | 95d | 2021-01-27 | 2021-06-08 |  | 380d |  |  |  | 160h |
| 78 | 1.1.5.2.2.1 | **Software Development** | 90d | 2021-01-27 | 2021-06-01 |  | 380d |  |  |  | 80h |
| 79 | 1.1.5.2.2.1.1 | Development of software | 5d | 2021-01-27 | 2021-02-02 |  | 380d | 0d | finish no earlier than 2021-02-02 | Front End Developer -3 | 40h |
| 80 | 1.1.5.2.2.1.2 | Code Review | 5d | 2021-05-26 | 2021-06-01 | 79 | 380d | 0d | finish no earlier than 2021-02-02 | Front End Developer -3 | 40h |
| 81 | 1.1.5.2.2.2 | **Unit Testing** | 95d | 2021-01-27 | 2021-06-08 |  | 380d |  |  |  | 80h |
| 82 | 1.1.5.2.2.2.1 | Creation of test cases | 5d | 2021-01-27 | 2021-02-02 |  | 465d | 85d | finish no earlier than 2021-02-02 | Front End Developer - 4 | 40h |
| 83 | 1.1.5.2.2.2.2 | Execution of test cases | 5d | 2021-06-02 | 2021-06-08 | 80, 82 | 380d |  | finish no earlier than 2021-02-02 | Front End Developer - 4 | 40h |
| 84 | 1.1.5.3 | **F2.3 As a player, I cannot run through physical objects within the game** | 315d | 2021-02-03 | 2022-04-19 |  | 155d |  |  |  | 320h |
| 85 | 1.1.5.3.1 | **F2.3.1 The system will not move the character through physical objects** | 280d | 2021-03-24 | 2022-04-19 |  | 155d |  |  |  | 160h |
| 86 | 1.1.5.3.1.1 | **Software Development** | 270d | 2021-03-31 | 2022-04-12 |  | 155d |  |  |  | 80h |
| 87 | 1.1.5.3.1.1.1 | Development of software | 5d | 2021-03-31 | 2021-04-06 |  | 155d | 0d | finish no earlier than 2021-02-01 | Front End Developer -1 | 40h |
| 88 | 1.1.5.3.1.1.2 | Code Review | 5d | 2022-04-06 | 2022-04-12 | 87 | 155d | 0d | finish no earlier than 2021-02-01 | Front End Developer -1 | 40h |
| 89 | 1.1.5.3.1.2 | **Unit Testing** | 280d | 2021-03-24 | 2022-04-19 |  | 155d |  |  |  | 80h |
| 90 | 1.1.5.3.1.2.1 | Creation of test cases | 5d | 2021-03-24 | 2021-03-30 |  | 425d | 270d | finish no earlier than 2021-02-01 | Front End Developer - 2 | 40h |
| 91 | 1.1.5.3.1.2.2 | Execution of test cases | 5d | 2022-04-13 | 2022-04-19 | 90, 88 | 155d |  | finish no earlier than 2021-02-01 | Front End Developer - 2 | 40h |
| 92 | 1.1.5.3.2 | **F2.3.2 The system will continue to display the character animation if running, but not move the character through objects** | 150d | 2021-02-03 | 2021-08-31 |  | 320d |  |  |  | 160h |
| 93 | 1.1.5.3.2.1 | **Software Development** | 75d | 2021-05-19 | 2021-08-31 |  | 320d |  |  |  | 80h |
| 94 | 1.1.5.3.2.1.1 | Development of software | 5d | 2021-05-19 | 2021-05-25 |  | 320d | 0d | finish no earlier than 2021-02-02 | Front End Developer -3 | 40h |
| 95 | 1.1.5.3.2.1.2 | Code Review | 5d | 2021-08-25 | 2021-08-31 | 94 | 320d |  | finish no earlier than 2021-02-02 | Front End Developer -3 | 40h |
| 96 | 1.1.5.3.2.2 | **Unit Testing** | 85d | 2021-02-03 | 2021-06-01 |  | 385d |  |  |  | 80h |
| 97 | 1.1.5.3.2.2.1 | Creation of test cases | 5d | 2021-02-03 | 2021-02-09 |  | 460d | 75d | finish no earlier than 2021-02-02 | Front End Developer - 4 | 40h |
| 98 | 1.1.5.3.2.2.2 | Execution of test cases | 5d | 2021-05-26 | 2021-06-01 | 97, 94 | 385d |  | finish no earlier than 2021-02-02 | Front End Developer - 4 | 40h |
| 99 | 1.1.5.4 | **F2.4 As a player I can interact with objects within the game to perform tasks** | 330d | 2021-02-03 | 2022-05-10 |  | 140d |  |  |  | 800h |
| 100 | 1.1.5.4.1 | **F2.4.1 The task that can be interacted with will be highlighted in yellow** | 280d | 2021-03-31 | 2022-04-26 |  | 150d |  |  |  | 160h |
| 101 | 1.1.5.4.1.1 | **Software Development** | 270d | 2021-04-07 | 2022-04-19 |  | 150d |  |  |  | 80h |
| 102 | 1.1.5.4.1.1.1 | Development of software | 5d | 2021-04-07 | 2021-04-13 |  | 150d | 0d | finish no earlier than 2021-02-02 | Front End Developer -1 | 40h |
| 103 | 1.1.5.4.1.1.2 | Code Review | 5d | 2022-04-13 | 2022-04-19 | 102 | 150d | 0d | finish no earlier than 2021-02-02 | Front End Developer -1 | 40h |

| ID | WBS | Task | Duration | Start | Finish | Predecessors | Total slack | Free slack | Constraint | Resources | Work |
| --- | --- | --- | --- | --- | --- | --- | --- | --- | --- | --- | --- |
| 104 | 1.1.5.4.1.2 | **Unit Testing** | 280d | 2021-03-31 | 2022-04-26 |  | 150d |  |  |  | 80h |
| 105 | 1.1.5.4.1.2.1 | Creation of test cases | 5d | 2021-03-31 | 2021-04-06 |  | 420d | 270d | finish no earlier than 2021-02-02 | Front End Developer - 2 | 40h |
| 106 | 1.1.5.4.1.2.2 | Execution of test cases | 5d | 2022-04-20 | 2022-04-26 | 103, 105 | 150d |  | finish no earlier than 2021-02-02 | Front End Developer - 2 | 40h |
| 107 | 1.1.5.4.2 | **F2.4.2 A player can only interact with an object when they are within range of the task** | 95d | 2021-02-03 | 2021-06-15 |  | 375d |  |  |  | 160h |
| 108 | 1.1.5.4.2.1 | **Software Development** | 90d | 2021-02-03 | 2021-06-08 |  | 375d |  |  |  | 80h |
| 109 | 1.1.5.4.2.1.1 | Development of software | 5d | 2021-02-03 | 2021-02-09 |  | 375d | 0d | finish no earlier than 2021-02-02 | Front End Developer -3 | 40h |
| 110 | 1.1.5.4.2.1.2 | Code Review | 5d | 2021-06-02 | 2021-06-08 | 109 | 375d | 0d | finish no earlier than 2021-02-02 | Front End Developer -3 | 40h |
| 111 | 1.1.5.4.2.2 | **Unit Testing** | 90d | 2021-02-10 | 2021-06-15 |  | 375d |  |  |  | 80h |
| 112 | 1.1.5.4.2.2.1 | Creation of test cases | 5d | 2021-02-10 | 2021-02-16 |  | 455d | 80d | finish no earlier than 2021-02-02 | Front End Developer - 4 | 40h |
| 113 | 1.1.5.4.2.2.2 | Execution of test cases | 5d | 2021-06-09 | 2021-06-15 | 112, 110 | 375d |  | finish no earlier than 2021-02-02 | Front End Developer - 4 | 40h |
| 114 | 1.1.5.4.3 | **F2.4.3 When a player is within range of the object and clicks on the task, the task screen will be displayed for the player** | 280d | 2021-04-07 | 2022-05-03 |  | 145d |  |  |  | 160h |
| 115 | 1.1.5.4.3.1 | **Software Development** | 270d | 2021-04-14 | 2022-04-26 |  | 145d |  |  |  | 80h |
| 116 | 1.1.5.4.3.1.1 | Development of software | 5d | 2021-04-14 | 2021-04-20 |  | 145d | 0d | finish no earlier than 2021-02-02 | Front End Developer -1 | 40h |
| 117 | 1.1.5.4.3.1.2 | Code Review | 5d | 2022-04-20 | 2022-04-26 | 116 | 145d | 0d | finish no earlier than 2021-02-02 | Front End Developer -1 | 40h |
| 118 | 1.1.5.4.3.2 | **Unit Testing** | 280d | 2021-04-07 | 2022-05-03 |  | 145d |  |  |  | 80h |
| 119 | 1.1.5.4.3.2.1 | Creation of test cases | 5d | 2021-04-07 | 2021-04-13 |  | 415d | 270d | finish no earlier than 2021-02-02 | Front End Developer - 2 | 40h |
| 120 | 1.1.5.4.3.2.2 | Execution of test cases | 5d | 2022-04-27 | 2022-05-03 | 117, 119 | 145d |  | finish no earlier than 2021-02-02 | Front End Developer - 2 | 40h |
| 121 | 1.1.5.4.4 | **F2.4.4 When the player completes the task, the task will no longer be highlighted on the screen** | 95d | 2021-02-10 | 2021-06-22 |  | 370d |  |  |  | 160h |
| 122 | 1.1.5.4.4.1 | **Software Development** | 90d | 2021-02-10 | 2021-06-15 |  | 370d |  |  |  | 80h |
| 123 | 1.1.5.4.4.1.1 | Development of software | 5d | 2021-02-10 | 2021-02-16 |  | 370d | 0d | finish no earlier than 2021-02-02 | Front End Developer -3 | 40h |
| 124 | 1.1.5.4.4.1.2 | Code Review | 5d | 2021-06-09 | 2021-06-15 | 123 | 370d | 0d | finish no earlier than 2021-02-02 | Front End Developer -3 | 40h |
| 125 | 1.1.5.4.4.2 | **Unit Testing** | 90d | 2021-02-17 | 2021-06-22 |  | 370d |  |  |  | 80h |
| 126 | 1.1.5.4.4.2.1 | Creation of test cases | 5d | 2021-02-17 | 2021-02-23 |  | 450d | 80d | finish no earlier than 2021-02-02 | Front End Developer - 4 | 40h |
| 127 | 1.1.5.4.4.2.2 | Execution of test cases | 5d | 2021-06-16 | 2021-06-22 | 124, 126 | 370d |  | finish no earlier than 2021-02-02 | Front End Developer - 4 | 40h |

| ID | WBS | Task | Duration | Start | Finish | Predecessors | Total slack | Free slack | Constraint | Resources | Work |
| --- | --- | --- | --- | --- | --- | --- | --- | --- | --- | --- | --- |
| 128 | 1.1.5.4.5 | **F2.4.5 When the player completes the task, the task will no longer be enabled to be clicked.** | 280d | 2021-04-14 | 2022-05-10 |  | 140d |  |  |  | 160h |
| 129 | 1.1.5.4.5.1 | **Software Development** | 270d | 2021-04-21 | 2022-05-03 |  | 140d |  |  |  | 80h |
| 130 | 1.1.5.4.5.1.1 | Development of software | 5d | 2021-04-21 | 2021-04-27 |  | 140d | 0d | finish no earlier than 2021-02-02 | Front End Developer -1 | 40h |
| 131 | 1.1.5.4.5.1.2 | Code Review | 5d | 2022-04-27 | 2022-05-03 | 130 | 140d | 0d | finish no earlier than 2021-02-02 | Front End Developer -1 | 40h |
| 132 | 1.1.5.4.5.2 | **Unit Testing** | 280d | 2021-04-14 | 2022-05-10 |  | 140d |  |  |  | 80h |
| 133 | 1.1.5.4.5.2.1 | Creation of test cases | 5d | 2021-04-14 | 2021-04-20 |  | 410d | 270d | finish no earlier than 2021-02-02 | Front End Developer - 2 | 40h |
| 134 | 1.1.5.4.5.2.2 | Execution of test cases | 5d | 2022-05-04 | 2022-05-10 | 131, 133 | 140d |  | finish no earlier than 2021-02-02 | Front End Developer - 2 | 40h |
| 135 | 1.1.6 | **F3. As a player, when I click the directional pads on my keyboard, I should see the character move on the screen** | 325d | 2021-04-21 | 2022-07-19 |  | 90d |  |  |  | 1280h |
| 136 | 1.1.6.1 | **F3.1 When the player clicks on the up directional key, the player will move up in the game** | 285d | 2021-04-21 | 2022-05-24 |  | 130d |  |  |  | 320h |
| 137 | 1.1.6.1.1 | **F3.1.1 When the up button is pressed down, the character will move up on the screen** | 280d | 2021-04-21 | 2022-05-17 |  | 135d |  |  |  | 160h |
| 138 | 1.1.6.1.1.1 | **Software Development** | 270d | 2021-04-28 | 2022-05-10 |  | 135d |  |  |  | 80h |
| 139 | 1.1.6.1.1.1.1 | Development of software | 5d | 2021-04-28 | 2021-05-04 |  | 135d | 0d | start no earlier than 2021-02-03 | Front End Developer -1 | 40h |
| 140 | 1.1.6.1.1.1.2 | Code Review | 5d | 2022-05-04 | 2022-05-10 | 139 | 135d | 0d | start no earlier than 2021-02-03 | Front End Developer -1 | 40h |
| 141 | 1.1.6.1.1.2 | **Unit Testing** | 280d | 2021-04-21 | 2022-05-17 |  | 135d |  |  |  | 80h |
| 142 | 1.1.6.1.1.2.1 | Creation of test cases | 5d | 2021-04-21 | 2021-04-27 |  | 405d | 270d | start no earlier than 2021-02-03 | Front End Developer - 2 | 40h |
| 143 | 1.1.6.1.1.2.2 | Execution of test cases | 5d | 2022-05-11 | 2022-05-17 | 140, 142 | 135d |  | start no earlier than 2021-02-03 | Front End Developer - 2 | 40h |
| 144 | 1.1.6.1.2 | **F3.1.2 When the up button is released, the character will stop moving on the screen** | 280d | 2021-04-28 | 2022-05-24 |  | 130d |  |  |  | 160h |
| 145 | 1.1.6.1.2.1 | **Software Development** | 270d | 2021-05-05 | 2022-05-17 |  | 130d |  |  |  | 80h |
| 146 | 1.1.6.1.2.1.1 | Development of software | 5d | 2021-05-05 | 2021-05-11 |  | 130d | 0d | start no earlier than 2021-02-03 | Front End Developer -1 | 40h |
| 147 | 1.1.6.1.2.1.2 | Code Review | 5d | 2022-05-11 | 2022-05-17 | 146 | 130d | 0d | start no earlier than 2021-02-03 | Front End Developer -1 | 40h |
| 148 | 1.1.6.1.2.2 | **Unit Testing** | 280d | 2021-04-28 | 2022-05-24 |  | 130d |  |  |  | 80h |
| 149 | 1.1.6.1.2.2.1 | Creation of test cases | 5d | 2021-04-28 | 2021-05-04 |  | 400d | 270d | start no earlier than 2021-02-03 | Front End Developer - 2 | 40h |
| 150 | 1.1.6.1.2.2.2 | Execution of test cases | 5d | 2022-05-18 | 2022-05-24 | 147, 149 | 130d |  | start no earlier than 2021-02-03 | Front End Developer - 2 | 40h |
| 151 | 1.1.6.2 | **F3.2 When the player clicks on the down directional key, the player will down in the game** | 285d | 2021-05-05 | 2022-06-07 |  | 120d |  |  |  | 320h |
| 152 | 1.1.6.2.1 | **F3.2.1 When the down button is pressed down, the character will move down on the screen** | 280d | 2021-05-05 | 2022-05-31 |  | 125d |  |  |  | 160h |
| 153 | 1.1.6.2.1.1 | **Software Development** | 270d | 2021-05-12 | 2022-05-24 |  | 125d |  |  |  | 80h |
| 154 | 1.1.6.2.1.1.1 | Development of software | 5d | 2021-05-12 | 2021-05-18 |  | 125d | 0d | start no earlier than 2021-02-03 | Front End Developer -1 | 40h |
| 155 | 1.1.6.2.1.1.2 | Code Review | 5d | 2022-05-18 | 2022-05-24 | 154 | 125d | 0d | start no earlier than 2021-02-03 | Front End Developer -1 | 40h |

| ID | WBS | Task | Duration | Start | Finish | Predecessors | Total slack | Free slack | Constraint | Resources | Work |
| --- | --- | --- | --- | --- | --- | --- | --- | --- | --- | --- | --- |
| 156 | 1.1.6.2.1.2 | **Unit Testing** | 280d | 2021-05-05 | 2022-05-31 |  | 125d |  |  |  | 80h |
| 157 | 1.1.6.2.1.2.1 | Creation of test cases | 5d | 2021-05-05 | 2021-05-11 |  | 395d | 270d | start no earlier than 2021-02-03 | Front End Developer - 2 | 40h |
| 158 | 1.1.6.2.1.2.2 | Execution of test cases | 5d | 2022-05-25 | 2022-05-31 | 155, 157 | 125d |  | start no earlier than 2021-02-03 | Front End Developer - 2 | 40h |
| 159 | 1.1.6.2.2 | **F3.2.2 When the down button is released, the character will stop moving on the screen** | 280d | 2021-05-12 | 2022-06-07 |  | 120d |  |  |  | 160h |
| 160 | 1.1.6.2.2.1 | **Software Development** | 270d | 2021-05-19 | 2022-05-31 |  | 120d |  |  |  | 80h |
| 161 | 1.1.6.2.2.1.1 | Development of software | 5d | 2021-05-19 | 2021-05-25 |  | 120d | 0d | start no earlier than 2021-02-03 | Front End Developer -1 | 40h |
| 162 | 1.1.6.2.2.1.2 | Code Review | 5d | 2022-05-25 | 2022-05-31 | 161 | 120d | 0d | start no earlier than 2021-02-03 | Front End Developer -1 | 40h |
| 163 | 1.1.6.2.2.2 | **Unit Testing** | 280d | 2021-05-12 | 2022-06-07 |  | 120d |  |  |  | 80h |
| 164 | 1.1.6.2.2.2.1 | Creation of test cases | 5d | 2021-05-12 | 2021-05-18 |  | 390d | 270d | start no earlier than 2021-02-03 | Front End Developer - 2 | 40h |
| 165 | 1.1.6.2.2.2.2 | Execution of test cases | 5d | 2022-06-01 | 2022-06-07 | 162, 164 | 120d |  | start no earlier than 2021-02-03 | Front End Developer - 2 | 40h |
| 166 | 1.1.6.3 | **F3.3 When the player clicks on the left directional key, the player will move left in the game** | 285d | 2021-06-02 | 2022-07-05 |  | 100d |  |  |  | 320h |
| 167 | 1.1.6.3.1 | **F3.3.1 When the left button is pressed down, the character will move left on the screen** | 280d | 2021-06-02 | 2022-06-28 |  | 105d |  |  |  | 160h |
| 168 | 1.1.6.3.1.1 | **Software Development** | 270d | 2021-06-09 | 2022-06-21 |  | 105d |  |  |  | 80h |
| 169 | 1.1.6.3.1.1.1 | Development of software | 5d | 2021-06-09 | 2021-06-15 |  | 105d | 0d | start no earlier than 2021-02-10 | Front End Developer -1 | 40h |
| 170 | 1.1.6.3.1.1.2 | Code Review | 5d | 2022-06-15 | 2022-06-21 | 169 | 105d | 0d | start no earlier than 2021-02-10 | Front End Developer -1 | 40h |
| 171 | 1.1.6.3.1.2 | **Unit Testing** | 280d | 2021-06-02 | 2022-06-28 |  | 105d |  |  |  | 80h |
| 172 | 1.1.6.3.1.2.1 | Creation of test cases | 5d | 2021-06-02 | 2021-06-08 |  | 375d | 270d | start no earlier than 2021-02-10 | Front End Developer - 2 | 40h |
| 173 | 1.1.6.3.1.2.2 | Execution of test cases | 5d | 2022-06-22 | 2022-06-28 | 170, 172 | 105d |  | start no earlier than 2021-02-10 | Front End Developer - 2 | 40h |
| 174 | 1.1.6.3.2 | **F3.3.2 When the left button is released, the character will stop moving on the screen** | 280d | 2021-06-09 | 2022-07-05 |  | 100d |  |  |  | 160h |
| 175 | 1.1.6.3.2.1 | **Software Development** | 270d | 2021-06-16 | 2022-06-28 |  | 100d |  |  |  | 80h |
| 176 | 1.1.6.3.2.1.1 | Development of software | 5d | 2021-06-16 | 2021-06-22 |  | 100d | 0d | start no earlier than 2021-02-10 | Front End Developer -1 | 40h |
| 177 | 1.1.6.3.2.1.2 | Code Review | 5d | 2022-06-22 | 2022-06-28 | 176 | 100d | 0d | start no earlier than 2021-02-10 | Front End Developer -1 | 40h |
| 178 | 1.1.6.3.2.2 | **Unit Testing** | 280d | 2021-06-09 | 2022-07-05 |  | 100d |  |  |  | 80h |
| 179 | 1.1.6.3.2.2.1 | Creation of test cases | 5d | 2021-06-09 | 2021-06-15 |  | 370d | 270d | start no earlier than 2021-02-10 | Front End Developer - 2 | 40h |
| 180 | 1.1.6.3.2.2.2 | Execution of test cases | 5d | 2022-06-29 | 2022-07-05 | 177, 179 | 100d |  | start no earlier than 2021-02-10 | Front End Developer - 2 | 40h |

| ID | WBS | Task | Duration | Start | Finish | Predecessors | Total slack | Free slack | Constraint | Resources | Work |
| --- | --- | --- | --- | --- | --- | --- | --- | --- | --- | --- | --- |
| 181 | 1.1.6.4 | **F3.4 When the player clicks on the right directional key, the player will move right in the game** | 285d | 2021-06-16 | 2022-07-19 |  | 90d |  |  |  | 320h |
| 182 | 1.1.6.4.1 | **F3.4.2 When the right button is released, the character will stop moving on the screen** | 280d | 2021-06-16 | 2022-07-12 |  | 95d |  |  |  | 160h |
| 183 | 1.1.6.4.1.1 | **Software Development** | 270d | 2021-06-23 | 2022-07-05 |  | 95d |  |  |  | 80h |
| 184 | 1.1.6.4.1.1.1 | Development of software | 5d | 2021-06-23 | 2021-06-29 |  | 95d | 0d | start no earlier than 2021-02-10 | Front End Developer -1 | 40h |
| 185 | 1.1.6.4.1.1.2 | Code Review | 5d | 2022-06-29 | 2022-07-05 | 184 | 95d | 0d | start no earlier than 2021-02-10 | Front End Developer -1 | 40h |
| 186 | 1.1.6.4.1.2 | **Unit Testing** | 280d | 2021-06-16 | 2022-07-12 |  | 95d |  |  |  | 80h |
| 187 | 1.1.6.4.1.2.1 | Creation of test cases | 5d | 2021-06-16 | 2021-06-22 |  | 365d | 270d | start no earlier than 2021-02-10 | Front End Developer - 2 | 40h |
| 188 | 1.1.6.4.1.2.2 | Execution of test cases | 5d | 2022-07-06 | 2022-07-12 | 185, 187 | 95d |  | start no earlier than 2021-02-10 | Front End Developer - 2 | 40h |
| 189 | 1.1.6.4.2 | **F3.4.1 When the right button is pressed down, the character will move right on the screen** | 280d | 2021-06-23 | 2022-07-19 |  | 90d |  |  |  | 160h |
| 190 | 1.1.6.4.2.1 | **Software Development** | 270d | 2021-06-30 | 2022-07-12 |  | 90d |  |  |  | 80h |
| 191 | 1.1.6.4.2.1.1 | Development of software | 5d | 2021-06-30 | 2021-07-06 |  | 90d | 0d | start no earlier than 2021-02-10 | Front End Developer -1 | 40h |
| 192 | 1.1.6.4.2.1.2 | Code Review | 5d | 2022-07-06 | 2022-07-12 | 191 | 90d | 0d | start no earlier than 2021-02-10 | Front End Developer -1 | 40h |
| 193 | 1.1.6.4.2.2 | **Unit Testing** | 280d | 2021-06-23 | 2022-07-19 |  | 90d |  |  |  | 80h |
| 194 | 1.1.6.4.2.2.1 | Creation of test cases | 5d | 2021-06-23 | 2021-06-29 |  | 360d | 270d | start no earlier than 2021-02-10 | Front End Developer - 2 | 40h |
| 195 | 1.1.6.4.2.2.2 | Execution of test cases | 5d | 2022-07-13 | 2022-07-19 | 192, 194 | 90d |  | start no earlier than 2021-02-10 | Front End Developer - 2 | 40h |
| 196 | 1.1.7 | **F4. As a player that is the imposter, I will be given the ability to sabotage tasks that are on the map** | 380d | 2021-02-24 | 2022-08-09 |  | 75d |  |  |  | 800h |
| 197 | 1.1.7.1 | **F4.1. As the imposter, I shall be able to see a list of all available tasks that can be sabotaged** | 375d | 2021-02-24 | 2022-08-02 |  | 80d |  |  |  | 320h |
| 198 | 1.1.7.1.1 | **F4.1.1 When the imposter clicks on a task, an alarm will sound for all players** | 90d | 2021-02-24 | 2021-06-29 |  | 365d |  |  |  | 160h |
| 199 | 1.1.7.1.1.1 | **Software Development** | 85d | 2021-02-24 | 2021-06-22 |  | 365d |  |  |  | 80h |
| 200 | 1.1.7.1.1.1.1 | Development of software | 5d | 2021-02-24 | 2021-03-02 |  | 365d | 0d | start no earlier than 2021-02-24 | Front End Developer -3 | 40h |
| 201 | 1.1.7.1.1.1.2 | Code Review | 5d | 2021-06-16 | 2021-06-22 | 200 | 365d | 0d | start no earlier than 2021-02-24 | Front End Developer -3 | 40h |
| 202 | 1.1.7.1.1.2 | **Unit Testing** | 90d | 2021-02-24 | 2021-06-29 |  | 365d |  |  |  | 80h |
| 203 | 1.1.7.1.1.2.1 | Creation of test cases | 5d | 2021-02-24 | 2021-03-02 |  | 445d | 80d | start no earlier than 2021-02-24 | Front End Developer - 4 | 40h |
| 204 | 1.1.7.1.1.2.2 | Execution of test cases | 5d | 2021-06-23 | 2021-06-29 | 201, 203 | 365d |  | start no earlier than 2021-02-24 | Front End Developer - 4 | 40h |

| ID | WBS | Task | Duration | Start | Finish | Predecessors | Total slack | Free slack | Constraint | Resources | Work |
| --- | --- | --- | --- | --- | --- | --- | --- | --- | --- | --- | --- |
| 205 | 1.1.7.1.2 | **F4.1.2 When the imposter clicks on a task, an on-screen alert will appear for other characters stating which task is being sabotaged** | 280d | 2021-07-07 | 2022-08-02 |  | 80d |  |  |  | 160h |
| 206 | 1.1.7.1.2.1 | **Software Development** | 270d | 2021-07-14 | 2022-07-26 |  | 80d |  |  |  | 80h |
| 207 | 1.1.7.1.2.1.1 | Development of software | 5d | 2021-07-14 | 2021-07-20 |  | 80d | 0d | start no earlier than 2021-02-24 | Front End Developer -1 | 40h |
| 208 | 1.1.7.1.2.1.2 | Code Review | 5d | 2022-07-20 | 2022-07-26 | 207 | 80d | 0d | start no earlier than 2021-02-24 | Front End Developer -1 | 40h |
| 209 | 1.1.7.1.2.2 | **Unit Testing** | 280d | 2021-07-07 | 2022-08-02 |  | 80d |  |  |  | 80h |
| 210 | 1.1.7.1.2.2.1 | Creation of test cases | 5d | 2021-07-07 | 2021-07-13 |  | 350d | 270d | start no earlier than 2021-02-24 | Front End Developer - 2 | 40h |
| 211 | 1.1.7.1.2.2.2 | Execution of test cases | 5d | 2022-07-27 | 2022-08-02 | 208, 210 | 80d |  | start no earlier than 2021-02-24 | Front End Developer - 2 | 40h |
| 212 | 1.1.7.2 | **F4.2 As the imposter, I can win the game if the sabotaged task is not revived from the crewmate players** | 375d | 2021-03-03 | 2022-08-09 |  | 75d |  |  |  | 480h |
| 213 | 1.1.7.2.1 | **F4.2.1 If the sabotaged task is not revived by the crewmates within sixty seconds, the imposter will win the round** | 90d | 2021-03-03 | 2021-07-06 |  | 360d |  |  |  | 160h |
| 214 | 1.1.7.2.1.1 | **Software Development** | 85d | 2021-03-03 | 2021-06-29 |  | 360d |  |  |  | 80h |
| 215 | 1.1.7.2.1.1.1 | Development of software | 5d | 2021-03-03 | 2021-03-09 |  | 360d | 0d | start no earlier than 2021-03-03 | Front End Developer -3 | 40h |
| 216 | 1.1.7.2.1.1.2 | Code Review | 5d | 2021-06-23 | 2021-06-29 | 215 | 360d | 0d | start no earlier than 2021-03-03 | Front End Developer -3 | 40h |
| 217 | 1.1.7.2.1.2 | **Unit Testing** | 90d | 2021-03-03 | 2021-07-06 |  | 360d |  |  |  | 80h |
| 218 | 1.1.7.2.1.2.1 | Creation of test cases | 5d | 2021-03-03 | 2021-03-09 |  | 440d | 80d | start no earlier than 2021-03-03 | Front End Developer - 4 | 40h |
| 219 | 1.1.7.2.1.2.2 | Execution of test cases | 5d | 2021-06-30 | 2021-07-06 | 216, 218 | 360d |  | start no earlier than 2021-03-03 | Front End Developer - 4 | 40h |
| 220 | 1.1.7.2.2 | **F4.2.2 If the sabotaged task is revived by the crewmates within sixty seconds, the countdown clock will be removed from the screen** | 280d | 2021-07-14 | 2022-08-09 |  | 75d |  |  |  | 160h |
| 221 | 1.1.7.2.2.1 | **Software Development** | 270d | 2021-07-21 | 2022-08-02 |  | 75d |  |  |  | 80h |
| 222 | 1.1.7.2.2.1.1 | Development of software | 5d | 2021-07-21 | 2021-07-27 |  | 75d | 0d | start no earlier than 2021-03-03 | Front End Developer -1 | 40h |
| 223 | 1.1.7.2.2.1.2 | Code Review | 5d | 2022-07-27 | 2022-08-02 | 222 | 75d | 0d | start no earlier than 2021-03-03 | Front End Developer -1 | 40h |
| 224 | 1.1.7.2.2.2 | **Unit Testing** | 280d | 2021-07-14 | 2022-08-09 |  | 75d |  |  |  | 80h |
| 225 | 1.1.7.2.2.2.1 | Creation of test cases | 5d | 2021-07-14 | 2021-07-20 |  | 345d | 270d | start no earlier than 2021-03-03 | Front End Developer - 2 | 40h |
| 226 | 1.1.7.2.2.2.2 | Execution of test cases | 5d | 2022-08-03 | 2022-08-09 | 225, 223 | 75d |  | start no earlier than 2021-03-03 | Front End Developer - 2 | 40h |
| 227 | 1.1.7.2.3 | **F4.2.3 If the sabotaged task is revived by the crewmates within sixty seconds, the alarm sound will be stopped.** | 90d | 2021-03-10 | 2021-07-13 |  | 355d |  |  |  | 160h |
| 228 | 1.1.7.2.3.1 | **Software Development** | 85d | 2021-03-10 | 2021-07-06 |  | 355d |  |  |  | 80h |
| 229 | 1.1.7.2.3.1.1 | Development of software | 5d | 2021-03-10 | 2021-03-16 |  | 355d | 0d | start no earlier than 2021-03-03 | Front End Developer -3 | 40h |
| 230 | 1.1.7.2.3.1.2 | Code Review | 5d | 2021-06-30 | 2021-07-06 | 229 | 355d | 0d | start no earlier than 2021-03-03 | Front End Developer -3 | 40h |

| ID | WBS | Task | Duration | Start | Finish | Predecessors | Total slack | Free slack | Constraint | Resources | Work |
| --- | --- | --- | --- | --- | --- | --- | --- | --- | --- | --- | --- |
| 231 | 1.1.7.2.3.2 | **Unit Testing** | 90d | 2021-03-10 | 2021-07-13 |  | 355d |  |  |  | 80h |
| 232 | 1.1.7.2.3.2.1 | Creation of test cases | 5d | 2021-03-10 | 2021-03-16 |  | 435d | 80d | start no earlier than 2021-03-03 | Front End Developer - 4 | 40h |
| 233 | 1.1.7.2.3.2.2 | Execution of test cases | 5d | 2021-07-07 | 2021-07-13 | 230, 232 | 355d |  | start no earlier than 2021-03-03 | Front End Developer - 4 | 40h |
| 234 | 1.1.8 | **F5. As a player I will be given a Heads-Up Display (HUD) to give me available options within the game to select** | 385d | 2021-03-17 | 2022-09-06 |  | 55d |  |  |  | 960h |
| 235 | 1.1.8.1 | **F5.1 As a crewmate player, I will have an icon to select for calling an emergency meeting** | 375d | 2021-03-17 | 2022-08-23 |  | 65d |  |  |  | 640h |
| 236 | 1.1.8.1.1 | **F5.1.1 The icon will only be clickable once per game.** | 280d | 2021-07-21 | 2022-08-16 |  | 70d |  |  |  | 160h |
| 237 | 1.1.8.1.1.1 | **Software Development** | 270d | 2021-07-28 | 2022-08-09 |  | 70d |  |  |  | 80h |
| 238 | 1.1.8.1.1.1.1 | Development of software | 5d | 2021-07-28 | 2021-08-03 |  | 70d | 0d | start no earlier than 2021-03-03 | Front End Developer -1 | 40h |
| 239 | 1.1.8.1.1.1.2 | Code Review | 5d | 2022-08-03 | 2022-08-09 | 238 | 70d | 0d | start no earlier than 2021-03-03 | Front End Developer -1 | 40h |
| 240 | 1.1.8.1.1.2 | **Unit Testing** | 280d | 2021-07-21 | 2022-08-16 |  | 70d |  |  |  | 80h |
| 241 | 1.1.8.1.1.2.1 | Creation of test cases | 5d | 2021-07-21 | 2021-07-27 |  | 340d | 270d | start no earlier than 2021-03-03 | Front End Developer - 2 | 40h |
| 242 | 1.1.8.1.1.2.2 | Execution of test cases | 5d | 2022-08-10 | 2022-08-16 | 239, 241 | 70d |  | start no earlier than 2021-03-03 | Front End Developer - 2 | 40h |
| 243 | 1.1.8.1.2 | **F5.1.2 When the icon is clicked, it will sound an alarm** | 90d | 2021-03-17 | 2021-07-20 |  | 350d |  |  |  | 160h |
| 244 | 1.1.8.1.2.1 | **Software Development** | 85d | 2021-03-17 | 2021-07-13 |  | 350d |  |  |  | 80h |
| 245 | 1.1.8.1.2.1.1 | Development of software | 5d | 2021-03-17 | 2021-03-23 |  | 350d | 0d | start no earlier than 2021-03-03 | Front End Developer -3 | 40h |
| 246 | 1.1.8.1.2.1.2 | Code Review | 5d | 2021-07-07 | 2021-07-13 | 245 | 350d | 0d | start no earlier than 2021-03-03 | Front End Developer -3 | 40h |
| 247 | 1.1.8.1.2.2 | **Unit Testing** | 90d | 2021-03-17 | 2021-07-20 |  | 350d |  |  |  | 80h |
| 248 | 1.1.8.1.2.2.1 | Creation of test cases | 5d | 2021-03-17 | 2021-03-23 |  | 430d | 80d | start no earlier than 2021-03-03 | Front End Developer - 4 | 40h |
| 249 | 1.1.8.1.2.2.2 | Execution of test cases | 5d | 2021-07-14 | 2021-07-20 | 246, 248 | 350d |  | start no earlier than 2021-03-03 | Front End Developer - 4 | 40h |
| 250 | 1.1.8.1.3 | **F5.1.3 When the icon is clicked, it will bring all characters back to the starting point on the map** | 280d | 2021-07-28 | 2022-08-23 |  | 65d |  |  |  | 160h |
| 251 | 1.1.8.1.3.1 | **Software Development** | 270d | 2021-08-04 | 2022-08-16 |  | 65d |  |  |  | 80h |
| 252 | 1.1.8.1.3.1.1 | Development of software | 5d | 2021-08-04 | 2021-08-10 |  | 65d | 0d | start no earlier than 2021-03-03 | Front End Developer -1 | 40h |
| 253 | 1.1.8.1.3.1.2 | Code Review | 5d | 2022-08-10 | 2022-08-16 | 252 | 65d | 0d | start no earlier than 2021-03-03 | Front End Developer -1 | 40h |
| 254 | 1.1.8.1.3.2 | **Unit Testing** | 280d | 2021-07-28 | 2022-08-23 |  | 65d |  |  |  | 80h |
| 255 | 1.1.8.1.3.2.1 | Creation of test cases | 5d | 2021-07-28 | 2021-08-03 |  | 335d | 270d | start no earlier than 2021-03-03 | Front End Developer - 2 | 40h |
| 256 | 1.1.8.1.3.2.2 | Execution of test cases | 5d | 2022-08-17 | 2022-08-23 | 253, 255 | 65d |  | start no earlier than 2021-03-03 | Front End Developer - 2 | 40h |

| ID | WBS | Task | Duration | Start | Finish | Predecessors | Total slack | Free slack | Constraint | Resources | Work |
| --- | --- | --- | --- | --- | --- | --- | --- | --- | --- | --- | --- |
| 257 | 1.1.8.1.4 | **F5.1.4 When the icon is clicked, it will enable the chat feature within the game for characters to discuss** | 90d | 2021-03-24 | 2021-07-27 |  | 345d |  |  |  | 160h |
| 258 | 1.1.8.1.4.1 | **Software Development** | 85d | 2021-03-24 | 2021-07-20 |  | 345d |  |  |  | 80h |
| 259 | 1.1.8.1.4.1.1 | Development of software | 5d | 2021-03-24 | 2021-03-30 |  | 345d | 0d | start no earlier than 2021-03-03 | Front End Developer -3 | 40h |
| 260 | 1.1.8.1.4.1.2 | Code Review | 5d | 2021-07-14 | 2021-07-20 | 259 | 345d | 0d | start no earlier than 2021-03-03 | Front End Developer -3 | 40h |
| 261 | 1.1.8.1.4.2 | **Unit Testing** | 90d | 2021-03-24 | 2021-07-27 |  | 345d |  |  |  | 80h |
| 262 | 1.1.8.1.4.2.1 | Creation of test cases | 5d | 2021-03-24 | 2021-03-30 |  | 425d | 80d | start no earlier than 2021-03-03 | Front End Developer - 4 | 40h |
| 263 | 1.1.8.1.4.2.2 | Execution of test cases | 5d | 2021-07-21 | 2021-07-27 | 260, 262 | 345d |  | start no earlier than 2021-03-03 | Front End Developer - 4 | 40h |
| 264 | 1.1.8.2 | **F5.2 As a crewmate player, I will have an icon to leave the game** | 375d | 2021-03-31 | 2022-09-06 |  | 55d |  |  |  | 320h |
| 265 | 1.1.8.2.1 | **F5.2.1 When the icon is clicked, the crewmate player can confirm leaving the game** | 280d | 2021-08-11 | 2022-09-06 |  | 55d |  |  |  | 160h |
| 266 | 1.1.8.2.1.1 | **Software Development** | 270d | 2021-08-18 | 2022-08-30 |  | 55d |  |  |  | 80h |
| 267 | 1.1.8.2.1.1.1 | Development of software | 5d | 2021-08-18 | 2021-08-24 |  | 55d | 0d | start no earlier than 2021-03-10 | Front End Developer -1 | 40h |
| 268 | 1.1.8.2.1.1.2 | Code Review | 5d | 2022-08-24 | 2022-08-30 | 267 | 55d | 0d | start no earlier than 2021-03-10 | Front End Developer -1 | 40h |
| 269 | 1.1.8.2.1.2 | **Unit Testing** | 280d | 2021-08-11 | 2022-09-06 |  | 55d |  |  |  | 80h |
| 270 | 1.1.8.2.1.2.1 | Creation of test cases | 5d | 2021-08-11 | 2021-08-17 |  | 325d | 270d | start no earlier than 2021-03-10 | Front End Developer - 2 | 40h |
| 271 | 1.1.8.2.1.2.2 | Execution of test cases | 5d | 2022-08-31 | 2022-09-06 | 268, 270 | 55d |  | start no earlier than 2021-03-10 | Front End Developer - 2 | 40h |
| 272 | 1.1.8.2.2 | **F5.2.2 When the icon is clicked, the crewmate player can cancel the request to leaving the game** | 90d | 2021-03-31 | 2021-08-03 |  | 340d |  |  |  | 160h |
| 273 | 1.1.8.2.2.1 | **Software Development** | 85d | 2021-03-31 | 2021-07-27 |  | 340d |  |  |  | 80h |
| 274 | 1.1.8.2.2.1.1 | Development of software | 5d | 2021-03-31 | 2021-04-06 |  | 340d | 0d | start no earlier than 2021-03-10 | Front End Developer -3 | 40h |
| 275 | 1.1.8.2.2.1.2 | Code Review | 5d | 2021-07-21 | 2021-07-27 | 274 | 340d | 0d | start no earlier than 2021-03-10 | Front End Developer -3 | 40h |
| 276 | 1.1.8.2.2.2 | **Unit Testing** | 90d | 2021-03-31 | 2021-08-03 |  | 340d |  |  |  | 80h |
| 277 | 1.1.8.2.2.2.1 | Creation of test cases | 5d | 2021-03-31 | 2021-04-06 |  | 420d | 80d | start no earlier than 2021-03-10 | Front End Developer - 4 | 40h |
| 278 | 1.1.8.2.2.2.2 | Execution of test cases | 5d | 2021-07-28 | 2021-08-03 | 275, 277 | 340d |  | start no earlier than 2021-03-10 | Front End Developer - 4 | 40h |
| 279 | 1.1.9 | **F5. CONTINUED - As a player I will be given a Heads-Up Display (HUD) to give me available options within the game to select** | 400d | 2021-04-07 | 2022-10-18 |  | 25d |  |  |  | 1280h |
| 280 | 1.1.9.1 | **F5.3 As a crewmate player, I will have an icon for performing a task** | 400d | 2021-04-07 | 2022-10-18 |  | 25d |  |  |  | 640h |
| 281 | 1.1.9.1.1 | **F5.3.1 The icon for performing a task will be enabled when they are within 5 feet of the task** | 275d | 2021-09-08 | 2022-09-27 |  | 40d |  |  |  | 160h |
| 282 | 1.1.9.1.1.1 | **Software Development** | 270d | 2021-09-08 | 2022-09-20 |  | 40d |  |  |  | 80h |
| 283 | 1.1.9.1.1.1.1 | Development of software | 5d | 2021-09-08 | 2021-09-14 |  | 40d | 0d | start no earlier than 2021-03-17 | Front End Developer -1 | 40h |
| 284 | 1.1.9.1.1.1.2 | Code Review | 5d | 2022-09-14 | 2022-09-20 | 283 | 40d | 0d | start no earlier than 2021-03-17 | Front End Developer -1 | 40h |

| ID | WBS | Task | Duration | Start | Finish | Predecessors | Total slack | Free slack | Constraint | Resources | Work |
| --- | --- | --- | --- | --- | --- | --- | --- | --- | --- | --- | --- |
| 285 | 1.1.9.1.1.2 | **Unit Testing** | 275d | 2021-09-08 | 2022-09-27 |  | 40d |  |  |  | 80h |
| 286 | 1.1.9.1.1.2.1 | Creation of test cases | 5d | 2021-09-08 | 2021-09-14 |  | 305d | 265d | start no earlier than 2021-03-17 | Front End Developer - 2 | 40h |
| 287 | 1.1.9.1.1.2.2 | Execution of test cases | 5d | 2022-09-21 | 2022-09-27 | 284, 286 | 40d |  | start no earlier than 2021-03-17 | Front End Developer - 2 | 40h |
| 288 | 1.1.9.1.2 | **F5.3.2 The icon for performing the task will be disabled once the player completes the task** | 90d | 2021-04-07 | 2021-08-10 |  | 335d |  |  |  | 160h |
| 289 | 1.1.9.1.2.1 | **Software Development** | 85d | 2021-04-07 | 2021-08-03 |  | 335d |  |  |  | 80h |
| 290 | 1.1.9.1.2.1.1 | Development of software | 5d | 2021-04-07 | 2021-04-13 |  | 335d | 0d | start no earlier than 2021-03-17 | Front End Developer -3 | 40h |
| 291 | 1.1.9.1.2.1.2 | Code Review | 5d | 2021-07-28 | 2021-08-03 | 290 | 335d | 0d | start no earlier than 2021-03-17 | Front End Developer -3 | 40h |
| 292 | 1.1.9.1.2.2 | **Unit Testing** | 90d | 2021-04-07 | 2021-08-10 |  | 335d |  |  |  | 80h |
| 293 | 1.1.9.1.2.2.1 | Creation of test cases | 5d | 2021-04-07 | 2021-04-13 |  | 415d | 80d | start no earlier than 2021-03-17 | Front End Developer - 4 | 40h |
| 294 | 1.1.9.1.2.2.2 | Execution of test cases | 5d | 2021-08-04 | 2021-08-10 | 291, 293 | 335d |  | start no earlier than 2021-03-17 | Front End Developer - 4 | 40h |
| 295 | 1.1.9.1.3 | **F5.3.3 If the player closes the task, the icon will remain enabled** | 220d | 2021-12-15 | 2022-10-18 |  | 25d |  |  |  | 160h |
| 296 | 1.1.9.1.3.1 | **Software Development** | 210d | 2021-12-22 | 2022-10-11 |  | 25d |  |  |  | 80h |
| 297 | 1.1.9.1.3.1.1 | Development of software | 5d | 2021-12-22 | 2021-12-28 |  | 25d | 0d | start no earlier than 2021-03-24 | Front End Developer -1 | 40h |
| 298 | 1.1.9.1.3.1.2 | Code Review | 5d | 2022-10-05 | 2022-10-11 | 297 | 25d | 0d | start no earlier than 2021-03-24 | Front End Developer -1 | 40h |
| 299 | 1.1.9.1.3.2 | **Unit Testing** | 220d | 2021-12-15 | 2022-10-18 |  | 25d |  |  |  | 80h |
| 300 | 1.1.9.1.3.2.1 | Creation of test cases | 5d | 2021-12-15 | 2021-12-21 |  | 235d | 210d | start no earlier than 2021-03-24 | Front End Developer - 2 | 40h |
| 301 | 1.1.9.1.3.2.2 | Execution of test cases | 5d | 2022-10-12 | 2022-10-18 | 298, 300 | 25d |  | start no earlier than 2021-03-24 | Front End Developer - 2 | 40h |
| 302 | 1.1.9.1.4 | **F5.3.4 When the player clicks on the icon, it will bring up the appropriate task for the player to complete** | 90d | 2021-04-21 | 2021-08-24 |  | 325d |  |  |  | 160h |
| 303 | 1.1.9.1.4.1 | **Software Development** | 85d | 2021-04-21 | 2021-08-17 |  | 325d |  |  |  | 80h |
| 304 | 1.1.9.1.4.1.1 | Development of software | 5d | 2021-04-21 | 2021-04-27 |  | 325d | 0d | start no earlier than 2021-03-24 | Front End Developer -3 | 40h |
| 305 | 1.1.9.1.4.1.2 | Code Review | 5d | 2021-08-11 | 2021-08-17 | 304 | 325d | 0d | start no earlier than 2021-03-24 | Front End Developer -3 | 40h |
| 306 | 1.1.9.1.4.2 | **Unit Testing** | 90d | 2021-04-21 | 2021-08-24 |  | 325d |  |  |  | 80h |
| 307 | 1.1.9.1.4.2.1 | Creation of test cases | 5d | 2021-04-21 | 2021-04-27 |  | 405d | 80d | start no earlier than 2021-03-24 | Front End Developer - 4 | 40h |
| 308 | 1.1.9.1.4.2.2 | Execution of test cases | 5d | 2021-08-18 | 2021-08-24 | 305, 307 | 325d |  | start no earlier than 2021-03-24 | Front End Developer - 4 | 40h |

| ID | WBS | Task | Duration | Start | Finish | Predecessors | Total slack | Free slack | Constraint | Resources | Work |
| --- | --- | --- | --- | --- | --- | --- | --- | --- | --- | --- | --- |
| 309 | 1.1.9.2 | **F5.4 As an imposter, I will have an icon for sabotaging a task** | 385d | 2021-04-14 | 2022-10-04 |  | 35d |  |  |  | 320h |
| 310 | 1.1.9.2.1 | **F5.4.1 When the icon is clicked, the imposter will have a map pop up** | 250d | 2021-10-20 | 2022-10-04 |  | 35d |  |  |  | 160h |
| 311 | 1.1.9.2.1.1 | **Software Development** | 210d | 2021-12-08 | 2022-09-27 |  | 35d |  |  |  | 80h |
| 312 | 1.1.9.2.1.1.1 | Development of software | 5d | 2021-12-08 | 2021-12-14 |  | 35d | 0d | start no earlier than 2021-03-17 | Front End Developer -1 | 40h |
| 313 | 1.1.9.2.1.1.2 | Code Review | 5d | 2022-09-21 | 2022-09-27 | 312 | 35d | 0d | start no earlier than 2021-03-17 | Front End Developer -1 | 40h |
| 314 | 1.1.9.2.1.2 | **Unit Testing** | 250d | 2021-10-20 | 2022-10-04 |  | 35d |  |  |  | 80h |
| 315 | 1.1.9.2.1.2.1 | Creation of test cases | 5d | 2021-10-20 | 2021-10-26 |  | 275d | 240d | start no earlier than 2021-03-17 | Front End Developer - 2 | 40h |
| 316 | 1.1.9.2.1.2.2 | Execution of test cases | 5d | 2022-09-28 | 2022-10-04 | 313, 315 | 35d |  | start no earlier than 2021-03-17 | Front End Developer - 2 | 40h |
| 317 | 1.1.9.2.2 | **F5.4.2 The map that is displayed, will show all of the available tasks that can be sabotaged** | 90d | 2021-04-14 | 2021-08-17 |  | 330d |  |  |  | 160h |
| 318 | 1.1.9.2.2.1 | **Software Development** | 85d | 2021-04-14 | 2021-08-10 |  | 330d |  |  |  | 80h |
| 319 | 1.1.9.2.2.1.1 | Development of software | 5d | 2021-04-14 | 2021-04-20 |  | 330d | 0d | start no earlier than 2021-03-17 | Front End Developer -3 | 40h |
| 320 | 1.1.9.2.2.1.2 | Code Review | 5d | 2021-08-04 | 2021-08-10 | 319 | 330d | 0d | start no earlier than 2021-03-17 | Front End Developer -3 | 40h |
| 321 | 1.1.9.2.2.2 | **Unit Testing** | 90d | 2021-04-14 | 2021-08-17 |  | 330d |  |  |  | 80h |
| 322 | 1.1.9.2.2.2.1 | Creation of test cases | 5d | 2021-04-14 | 2021-04-20 |  | 410d | 80d | start no earlier than 2021-03-17 | Front End Developer - 4 | 40h |
| 323 | 1.1.9.2.2.2.2 | Execution of test cases | 5d | 2021-08-11 | 2021-08-17 | 320, 322 | 330d |  | start no earlier than 2021-03-17 | Front End Developer - 4 | 40h |
| 324 | 1.1.9.3 | **F5.5 As imposter, I will have an icon to leave the game** | 380d | 2021-04-28 | 2022-10-11 |  | 30d |  |  |  | 320h |
| 325 | 1.1.9.3.1 | **F5.5.1 When the icon is clicked, the crewmate player can confirm leaving the game** | 250d | 2021-10-27 | 2022-10-11 |  | 30d |  |  |  | 160h |
| 326 | 1.1.9.3.1.1 | **Software Development** | 210d | 2021-12-15 | 2022-10-04 |  | 30d |  |  |  | 80h |
| 327 | 1.1.9.3.1.1.1 | Development of software | 5d | 2021-12-15 | 2021-12-21 |  | 30d | 0d | start no earlier than 2021-03-17 | Front End Developer -1 | 40h |
| 328 | 1.1.9.3.1.1.2 | Code Review | 5d | 2022-09-28 | 2022-10-04 | 327 | 30d | 0d | start no earlier than 2021-03-17 | Front End Developer -1 | 40h |
| 329 | 1.1.9.3.1.2 | **Unit Testing** | 250d | 2021-10-27 | 2022-10-11 |  | 30d |  |  |  | 80h |
| 330 | 1.1.9.3.1.2.1 | Creation of test cases | 5d | 2021-10-27 | 2021-11-02 |  | 270d | 240d | start no earlier than 2021-03-17 | Front End Developer - 2 | 40h |
| 331 | 1.1.9.3.1.2.2 | Execution of test cases | 5d | 2022-10-05 | 2022-10-11 | 328, 330 | 30d |  | start no earlier than 2021-03-17 | Front End Developer - 2 | 40h |
| 332 | 1.1.9.3.2 | **F.5.2 When the icon is clicked, the crewmate player can cancel the request to leaving the game** | 90d | 2021-04-28 | 2021-08-31 |  | 320d |  |  |  | 160h |
| 333 | 1.1.9.3.2.1 | **Software Development** | 85d | 2021-04-28 | 2021-08-24 |  | 320d |  |  |  | 80h |
| 334 | 1.1.9.3.2.1.1 | Development of software | 5d | 2021-04-28 | 2021-05-04 |  | 320d | 0d | start no earlier than 2021-03-24 | Front End Developer -3 | 40h |
| 335 | 1.1.9.3.2.1.2 | Code Review | 5d | 2021-08-18 | 2021-08-24 | 334 | 320d | 0d | start no earlier than 2021-03-24 | Front End Developer -3 | 40h |

| ID | WBS | Task | Duration | Start | Finish | Predecessors | Total slack | Free slack | Constraint | Resources | Work |
| --- | --- | --- | --- | --- | --- | --- | --- | --- | --- | --- | --- |
| 336 | 1.1.9.3.2.2 | **Unit Testing** | 90d | 2021-04-28 | 2021-08-31 |  | 320d |  |  |  | 80h |
| 337 | 1.1.9.3.2.2.1 | Creation of test cases | 5d | 2021-04-28 | 2021-05-04 |  | 400d | 80d | start no earlier than 2021-03-24 | Front End Developer - 4 | 40h |
| 338 | 1.1.9.3.2.2.2 | Execution of test cases | 5d | 2021-08-25 | 2021-08-31 | 335, 337 | 320d |  | start no earlier than 2021-03-24 | Front End Developer - 4 | 40h |
| 339 | 1.2 | **Cycle 2 Feature Sets: Implement roles, objectives and game chat.** | 324d | 2020-11-12 | 2022-02-08 |  | 205d |  |  |  | 2960h |
| 340 | 1.2.1 | **Requirements** | 70d | 2020-11-19 | 2021-02-24 |  | 454d |  |  |  | 320h |
| 341 | 1.2.1.1 | Requirements Elicitation | 15d | 2020-11-19 | 2020-12-09 |  | 454d | 0d |  | Business Analyst - 1 | 120h |
| 342 | 1.2.1.2 | Documentation of requirements | 15d | 2021-01-21 | 2021-02-10 | 341 | 454d | 0d |  | Business Analyst - 1 | 120h |
| 343 | 1.2.1.3 | Review requirements | 10d | 2021-02-11 | 2021-02-24 | 342 | 454d |  |  | Client Resource | 80h |
| 344 | 1.2.2 | **User Interface design** | 105d | 2020-11-12 | 2021-04-07 |  | 424d |  |  |  | 320h |
| 345 | 1.2.2.1 | Initial Wireframe design | 10d | 2020-11-12 | 2020-11-25 |  | 424d | 0d |  | Business Analyst - 2 | 80h |
| 346 | 1.2.2.2 | Review of wireframe | 5d | 2020-11-26 | 2020-12-02 | 345 | 424d | 0d |  | Client Resource | 40h |
| 347 | 1.2.2.3 | Create design based off feedback | 20d | 2021-03-04 | 2021-03-31 | 346 | 424d | 0d |  | Business Analyst - 2 | 160h |
| 348 | 1.2.2.4 | Review design | 5d | 2021-04-01 | 2021-04-07 | 347 | 424d |  |  | Client Resource | 40h |
| 349 | 1.2.3 | **Software Design** | 30d | 2021-05-03 | 2021-06-11 |  | 377d |  |  |  | 160h |
| 350 | 1.2.3.1 | Create design document | 10d | 2021-05-03 | 2021-05-28 |  | 377d | 0d | start no earlier than 2021-05-03 | Technical Architect | 80h |
| 351 | 1.2.3.2 | Review of design | 10d | 2021-05-31 | 2021-06-11 | 350 | 377d |  |  | Technical Architect | 80h |
| 352 | 1.2.4 | **F1. As a player, when I move on the screen, the player should have an animation that shows them moving in the game** | 190d | 2021-01-06 | 2021-09-28 |  | 255d |  |  |  | 320h |
| 353 | 1.2.4.1 | **F1.1 When the player is actively moving on the screen, the character will show a running animation indicating movement** | 185d | 2021-01-06 | 2021-09-21 |  | 260d |  |  |  | 160h |
| 354 | 1.2.4.1.1 | **Software Development** | 30d | 2021-01-06 | 2021-02-16 |  | 260d |  |  |  | 80h |
| 355 | 1.2.4.1.1.1 | Development of software | 5d | 2021-01-06 | 2021-01-12 |  | 260d | 0d | finish no earlier than 2021-01-12 | Front End Developer | 40h |
| 356 | 1.2.4.1.1.2 | Code Review | 5d | 2021-02-10 | 2021-02-16 | 355 | 260d | 0d | finish no earlier than 2021-01-12 | Front End Developer | 40h |
| 357 | 1.2.4.1.2 | **Unit Testing** | 165d | 2021-02-03 | 2021-09-21 |  | 260d |  |  |  | 80h |
| 358 | 1.2.4.1.2.1 | Creation of test cases | 5d | 2021-02-03 | 2021-02-09 |  | 265d | 5d | start no earlier than 2021-01-06 | Front End Developer | 40h |
| 359 | 1.2.4.1.2.2 | Execution of test cases | 5d | 2021-09-15 | 2021-09-21 | 356, 358 | 260d | 55d | start no earlier than 2021-01-06 | Front End Developer | 40h |

| ID | WBS | Task | Duration | Start | Finish | Predecessors | Total slack | Free slack | Constraint | Resources | Work |
| --- | --- | --- | --- | --- | --- | --- | --- | --- | --- | --- | --- |
| 360 | 1.2.4.2 | **F1.2 The player is not moving on the screen, the character will not display a running animation** | 185d | 2021-01-13 | 2021-09-28 |  | 255d |  |  |  | 160h |
| 361 | 1.2.4.2.1 | **Software Development** | 35d | 2021-01-13 | 2021-03-02 |  | 255d |  |  |  | 80h |
| 362 | 1.2.4.2.1.1 | Development of software | 5d | 2021-01-13 | 2021-01-19 |  | 255d | 0d | finish no earlier than 2021-01-19 | Front End Developer | 40h |
| 363 | 1.2.4.2.1.2 | Code Review | 5d | 2021-02-24 | 2021-03-02 | 362 | 255d | 0d | finish no earlier than 2021-01-19 | Front End Developer | 40h |
| 364 | 1.2.4.2.2 | **Unit Testing** | 160d | 2021-02-17 | 2021-09-28 |  | 255d |  |  |  | 80h |
| 365 | 1.2.4.2.2.1 | Creation of test cases | 5d | 2021-02-17 | 2021-02-23 |  | 260d | 5d | finish no earlier than 2021-01-19 | Front End Developer | 40h |
| 366 | 1.2.4.2.2.2 | Execution of test cases | 5d | 2021-09-22 | 2021-09-28 | 363, 365 | 255d | 50d | finish no earlier than 2021-01-19 | Front End Developer | 40h |
| 367 | 1.2.5 | **F2. As a player, I can either be a crewmate or an imposter within the game** | 190d | 2021-01-20 | 2021-10-12 |  | 245d |  |  |  | 320h |
| 368 | 1.2.5.1 | **F2.1 At the start of the game, the game will randomly select a player to become the imposter for the round** | 185d | 2021-01-20 | 2021-10-05 |  | 250d |  |  |  | 160h |
| 369 | 1.2.5.1.1 | **Software Development** | 45d | 2021-01-20 | 2021-03-23 |  | 250d |  |  |  | 80h |
| 370 | 1.2.5.1.1.1 | Development of software | 5d | 2021-01-20 | 2021-01-26 |  | 250d | 0d | start no earlier than 2021-01-20 | Front End Developer | 40h |
| 371 | 1.2.5.1.1.2 | Code Review | 5d | 2021-03-17 | 2021-03-23 | 370 | 250d | 0d | start no earlier than 2021-01-20 | Front End Developer | 40h |
| 372 | 1.2.5.1.2 | **Unit Testing** | 155d | 2021-03-03 | 2021-10-05 |  | 250d |  |  |  | 80h |
| 373 | 1.2.5.1.2.1 | Creation of test cases | 5d | 2021-03-03 | 2021-03-09 |  | 260d | 10d | start no earlier than 2021-01-20 | Front End Developer | 40h |
| 374 | 1.2.5.1.2.2 | Execution of test cases | 5d | 2021-09-29 | 2021-10-05 | 371, 373 | 250d | 45d | start no earlier than 2021-01-20 | Front End Developer | 40h |
| 375 | 1.2.5.2 | **F2.2 At the start of the game, the game will assign all other players as crewmates for the round** | 185d | 2021-01-27 | 2021-10-12 |  | 245d |  |  |  | 160h |
| 376 | 1.2.5.2.1 | **Software Development** | 45d | 2021-01-27 | 2021-03-30 |  | 245d |  |  |  | 80h |
| 377 | 1.2.5.2.1.1 | Development of software | 5d | 2021-01-27 | 2021-02-02 |  | 245d | 0d | start no earlier than 2021-01-20 | Front End Developer | 40h |
| 378 | 1.2.5.2.1.2 | Code Review | 5d | 2021-03-24 | 2021-03-30 | 377 | 245d | 0d | start no earlier than 2021-01-20 | Front End Developer | 40h |
| 379 | 1.2.5.2.2 | **Unit Testing** | 155d | 2021-03-10 | 2021-10-12 |  | 245d |  |  |  | 80h |
| 380 | 1.2.5.2.2.1 | Creation of test cases | 5d | 2021-03-10 | 2021-03-16 |  | 255d | 10d | start no earlier than 2021-01-20 | Front End Developer | 40h |
| 381 | 1.2.5.2.2.2 | Execution of test cases | 5d | 2021-10-06 | 2021-10-12 | 378, 380 | 245d | 40d | start no earlier than 2021-01-20 | Front End Developer | 40h |
| 382 | 1.2.6 | **F3. As a player, I can communicate with other players via a chat channel** | 170d | 2021-03-31 | 2021-11-23 |  | 215d |  |  |  | 960h |
| 383 | 1.2.6.1 | **F3.1 The chat dialog will only be available to the users when a player clicks on “emergency meeting” button** | 150d | 2021-03-31 | 2021-10-26 |  | 235d |  |  |  | 320h |
| 384 | 1.2.6.1.1 | **Software Development** | 70d | 2021-03-31 | 2021-07-06 |  | 235d |  |  |  | 160h |
| 385 | 1.2.6.1.1.1 | Development of software | 10d | 2021-03-31 | 2021-04-13 |  | 235d | 0d | finish no earlier than 2021-04-13 | Front End Developer | 80h |
| 386 | 1.2.6.1.1.2 | Code Review | 10d | 2021-06-23 | 2021-07-06 | 385 | 235d | 0d | finish no earlier than 2021-04-13 | Front End Developer | 80h |

| ID | WBS | Task | Duration | Start | Finish | Predecessors | Total slack | Free slack | Constraint | Resources | Work |
| --- | --- | --- | --- | --- | --- | --- | --- | --- | --- | --- | --- |
| 387 | 1.2.6.1.2 | **Unit Testing** | 120d | 2021-05-12 | 2021-10-26 |  | 235d |  |  |  | 160h |
| 388 | 1.2.6.1.2.1 | Creation of test cases | 10d | 2021-05-12 | 2021-05-25 |  | 265d | 30d | finish no earlier than 2021-04-13 | Front End Developer | 80h |
| 389 | 1.2.6.1.2.2 | Execution of test cases | 10d | 2021-10-13 | 2021-10-26 | 386, 388 | 235d | 30d | finish no earlier than 2021-04-13 | Front End Developer | 80h |
| 390 | 1.2.6.2 | **F3.2 The player can hit enter after they are done typing to send their message** | 150d | 2021-04-14 | 2021-11-09 |  | 225d |  |  |  | 320h |
| 391 | 1.2.6.2.1 | **Software Development** | 70d | 2021-04-14 | 2021-07-20 |  | 225d |  |  |  | 160h |
| 392 | 1.2.6.2.1.1 | Development of software | 10d | 2021-04-14 | 2021-04-27 |  | 225d | 0d | finish no earlier than 2021-04-13 | Front End Developer | 80h |
| 393 | 1.2.6.2.1.2 | Code Review | 10d | 2021-07-07 | 2021-07-20 | 392 | 225d | 0d | finish no earlier than 2021-04-13 | Front End Developer | 80h |
| 394 | 1.2.6.2.2 | **Unit Testing** | 120d | 2021-05-26 | 2021-11-09 |  | 225d |  |  |  | 160h |
| 395 | 1.2.6.2.2.1 | Creation of test cases | 10d | 2021-05-26 | 2021-06-08 |  | 255d | 30d | finish no earlier than 2021-04-13 | Front End Developer | 80h |
| 396 | 1.2.6.2.2.2 | Execution of test cases | 10d | 2021-10-27 | 2021-11-09 | 393, 395 | 225d | 20d | finish no earlier than 2021-04-13 | Front End Developer | 80h |
| 397 | 1.2.6.3 | **F3.3 If a player is dead for the current round, they cannot type into the chat channel** | 150d | 2021-04-28 | 2021-11-23 |  | 215d |  |  |  | 320h |
| 398 | 1.2.6.3.1 | **Software Development** | 70d | 2021-04-28 | 2021-08-03 |  | 215d |  |  |  | 160h |
| 399 | 1.2.6.3.1.1 | Development of software | 10d | 2021-04-28 | 2021-05-11 |  | 215d | 0d | finish no earlier than 2021-04-13 | Front End Developer | 80h |
| 400 | 1.2.6.3.1.2 | Code Review | 10d | 2021-07-21 | 2021-08-03 | 399 | 215d | 0d | finish no earlier than 2021-04-13 | Front End Developer | 80h |
| 401 | 1.2.6.3.2 | **Unit Testing** | 120d | 2021-06-09 | 2021-11-23 |  | 215d |  |  |  | 160h |
| 402 | 1.2.6.3.2.1 | Creation of test cases | 10d | 2021-06-09 | 2021-06-22 |  | 245d | 30d | finish no earlier than 2021-04-13 | Front End Developer | 80h |
| 403 | 1.2.6.3.2.2 | Execution of test cases | 10d | 2021-11-10 | 2021-11-23 | 400, 402 | 215d | 10d | finish no earlier than 2021-04-13 | Front End Developer | 80h |
| 404 | 1.2.7 | **F.4 As a player, I will get a list of objectives at the beginning of the round outlining what I should do.** | 90d | 2021-08-04 | 2021-12-07 |  | 205d |  |  |  | 320h |
| 405 | 1.2.7.1 | **F4.1 At the beginning of the round, the crewmate players will get a list of tasks that they will need to complete** | 85d | 2021-08-04 | 2021-11-30 |  | 210d |  |  |  | 160h |
| 406 | 1.2.7.1.1 | **Software Development** | 20d | 2021-08-04 | 2021-08-31 |  | 210d |  |  |  | 80h |
| 407 | 1.2.7.1.1.1 | Development of software | 5d | 2021-08-04 | 2021-08-10 |  | 210d | 0d | start no earlier than 2021-04-28 | Front End Developer | 40h |
| 408 | 1.2.7.1.1.2 | Code Review | 5d | 2021-08-25 | 2021-08-31 | 407 | 210d | 0d | start no earlier than 2021-04-28 | Front End Developer | 40h |
| 409 | 1.2.7.1.2 | **Unit Testing** | 75d | 2021-08-18 | 2021-11-30 |  | 210d |  |  |  | 80h |
| 410 | 1.2.7.1.2.1 | Creation of test cases | 5d | 2021-08-18 | 2021-08-24 |  | 215d | 5d | start no earlier than 2021-04-28 | Front End Developer | 40h |
| 411 | 1.2.7.1.2.2 | Execution of test cases | 5d | 2021-11-24 | 2021-11-30 | 408, 410 | 210d | 5d | start no earlier than 2021-04-28 | Front End Developer | 40h |

| ID | WBS | Task | Duration | Start | Finish | Predecessors | Total slack | Free slack | Constraint | Resources | Work |
| --- | --- | --- | --- | --- | --- | --- | --- | --- | --- | --- | --- |
| 412 | 1.2.7.2 | **F4.2 At the beginning of the round, the imposter player will get a list of tasks that they can sabotage** | 85d | 2021-08-11 | 2021-12-07 |  | 205d |  |  |  | 160h |
| 413 | 1.2.7.2.1 | **Software Development** | 25d | 2021-08-11 | 2021-09-14 |  | 205d |  |  |  | 80h |
| 414 | 1.2.7.2.1.1 | Development of software | 5d | 2021-08-11 | 2021-08-17 |  | 205d | 0d | start no earlier than 2021-05-05 | Front End Developer | 40h |
| 415 | 1.2.7.2.1.2 | Code Review | 5d | 2021-09-08 | 2021-09-14 | 414 | 205d | 0d | start no earlier than 2021-05-05 | Front End Developer | 40h |
| 416 | 1.2.7.2.2 | **Unit Testing** | 70d | 2021-09-01 | 2021-12-07 |  | 205d |  |  |  | 80h |
| 417 | 1.2.7.2.2.1 | Creation of test cases | 5d | 2021-09-01 | 2021-09-07 |  | 210d | 5d | start no earlier than 2021-05-05 | Front End Developer | 40h |
| 418 | 1.2.7.2.2.2 | Execution of test cases | 5d | 2021-12-01 | 2021-12-07 | 415, 417 | 205d | 0d | start no earlier than 2021-05-05 | Front End Developer | 40h |
| 419 | 1.2.8 | **Vulnerability Assessment** | 11d | 2021-12-08 | 2021-12-22 |  | 205d |  |  |  | 80h |
| 420 | 1.2.8.1 | Execution of vulnerability scan | 1d | 2021-12-08 | 2021-12-08 | 359, 366, 374, 381, 389, 396, 403, 411, 418 | 205d | 0d |  | Security Analyst | 8h |
| 421 | 1.2.8.2 | Creation of reports | 2d | 2021-12-09 | 2021-12-10 | 420 | 205d | 0d |  | Security Analyst | 16h |
| 422 | 1.2.8.3 | Vulnerability remediationby development team | 4d | 2021-12-13 | 2021-12-16 | 421 | 205d | 0d |  | Technical Architect | 32h |
| 423 | 1.2.8.4 | Re-scan for vulnerabilities | 1d | 2021-12-20 | 2021-12-20 | 422 | 205d | 0d |  | Security Analyst | 8h |
| 424 | 1.2.8.5 | Final reportcreated | 2d | 2021-12-21 | 2021-12-22 | 423 | 239d |  |  | Security Analyst | 16h |
| 425 | 1.2.9 | **Testing** | 36d | 2021-12-21 | 2022-02-08 |  | 205d |  |  |  | 160h |
| 426 | 1.2.9.1 | **Performance Testing** | 16d | 2021-12-21 | 2022-01-11 |  | 205d |  |  |  | 80h |
| 427 | 1.2.9.1.1 | Creation of Performance Test Cases | 5d | 2021-12-21 | 2021-12-27 | 423 | 205d | 0d |  | Performance Engineer | 40h |
| 428 | 1.2.9.1.2 | Execution test cases | 5d | 2022-01-05 | 2022-01-11 | 427 | 205d | 0d |  | Performance Engineer | 40h |
| 429 | 1.2.9.2 | **Regression Testing** | 20d | 2022-01-12 | 2022-02-08 |  | 205d |  |  |  | 80h |
| 430 | 1.2.9.2.1 | Creation of regression suite of test cases | 5d | 2022-01-12 | 2022-01-18 | 428 | 205d | 0d |  | Quality Assurance | 40h |
| 431 | 1.2.9.2.2 | Execution of regression suite | 5d | 2022-02-02 | 2022-02-08 | 430 | 205d |  |  | Quality Assurance | 40h |
| 432 | 1.3 | **Cycle 3 Feature Sets: Implement the user profile, winnings statistics, friend requests and add a friend** | 499d | 2020-11-26 | 2022-10-25 |  | 20d |  |  |  | 2720h |
| 433 | 1.3.1 | **Requirements** | 70d | 2020-12-10 | 2021-03-17 |  | 439d |  |  |  | 320h |
| 434 | 1.3.1.1 | Requirements Elicitation | 15d | 2020-12-10 | 2020-12-30 |  | 439d | 0d |  | Business Analyst - 1 | 120h |
| 435 | 1.3.1.2 | Documentation of requirements | 15d | 2021-02-11 | 2021-03-03 | 434 | 439d | 0d |  | Business Analyst - 1 | 120h |
| 436 | 1.3.1.3 | Review requirements | 10d | 2021-03-04 | 2021-03-17 | 435 | 439d |  |  | Client Resource | 80h |

| ID | WBS | Task | Duration | Start | Finish | Predecessors | Total slack | Free slack | Constraint | Resources | Work |
| --- | --- | --- | --- | --- | --- | --- | --- | --- | --- | --- | --- |
| 437 | 1.3.2 | **User Interface design** | 115d | 2020-11-26 | 2021-05-05 |  | 404d |  |  |  | 320h |
| 438 | 1.3.2.1 | Initial Wireframe design | 10d | 2020-11-26 | 2020-12-09 |  | 404d | 0d |  | Business Analyst - 2 | 80h |
| 439 | 1.3.2.2 | Review of wireframe | 5d | 2020-12-10 | 2020-12-16 | 438 | 404d | 0d |  | Client Resource | 40h |
| 440 | 1.3.2.3 | Create design based off feedback | 20d | 2021-04-01 | 2021-04-28 | 439 | 404d | 0d |  | Business Analyst - 2 | 160h |
| 441 | 1.3.2.4 | Review design | 5d | 2021-04-29 | 2021-05-05 | 440 | 404d |  |  | Client Resource | 40h |
| 442 | 1.3.3 | **Software Design** | 30d | 2021-07-26 | 2021-09-03 |  | 317d |  |  |  | 160h |
| 443 | 1.3.3.1 | Create design document | 10d | 2021-07-26 | 2021-08-20 |  | 317d | 0d | start no earlier than 2021-07-26 | Technical Architect | 80h |
| 444 | 1.3.3.2 | Review of design | 10d | 2021-08-23 | 2021-09-03 | 443 | 317d |  |  | Technical Architect | 80h |
| 445 | 1.3.4 | **F1. As a player, I can create a user profile** | 290d | 2021-01-27 | 2022-03-08 |  | 185d |  |  |  | 320h |
| 446 | 1.3.4.1 | **F1.1 The player can create a user by choosing a name and the color of their character** | 285d | 2021-01-27 | 2022-03-01 |  | 190d |  |  |  | 160h |
| 447 | 1.3.4.1.1 | **Software Development** | 280d | 2021-01-27 | 2022-02-22 |  | 190d |  |  |  | 80h |
| 448 | 1.3.4.1.1.1 | Development of software | 5d | 2021-01-27 | 2021-02-02 |  | 190d | 0d | finish no earlier than 2021-01-12 | Front End Developer -1 | 40h |
| 449 | 1.3.4.1.1.2 | Code Review | 5d | 2022-02-16 | 2022-02-22 | 448 | 190d | 0d | finish no earlier than 2021-01-12 | Front End Developer -1 | 40h |
| 450 | 1.3.4.1.2 | **Unit Testing** | 280d | 2021-02-03 | 2022-03-01 |  | 190d |  |  |  | 80h |
| 451 | 1.3.4.1.2.1 | Creation of test cases | 5d | 2021-02-03 | 2021-02-09 |  | 460d | 270d | start no earlier than 2021-01-06 | Front End Developer - 2 | 40h |
| 452 | 1.3.4.1.2.2 | Execution of test cases | 5d | 2022-02-23 | 2022-03-01 | 449, 451 | 190d |  | start no earlier than 2021-01-06 | Front End Developer - 2 | 40h |
| 453 | 1.3.4.2 | **F1.2 The player can edit their name or character color** | 280d | 2021-02-10 | 2022-03-08 |  | 185d |  |  |  | 160h |
| 454 | 1.3.4.2.1 | **Software Development** | 270d | 2021-02-17 | 2022-03-01 |  | 185d |  |  |  | 80h |
| 455 | 1.3.4.2.1.1 | Development of software | 5d | 2021-02-17 | 2021-02-23 |  | 185d | 0d | finish no earlier than 2021-01-19 | Front End Developer -1 | 40h |
| 456 | 1.3.4.2.1.2 | Code Review | 5d | 2022-02-23 | 2022-03-01 | 455 | 185d | 0d | finish no earlier than 2021-01-19 | Front End Developer -1 | 40h |
| 457 | 1.3.4.2.2 | **Unit Testing** | 280d | 2021-02-10 | 2022-03-08 |  | 185d |  |  |  | 80h |
| 458 | 1.3.4.2.2.1 | Creation of test cases | 5d | 2021-02-10 | 2021-02-16 |  | 455d | 270d | finish no earlier than 2021-01-19 | Front End Developer - 2 | 40h |
| 459 | 1.3.4.2.2.2 | Execution of test cases | 5d | 2022-03-02 | 2022-03-08 | 456, 458 | 185d |  | finish no earlier than 2021-01-19 | Front End Developer - 2 | 40h |
| 460 | 1.3.5 | **F2. As a player, I can view the statistics of my game play** | 295d | 2021-02-24 | 2022-04-12 |  | 160d |  |  |  | 480h |
| 461 | 1.3.5.1 | **F2.1 The player can view how many games that they have won as a crewmate** | 280d | 2021-02-24 | 2022-03-22 |  | 175d |  |  |  | 160h |
| 462 | 1.3.5.1.1 | **Software Development** | 270d | 2021-03-03 | 2022-03-15 |  | 175d |  |  |  | 80h |
| 463 | 1.3.5.1.1.1 | Development of software | 5d | 2021-03-03 | 2021-03-09 |  | 175d | 0d | start no earlier than 2021-01-20 | Front End Developer -1 | 40h |
| 464 | 1.3.5.1.1.2 | Code Review | 5d | 2022-03-09 | 2022-03-15 | 463 | 175d | 0d | start no earlier than 2021-01-20 | Front End Developer -1 | 40h |

| ID | WBS | Task | Duration | Start | Finish | Predecessors | Total slack | Free slack | Constraint | Resources | Work |
| --- | --- | --- | --- | --- | --- | --- | --- | --- | --- | --- | --- |
| 465 | 1.3.5.1.2 | **Unit Testing** | 280d | 2021-02-24 | 2022-03-22 |  | 175d |  |  |  | 80h |
| 466 | 1.3.5.1.2.1 | Creation of test cases | 5d | 2021-02-24 | 2021-03-02 |  | 445d | 270d | start no earlier than 2021-01-20 | Front End Developer - 2 | 40h |
| 467 | 1.3.5.1.2.2 | Execution of test cases | 5d | 2022-03-16 | 2022-03-22 | 464, 466 | 175d |  | start no earlier than 2021-01-20 | Front End Developer - 2 | 40h |
| 468 | 1.3.5.2 | **F2.2. The player can view how many games that they have lost as a crewmate** | 280d | 2021-03-03 | 2022-03-29 |  | 170d |  |  |  | 160h |
| 469 | 1.3.5.2.1 | **Software Development** | 270d | 2021-03-10 | 2022-03-22 |  | 170d |  |  |  | 80h |
| 470 | 1.3.5.2.1.1 | Development of software | 5d | 2021-03-10 | 2021-03-16 |  | 170d | 0d | start no earlier than 2021-01-20 | Front End Developer -1 | 40h |
| 471 | 1.3.5.2.1.2 | Code Review | 5d | 2022-03-16 | 2022-03-22 | 470 | 170d | 0d | start no earlier than 2021-01-20 | Front End Developer -1 | 40h |
| 472 | 1.3.5.2.2 | **Unit Testing** | 280d | 2021-03-03 | 2022-03-29 |  | 170d |  |  |  | 80h |
| 473 | 1.3.5.2.2.1 | Creation of test cases | 5d | 2021-03-03 | 2021-03-09 |  | 440d | 270d | start no earlier than 2021-01-20 | Front End Developer - 2 | 40h |
| 474 | 1.3.5.2.2.2 | Execution of test cases | 5d | 2022-03-23 | 2022-03-29 | 471, 473 | 170d |  | start no earlier than 2021-01-20 | Front End Developer - 2 | 40h |
| 475 | 1.3.5.3 | **F2.3 The player can view how many tasks that they have completed as a crewmate** | 280d | 2021-03-17 | 2022-04-12 |  | 160d |  |  |  | 160h |
| 476 | 1.3.5.3.1 | **Software Development** | 270d | 2021-03-24 | 2022-04-05 |  | 160d |  |  |  | 80h |
| 477 | 1.3.5.3.1.1 | Development of software | 5d | 2021-03-24 | 2021-03-30 |  | 160d | 0d | start no earlier than 2021-01-26 | Front End Developer -1 | 40h |
| 478 | 1.3.5.3.1.2 | Code Review | 5d | 2022-03-30 | 2022-04-05 | 477 | 160d | 0d | start no earlier than 2021-01-26 | Front End Developer -1 | 40h |
| 479 | 1.3.5.3.2 | **Unit Testing** | 280d | 2021-03-17 | 2022-04-12 |  | 160d |  |  |  | 80h |
| 480 | 1.3.5.3.2.1 | Creation of test cases | 5d | 2021-03-17 | 2021-03-23 |  | 430d | 270d | start no earlier than 2021-01-26 | Front End Developer - 2 | 40h |
| 481 | 1.3.5.3.2.2 | Execution of test cases | 5d | 2022-04-06 | 2022-04-12 | 478, 480 | 160d |  | start no earlier than 2021-01-26 | Front End Developer - 2 | 40h |
| 482 | 1.3.6 | **F2. CONTINUED - As a player, I can view the statistics of my game play** | 310d | 2021-05-19 | 2022-07-26 |  | 85d |  |  |  | 480h |
| 483 | 1.3.6.1 | **F2.4 The player can view how many games that they have won as an imposter** | 280d | 2021-05-19 | 2022-06-14 |  | 115d |  |  |  | 160h |
| 484 | 1.3.6.1.1 | **Software Development** | 270d | 2021-05-26 | 2022-06-07 |  | 115d |  |  |  | 80h |
| 485 | 1.3.6.1.1.1 | Development of software | 5d | 2021-05-26 | 2021-06-01 |  | 115d | 0d | finish no earlier than 2021-02-09 | Front End Developer -1 | 40h |
| 486 | 1.3.6.1.1.2 | Code Review | 5d | 2022-06-01 | 2022-06-07 | 485 | 115d | 0d | finish no earlier than 2021-02-09 | Front End Developer -1 | 40h |
| 487 | 1.3.6.1.2 | **Unit Testing** | 280d | 2021-05-19 | 2022-06-14 |  | 115d |  |  |  | 80h |
| 488 | 1.3.6.1.2.1 | Creation of test cases | 5d | 2021-05-19 | 2021-05-25 |  | 385d | 270d | finish no earlier than 2021-02-09 | Front End Developer - 2 | 40h |
| 489 | 1.3.6.1.2.2 | Execution of test cases | 5d | 2022-06-08 | 2022-06-14 | 486, 488 | 115d |  | finish no earlier than 2021-02-09 | Front End Developer - 2 | 40h |

| ID | WBS | Task | Duration | Start | Finish | Predecessors | Total slack | Free slack | Constraint | Resources | Work |
| --- | --- | --- | --- | --- | --- | --- | --- | --- | --- | --- | --- |
| 490 | 1.3.6.2 | **F2.5 The player can view how many games that they have lost as an imposter** | 280d | 2021-05-26 | 2022-06-21 |  | 110d |  |  |  | 160h |
| 491 | 1.3.6.2.1 | **Software Development** | 270d | 2021-06-02 | 2022-06-14 |  | 110d |  |  |  | 80h |
| 492 | 1.3.6.2.1.1 | Development of software | 5d | 2021-06-02 | 2021-06-08 |  | 110d | 0d | finish no earlier than 2021-02-09 | Front End Developer -1 | 40h |
| 493 | 1.3.6.2.1.2 | Code Review | 5d | 2022-06-08 | 2022-06-14 | 492 | 110d | 0d | finish no earlier than 2021-02-09 | Front End Developer -1 | 40h |
| 494 | 1.3.6.2.2 | **Unit Testing** | 280d | 2021-05-26 | 2022-06-21 |  | 110d |  |  |  | 80h |
| 495 | 1.3.6.2.2.1 | Creation of test cases | 5d | 2021-05-26 | 2021-06-01 |  | 380d | 270d | finish no earlier than 2021-02-09 | Front End Developer - 2 | 40h |
| 496 | 1.3.6.2.2.2 | Execution of test cases | 5d | 2022-06-15 | 2022-06-21 | 493, 495 | 110d |  | finish no earlier than 2021-02-09 | Front End Developer - 2 | 40h |
| 497 | 1.3.6.3 | **F2.6 The player can see how many tasks that they have sabotaged as an imposter** | 280d | 2021-06-30 | 2022-07-26 |  | 85d |  |  |  | 160h |
| 498 | 1.3.6.3.1 | **Software Development** | 270d | 2021-07-07 | 2022-07-19 |  | 85d |  |  |  | 80h |
| 499 | 1.3.6.3.1.1 | Development of software | 5d | 2021-07-07 | 2021-07-13 |  | 85d | 0d | finish no earlier than 2021-02-16 | Front End Developer -1 | 40h |
| 500 | 1.3.6.3.1.2 | Code Review | 5d | 2022-07-13 | 2022-07-19 | 499 | 85d | 0d | finish no earlier than 2021-02-16 | Front End Developer -1 | 40h |
| 501 | 1.3.6.3.2 | **Unit Testing** | 280d | 2021-06-30 | 2022-07-26 |  | 85d |  |  |  | 80h |
| 502 | 1.3.6.3.2.1 | Creation of test cases | 5d | 2021-06-30 | 2021-07-06 |  | 355d | 270d | finish no earlier than 2021-02-16 | Front End Developer - 2 | 40h |
| 503 | 1.3.6.3.2.2 | Execution of test cases | 5d | 2022-07-20 | 2022-07-26 | 500, 502 | 85d |  | finish no earlier than 2021-02-16 | Front End Developer - 2 | 40h |
| 504 | 1.3.7 | **F3. As a player, I can send a friend request to another player** | 310d | 2021-08-18 | 2022-10-25 |  | 20d |  |  |  | 320h |
| 505 | 1.3.7.1 | **F3.1 The player can type in a friend code to send a friend request** | 280d | 2021-08-18 | 2022-09-13 |  | 50d |  |  |  | 160h |
| 506 | 1.3.7.1.1 | **Software Development** | 270d | 2021-08-25 | 2022-09-06 |  | 50d |  |  |  | 80h |
| 507 | 1.3.7.1.1.1 | Development of software | 5d | 2021-08-25 | 2021-08-31 |  | 50d | 0d | finish no earlier than 2021-03-16 | Front End Developer -1 | 40h |
| 508 | 1.3.7.1.1.2 | Code Review | 5d | 2022-08-31 | 2022-09-06 | 507 | 50d | 0d | finish no earlier than 2021-03-16 | Front End Developer -1 | 40h |
| 509 | 1.3.7.1.2 | **Unit Testing** | 280d | 2021-08-18 | 2022-09-13 |  | 50d |  |  |  | 80h |
| 510 | 1.3.7.1.2.1 | Creation of test cases | 5d | 2021-08-18 | 2021-08-24 |  | 320d | 270d | finish no earlier than 2021-03-16 | Front End Developer - 2 | 40h |
| 511 | 1.3.7.1.2.2 | Execution of test cases | 5d | 2022-09-07 | 2022-09-13 | 508, 510 | 50d |  | finish no earlier than 2021-03-16 | Front End Developer - 2 | 40h |
| 512 | 1.3.7.2 | **F3.2 If the player types in an invalid friend code, the game will alert the user to type in a valid code.** | 220d | 2021-12-22 | 2022-10-25 |  | 20d |  |  |  | 160h |
| 513 | 1.3.7.2.1 | **Software Development** | 210d | 2021-12-29 | 2022-10-18 |  | 20d |  |  |  | 80h |
| 514 | 1.3.7.2.1.1 | Development of software | 5d | 2021-12-29 | 2022-01-04 |  | 20d | 0d | finish no earlier than 2021-03-30 | Front End Developer -1 | 40h |
| 515 | 1.3.7.2.1.2 | Code Review | 5d | 2022-10-12 | 2022-10-18 | 514 | 20d | 0d | finish no earlier than 2021-03-30 | Front End Developer -1 | 40h |

| ID | WBS | Task | Duration | Start | Finish | Predecessors | Total slack | Free slack | Constraint | Resources | Work |
| --- | --- | --- | --- | --- | --- | --- | --- | --- | --- | --- | --- |
| 516 | 1.3.7.2.2 | **Unit Testing** | 220d | 2021-12-22 | 2022-10-25 |  | 20d |  |  |  | 80h |
| 517 | 1.3.7.2.2.1 | Creation of test cases | 5d | 2021-12-22 | 2021-12-28 |  | 230d | 210d | finish no earlier than 2021-03-30 | Front End Developer - 2 | 40h |
| 518 | 1.3.7.2.2.2 | Execution of test cases | 5d | 2022-10-19 | 2022-10-25 | 515, 517 | 20d |  | finish no earlier than 2021-03-30 | Front End Developer - 2 | 40h |
| 519 | 1.3.8 | **F4. As a player, I can accept a friend request from another player** | 295d | 2021-08-04 | 2022-09-20 |  | 45d |  |  |  | 320h |
| 520 | 1.3.8.1 | **F4.1 The player can give other players can generate a friend code to accept friend requests** | 280d | 2021-08-04 | 2022-08-30 |  | 60d |  |  |  | 160h |
| 521 | 1.3.8.1.1 | **Software Development** | 270d | 2021-08-11 | 2022-08-23 |  | 60d |  |  |  | 80h |
| 522 | 1.3.8.1.1.1 | Development of software | 5d | 2021-08-11 | 2021-08-17 |  | 60d | 0d | finish no earlier than 2021-03-09 | Front End Developer -1 | 40h |
| 523 | 1.3.8.1.1.2 | Code Review | 5d | 2022-08-17 | 2022-08-23 | 522 | 60d | 0d | finish no earlier than 2021-03-09 | Front End Developer -1 | 40h |
| 524 | 1.3.8.1.2 | **Unit Testing** | 280d | 2021-08-04 | 2022-08-30 |  | 60d |  |  |  | 80h |
| 525 | 1.3.8.1.2.1 | Creation of test cases | 5d | 2021-08-04 | 2021-08-10 |  | 330d | 270d | finish no earlier than 2021-03-09 | Front End Developer - 2 | 40h |
| 526 | 1.3.8.1.2.2 | Execution of test cases | 5d | 2022-08-24 | 2022-08-30 | 523, 525 | 60d |  | finish no earlier than 2021-03-09 | Front End Developer - 2 | 40h |
| 527 | 1.3.8.2 | **F4.2 The player can accept a friend request from another player** | 275d | 2021-09-01 | 2022-09-20 |  | 45d |  |  |  | 160h |
| 528 | 1.3.8.2.1 | **Software Development** | 270d | 2021-09-01 | 2022-09-13 |  | 45d |  |  |  | 80h |
| 529 | 1.3.8.2.1.1 | Development of software | 5d | 2021-09-01 | 2021-09-07 |  | 45d | 0d | finish no earlier than 2021-03-16 | Front End Developer -1 | 40h |
| 530 | 1.3.8.2.1.2 | Code Review | 5d | 2022-09-07 | 2022-09-13 | 529 | 45d | 0d | finish no earlier than 2021-03-16 | Front End Developer -1 | 40h |
| 531 | 1.3.8.2.2 | **Unit Testing** | 275d | 2021-09-01 | 2022-09-20 |  | 45d |  |  |  | 80h |
| 532 | 1.3.8.2.2.1 | Creation of test cases | 5d | 2021-09-01 | 2021-09-07 |  | 310d | 265d | finish no earlier than 2021-03-16 | Front End Developer - 2 | 40h |
| 533 | 1.3.8.2.2.2 | Execution of test cases | 5d | 2022-09-14 | 2022-09-20 | 532, 530 | 45d |  | finish no earlier than 2021-03-16 | Front End Developer - 2 | 40h |
| 534 | 1.4 | **Cycle 4 and Cycle 5 Feature Sets** | 509d | 2020-12-10 | 2022-11-22 |  | 0d |  |  |  | 2640h |
| 535 | 1.4.1 | **Requirements** | 50d | 2020-12-24 | 2021-03-03 |  | 449d |  |  |  | 320h |
| 536 | 1.4.1.1 | Requirements Elicitation | 15d | 2020-12-24 | 2021-01-13 |  | 449d | 0d |  | Business Analyst - 2 | 120h |
| 537 | 1.4.1.2 | Documentation of requirements | 15d | 2021-01-14 | 2021-02-03 | 536 | 449d | 0d |  | Business Analyst - 2 | 120h |
| 538 | 1.4.1.3 | Review requirements | 10d | 2021-02-04 | 2021-03-03 | 537 | 449d |  |  | Client Resource | 80h |
| 539 | 1.4.2 | **User Interface design** | 125d | 2020-12-10 | 2021-06-02 |  | 384d |  |  |  | 320h |
| 540 | 1.4.2.1 | Initial Wireframe design | 10d | 2020-12-10 | 2020-12-23 |  | 384d | 0d |  | Business Analyst - 2 | 80h |
| 541 | 1.4.2.2 | Review of wireframe | 5d | 2020-12-24 | 2020-12-30 | 540 | 384d | 0d |  | Client Resource | 40h |
| 542 | 1.4.2.3 | Create design based off feedback | 20d | 2021-04-29 | 2021-05-26 | 541 | 384d | 0d |  | Business Analyst - 2 | 160h |
| 543 | 1.4.2.4 | Review design | 5d | 2021-05-27 | 2021-06-02 | 542 | 384d |  |  | Client Resource | 40h |

| ID | WBS | Task | Duration | Start | Finish | Predecessors | Total slack | Free slack | Constraint | Resources | Work |
| --- | --- | --- | --- | --- | --- | --- | --- | --- | --- | --- | --- |
| 544 | 1.4.3 | **Software Design** | 30d | 2021-09-20 | 2021-10-29 |  | 277d |  |  |  | 160h |
| 545 | 1.4.3.1 | Create design document | 10d | 2021-09-20 | 2021-10-15 |  | 277d | 0d | start no earlier than 2021-09-20 | Technical Architect | 80h |
| 546 | 1.4.3.2 | Review of design | 10d | 2021-10-18 | 2021-10-29 | 545 | 277d |  |  | Technical Architect | 80h |
| 547 | 1.4.4 | **Cycle 4 F1. As a player, I can host a game for other players to join the game** | 315d | 2021-08-25 | 2022-11-08 |  | 10d |  |  |  | 320h |
| 548 | 1.4.4.1 | **F1.1 The host can have the ability to toggle the game to either be public or private** | 220d | 2021-12-29 | 2022-11-01 |  | 15d |  |  |  | 160h |
| 549 | 1.4.4.1.1 | **Software Development** | 210d | 2022-01-05 | 2022-10-25 |  | 15d |  |  |  | 80h |
| 550 | 1.4.4.1.1.1 | Development of software | 5d | 2022-01-05 | 2022-01-11 |  | 15d | 0d | start no earlier than 2021-08-18 | Front End Developer -1 | 40h |
| 551 | 1.4.4.1.1.2 | Code Review | 5d | 2022-10-19 | 2022-10-25 | 550 | 15d | 0d | start no earlier than 2021-08-18 | Front End Developer -1 | 40h |
| 552 | 1.4.4.1.2 | **Unit Testing** | 220d | 2021-12-29 | 2022-11-01 |  | 15d |  |  |  | 80h |
| 553 | 1.4.4.1.2.1 | Creation of test cases | 5d | 2021-12-29 | 2022-01-04 |  | 225d | 210d | start no earlier than 2021-08-18 | Front End Developer - 2 | 40h |
| 554 | 1.4.4.1.2.2 | Execution of test cases | 5d | 2022-10-26 | 2022-11-01 | 551, 553 | 15d |  | start no earlier than 2021-08-18 | Front End Developer - 2 | 40h |
| 555 | 1.4.4.2 | **F1.2 If the game choice was made private, a key would be generated so that other players can join the game** | 315d | 2021-08-25 | 2022-11-08 |  | 10d |  |  |  | 160h |
| 556 | 1.4.4.2.1 | **Software Development** | 210d | 2022-01-12 | 2022-11-01 |  | 10d |  |  |  | 80h |
| 557 | 1.4.4.2.1.1 | Development of software | 5d | 2022-01-12 | 2022-01-18 |  | 10d | 0d | start no earlier than 2021-08-25 | Front End Developer -1 | 40h |
| 558 | 1.4.4.2.1.2 | Code Review | 5d | 2022-10-26 | 2022-11-01 | 557 | 10d | 0d | start no earlier than 2021-08-25 | Front End Developer -1 | 40h |
| 559 | 1.4.4.2.2 | **Unit Testing** | 315d | 2021-08-25 | 2022-11-08 |  | 10d |  |  |  | 80h |
| 560 | 1.4.4.2.2.1 | Creation of test cases | 5d | 2021-08-25 | 2021-08-31 |  | 280d | 50d | start no earlier than 2021-08-25 | Front End Developer - 2 | 40h |
| 561 | 1.4.4.2.2.2 | Execution of test cases | 5d | 2022-11-02 | 2022-11-08 | 558, 560 | 10d |  | start no earlier than 2021-08-25 | Front End Developer - 2 | 40h |
| 562 | 1.4.5 | **Cycle 4 F2. As a player host, I can kick another player from the game** | 230d | 2022-01-05 | 2022-11-22 |  | 0d |  |  |  | 320h |
| 563 | 1.4.5.1 | **F2.1 The host can select a player and have them temporarily removed from the game** | 225d | 2022-01-05 | 2022-11-15 |  | 5d |  |  |  | 160h |
| 564 | 1.4.5.1.1 | **Software Development** | 210d | 2022-01-19 | 2022-11-08 |  | 5d |  |  |  | 80h |
| 565 | 1.4.5.1.1.1 | Development of software | 5d | 2022-01-19 | 2022-01-25 |  | 5d | 0d | start no earlier than 2021-09-01 | Front End Developer -1 | 40h |
| 566 | 1.4.5.1.1.2 | Code Review | 5d | 2022-11-02 | 2022-11-08 | 565 | 5d | 0d | start no earlier than 2021-09-01 | Front End Developer -1 | 40h |
| 567 | 1.4.5.1.2 | **Unit Testing** | 225d | 2022-01-05 | 2022-11-15 |  | 5d |  |  |  | 80h |
| 568 | 1.4.5.1.2.1 | Creation of test cases | 5d | 2022-01-05 | 2022-01-11 |  | 220d | 215d | start no earlier than 2021-09-01 | Front End Developer - 2 | 40h |
| 569 | 1.4.5.1.2.2 | Execution of test cases | 5d | 2022-11-09 | 2022-11-15 | 566, 568 | 5d |  | start no earlier than 2021-01-20 | Front End Developer - 2 | 40h |

| ID | WBS | Task | Duration | Start | Finish | Predecessors | Total slack | Free slack | Constraint | Resources | Work |
| --- | --- | --- | --- | --- | --- | --- | --- | --- | --- | --- | --- |
| 570 | 1.4.5.2 | **F2.2 The host can select a player and have them banned from the game so that they cannot rejoin** | 225d | 2022-01-12 | 2022-11-22 |  | 0d |  |  |  | 160h |
| 571 | 1.4.5.2.1 | **Software Development** | 210d | 2022-01-26 | 2022-11-15 |  | 0d |  |  |  | 80h |
| 572 | 1.4.5.2.1.1 | Development of software | 5d | 2022-01-26 | 2022-02-01 |  | 0d |  | start no earlier than 2021-09-08 | Front End Developer -1 | 40h |
| 573 | 1.4.5.2.1.2 | Code Review | 5d | 2022-11-09 | 2022-11-15 | 572 | 0d |  | start no earlier than 2021-09-08 | Front End Developer -1 | 40h |
| 574 | 1.4.5.2.2 | **Unit Testing** | 225d | 2022-01-12 | 2022-11-22 |  | 0d |  |  |  | 80h |
| 575 | 1.4.5.2.2.1 | Creation of test cases | 5d | 2022-01-12 | 2022-01-18 |  | 215d |  | start no earlier than 2021-09-08 | Front End Developer - 2 | 40h |
| 576 | 1.4.5.2.2.2 | Execution of test cases | 5d | 2022-11-16 | 2022-11-22 | 573, 575 | 0d |  | start no earlier than 2021-09-08 | Front End Developer - 2 | 40h |
| 577 | 1.4.6 | **Cycle 5 F1. As a player, I can search for a publicly hosted game and join it** | 105d | 2021-09-15 | 2022-02-08 |  | 205d |  |  |  | 640h |
| 578 | 1.4.6.1 | **F1.1 The player can see a list of all available games that have not started yet** | 40d | 2021-09-15 | 2021-11-09 |  | 235d |  |  |  | 160h |
| 579 | 1.4.6.1.1 | **Software Development** | 35d | 2021-09-15 | 2021-11-02 |  | 235d |  |  |  | 80h |
| 580 | 1.4.6.1.1.1 | Development of software | 5d | 2021-09-15 | 2021-09-21 |  | 235d | 0d | start no earlier than 2021-09-15 | Front End Developer -1 | 40h |
| 581 | 1.4.6.1.1.2 | Code Review | 5d | 2021-10-27 | 2021-11-02 | 580 | 235d | 0d | start no earlier than 2021-09-15 | Front End Developer -1 | 40h |
| 582 | 1.4.6.1.2 | **Unit Testing** | 40d | 2021-09-15 | 2021-11-09 |  | 235d |  |  |  | 80h |
| 583 | 1.4.6.1.2.1 | Creation of test cases | 5d | 2021-09-15 | 2021-09-21 |  | 265d | 30d | start no earlier than 2021-09-15 | Front End Developer - 2 | 40h |
| 584 | 1.4.6.1.2.2 | Execution of test cases | 5d | 2021-11-03 | 2021-11-09 | 581, 583 | 235d | 25d | start no earlier than 2021-09-15 | Front End Developer - 2 | 40h |
| 585 | 1.4.6.2 | **F1.2 The player can see a number of available spots still left in each game** | 100d | 2021-09-22 | 2022-02-08 |  | 205d |  |  |  | 160h |
| 586 | 1.4.6.2.1 | **Software Development** | 35d | 2021-09-22 | 2021-11-09 |  | 230d |  |  |  | 80h |
| 587 | 1.4.6.2.1.1 | Development of software | 5d | 2021-09-22 | 2021-09-28 |  | 230d | 0d | finish no earlier than 2021-09-21 | Front End Developer -1 | 40h |
| 588 | 1.4.6.2.1.2 | Code Review | 5d | 2021-11-03 | 2021-11-09 | 587 | 230d | 0d | finish no earlier than 2021-09-21 | Front End Developer -1 | 40h |
| 589 | 1.4.6.2.2 | **Unit Testing** | 65d | 2021-11-10 | 2022-02-08 |  | 205d |  |  |  | 80h |
| 590 | 1.4.6.2.2.1 | Creation of test cases | 5d | 2022-02-02 | 2022-02-08 |  | 205d |  | finish no earlier than 2021-09-21 | Front End Developer - 2 | 40h |
| 591 | 1.4.6.2.2.2 | Execution of test cases | 5d | 2021-11-10 | 2021-11-16 | 588, 560 | 230d | 20d | finish no earlier than 2021-09-21 | Front End Developer - 2 | 40h |
| 592 | 1.4.6.3 | **F1.3 The player can join a game if there are one or more available spots still left in the lobby** | 45d | 2021-09-22 | 2021-11-23 |  | 225d |  |  |  | 160h |
| 593 | 1.4.6.3.1 | **Software Development** | 35d | 2021-09-29 | 2021-11-16 |  | 225d |  |  |  | 80h |
| 594 | 1.4.6.3.1.1 | Development of software | 5d | 2021-09-29 | 2021-10-05 |  | 225d | 0d | finish no earlier than 2021-09-28 | Front End Developer -1 | 40h |
| 595 | 1.4.6.3.1.2 | Code Review | 5d | 2021-11-10 | 2021-11-16 | 594 | 225d | 0d | finish no earlier than 2021-09-28 | Front End Developer -1 | 40h |

| ID | WBS | Task | Duration | Start | Finish | Predecessors | Total slack | Free slack | Constraint | Resources | Work |
| --- | --- | --- | --- | --- | --- | --- | --- | --- | --- | --- | --- |
| 596 | 1.4.6.3.2 | **Unit Testing** | 45d | 2021-09-22 | 2021-11-23 |  | 225d |  |  |  | 80h |
| 597 | 1.4.6.3.2.1 | Creation of test cases | 5d | 2021-09-22 | 2021-09-28 |  | 260d | 35d | finish no earlier than 2021-09-28 | Front End Developer - 2 | 40h |
| 598 | 1.4.6.3.2.2 | Execution of test cases | 5d | 2021-11-17 | 2021-11-23 | 595, 597 | 225d | 15d | finish no earlier than 2021-09-28 | Front End Developer - 2 | 40h |
| 599 | 1.4.6.4 | **F1.4 If during the joining process, that the lobby becomes full, the game will tell the player to select another lobby.** | 45d | 2021-09-29 | 2021-11-30 |  | 220d |  |  |  | 160h |
| 600 | 1.4.6.4.1 | **Software Development** | 35d | 2021-10-06 | 2021-11-23 |  | 220d |  |  |  | 80h |
| 601 | 1.4.6.4.1.1 | Development of software | 5d | 2021-10-06 | 2021-10-12 |  | 220d | 0d | finish no earlier than 2021-09-28 | Front End Developer -1 | 40h |
| 602 | 1.4.6.4.1.2 | Code Review | 5d | 2021-11-17 | 2021-11-23 | 601 | 220d | 0d | finish no earlier than 2021-09-28 | Front End Developer -1 | 40h |
| 603 | 1.4.6.4.2 | **Unit Testing** | 45d | 2021-09-29 | 2021-11-30 |  | 220d |  |  |  | 80h |
| 604 | 1.4.6.4.2.1 | Creation of test cases | 5d | 2021-09-29 | 2021-10-05 |  | 255d | 35d | finish no earlier than 2021-09-28 | Front End Developer - 2 | 40h |
| 605 | 1.4.6.4.2.2 | Execution of test cases | 5d | 2021-11-24 | 2021-11-30 | 602, 604 | 220d | 10d | finish no earlier than 2021-09-28 | Front End Developer - 2 | 40h |
| 606 | 1.4.7 | **Cycle 5 F2. As a player, I can search for a privately hosted game and join it** | 50d | 2021-10-06 | 2021-12-14 |  | 210d |  |  |  | 320h |
| 607 | 1.4.7.1 | **F2.1 The player can enter in a key to join a private game** | 45d | 2021-10-06 | 2021-12-07 |  | 215d |  |  |  | 160h |
| 608 | 1.4.7.1.1 | **Software Development** | 35d | 2021-10-13 | 2021-11-30 |  | 215d |  |  |  | 80h |
| 609 | 1.4.7.1.1.1 | Development of software | 5d | 2021-10-13 | 2021-10-19 |  | 215d | 0d | start no earlier than 2021-09-29 | Front End Developer -1 | 40h |
| 610 | 1.4.7.1.1.2 | Code Review | 5d | 2021-11-24 | 2021-11-30 | 609 | 215d | 0d | start no earlier than 2021-09-29 | Front End Developer -1 | 40h |
| 611 | 1.4.7.1.2 | **Unit Testing** | 45d | 2021-10-06 | 2021-12-07 |  | 215d |  |  |  | 80h |
| 612 | 1.4.7.1.2.1 | Creation of test cases | 5d | 2021-10-06 | 2021-10-12 |  | 250d | 35d | start no earlier than 2021-09-29 | Front End Developer - 2 | 40h |
| 613 | 1.4.7.1.2.2 | Execution of test cases | 5d | 2021-12-01 | 2021-12-07 | 610, 612 | 215d | 5d | start no earlier than 2021-09-29 | Front End Developer - 2 | 40h |
| 614 | 1.4.7.2 | **F2.2 If the player enters an invalid game code, the game will let the player know that they need to enter in a valid code** | 45d | 2021-10-13 | 2021-12-14 |  | 210d |  |  |  | 160h |
| 615 | 1.4.7.2.1 | **Software Development** | 35d | 2021-10-20 | 2021-12-07 |  | 210d |  |  |  | 80h |
| 616 | 1.4.7.2.1.1 | Development of software | 5d | 2021-10-20 | 2021-10-26 |  | 210d | 0d | start no earlier than 2021-10-06 | Front End Developer -1 | 40h |
| 617 | 1.4.7.2.1.2 | Code Review | 5d | 2021-12-01 | 2021-12-07 | 616 | 210d | 0d | start no earlier than 2021-10-06 | Front End Developer -1 | 40h |
| 618 | 1.4.7.2.2 | **Unit Testing** | 45d | 2021-10-13 | 2021-12-14 |  | 210d |  |  |  | 80h |
| 619 | 1.4.7.2.2.1 | Creation of test cases | 5d | 2021-10-13 | 2021-10-19 |  | 245d | 35d | start no earlier than 2021-10-06 | Front End Developer - 2 | 40h |
| 620 | 1.4.7.2.2.2 | Execution of test cases | 5d | 2021-12-08 | 2021-12-14 | 617, 619 | 210d | 0d | start no earlier than 2021-10-06 | Front End Developer - 2 | 40h |

| ID | WBS | Task | Duration | Start | Finish | Predecessors | Total slack | Free slack | Resources | Work |
| --- | --- | --- | --- | --- | --- | --- | --- | --- | --- | --- |
| 621 | 1.4.8 | **Vulnerability Assessment** | 10d | 2021-12-15 | 2021-12-28 |  | 210d |  |  | 80h |
| 622 | 1.4.8.1 | Execution of vulnerability scan | 1d | 2021-12-15 | 2021-12-15 | 584, 591, 598, 605, 613, 620 | 210d | 0d | Security Analyst | 8h |
| 623 | 1.4.8.2 | Creation of reports | 2d | 2021-12-16 | 2021-12-17 | 622 | 210d | 0d | Security Analyst | 16h |
| 624 | 1.4.8.3 | Vulnerability remediationby development team | 4d | 2021-12-20 | 2021-12-23 | 623 | 210d | 0d | Technical Architect | 32h |
| 625 | 1.4.8.4 | Re-scan for vulnerabilities | 1d | 2021-12-24 | 2021-12-24 | 624 | 210d | 0d | Security Analyst | 8h |
| 626 | 1.4.8.5 | Final reportcreated | 2d | 2021-12-27 | 2021-12-28 | 625 | 210d | 0d | Security Analyst | 16h |
| 627 | 1.4.9 | **Testing** | 25d | 2021-12-29 | 2022-02-01 |  | 210d |  |  | 160h |
| 628 | 1.4.9.1 | **Performance Testing** | 15d | 2021-12-29 | 2022-01-18 |  | 210d |  |  | 80h |
| 629 | 1.4.9.1.1 | Creation of Performance Test Cases | 5d | 2021-12-29 | 2022-01-04 | 626 | 210d | 0d | Performance Engineer | 40h |
| 630 | 1.4.9.1.2 | Execution test cases | 5d | 2022-01-12 | 2022-01-18 | 629 | 210d | 0d | Performance Engineer | 40h |
| 631 | 1.4.9.2 | **Regression Testing** | 10d | 2022-01-19 | 2022-02-01 |  | 210d |  |  | 80h |
| 632 | 1.4.9.2.1 | Creation of regression suite of test cases | 5d | 2022-01-19 | 2022-01-25 | 630 | 210d | 0d | Quality Assurance | 40h |
| 633 | 1.4.9.2.2 | Execution of regression suite | 5d | 2022-01-26 | 2022-02-01 | 632 | 210d |  | Quality Assurance | 40h |
