# -Grp3-A3

Schedule from MS Project, 2021-01-04 to 2022-04-26.

## Calendars

- Standard: Mon-Fri 08:00-12:00, 13:00-17:00; Sat-Sun off.

## Resources

| Resource |
| --- |
| Project Manager |
| Technical Architect |
| Performance Engineer |
| Security Analyst |
| Quality Assurance |
| Database Admin |
| Back End Developer |
| Business Analyst |
| Client Resource |
| v |
| Infrastructure Engineer |
| Automation Engineer |
| Atu |
| Front End Developer |
| 2 - Back end Developer |
| 1-Business An |
| Business Analyst - 1 |
| Business Analyst - 2 |
| Client Trainer |
| Back End Developer - 1 |
| Back End Developer - 2 |
| Front End Developer 1 |
| Front End Developer -1 |
| Front End Developer - 2 |
| Technical Architect - 1 |
| Technical Architect - 2 |

## Schedule

| ID | WBS | Task | Duration | Start | Finish | Predecessors | Total slack | Free slack | Constraint | Resources | Work |
| --- | --- | --- | --- | --- | --- | --- | --- | --- | --- | --- | --- |
| 1 | 1 | **Project** | 342d | 2021-01-04 | 2022-04-26 |  | 0d |  |  |  | 13184h |
| 2 | 1.1 | **Pre-Development** | 69d | 2021-01-04 | 2021-04-08 |  | 0d |  |  |  | 816h |
| 3 | 1.1.1 | Project Kickoff | 1d | 2021-01-04 | 2021-01-04 |  | 0d |  | start no earlier than 2021-01-04 | Project Manager | 8h |
| 4 | 1.1.2 | **High – Level Business Requirements** | 17d | 2021-01-05 | 2021-01-27 |  | 0d |  |  |  | 136h |
| 5 | 1.1.2.1 | Hold requirements elicitation sessions | 8d | 2021-01-05 | 2021-01-14 | 3 | 0d |  | start no earlier than 2021-01-04 | Business Analyst - 1 | 64h |
| 6 | 1.1.2.2 | Document High level business requirements | 6d | 2021-01-15 | 2021-01-22 | 5 | 0d |  |  | Business Analyst - 1 | 48h |
| 7 | 1.1.2.3 | Review / approve high-level business requirements | 3d | 2021-01-25 | 2021-01-27 | 6 | 0d |  |  | Client Resource | 24h |
| 8 | 1.1.3 | **Project Schedule** | 11d | 2021-01-28 | 2021-02-11 |  | 0d |  |  |  | 88h |
| 9 | 1.1.3.1 | Meet with appropriate teams to get preliminary estimates | 3d | 2021-01-28 | 2021-02-01 | 7 | 0d |  |  | Project Manager | 24h |
| 10 | 1.1.3.2 | Documentation project timeline (including dependencies) | 5d | 2021-02-02 | 2021-02-08 | 9 | 0d |  |  | Project Manager | 40h |
| 11 | 1.1.3.3 | Review project schedule | 3d | 2021-02-09 | 2021-02-11 | 10 | 0d |  |  | Project Manager | 24h |
| 12 | 1.1.4 | **Project resource requests** | 2d | 2021-02-12 | 2021-02-15 |  | 0d |  |  |  | 16h |
| 13 | 1.1.4.1 | Put in requests for resources | 1d | 2021-02-12 | 2021-02-12 | 11 | 0d |  |  | Project Manager | 8h |
| 14 | 1.1.4.2 | Get resources assigned | 1d | 2021-02-15 | 2021-02-15 | 13 | 0d |  |  | Project Manager | 8h |
| 15 | 1.1.5 | **Funding Release** | 14d | 2021-02-16 | 2021-03-05 |  | 0d |  |  |  | 112h |
| 16 | 1.1.5.1 | Creation of Funding Release | 8d | 2021-02-16 | 2021-02-25 | 14 | 0d |  |  | Project Manager | 64h |
| 17 | 1.1.5.2 | Review of Funding Release | 3d | 2021-02-26 | 2021-03-02 | 16 | 0d |  |  | Project Manager | 24h |
| 18 | 1.1.5.3 | Approval of Funding Release | 3d | 2021-03-03 | 2021-03-05 | 17 | 0d |  |  | Project Manager | 24h |
| 19 | 1.1.6 | **Infrastructure Setup** | 24d | 2021-03-08 | 2021-04-08 |  | 99d |  |  |  | 456h |
| 20 | 1.1.6.1 | **Database Software** | 5d | 2021-03-08 | 2021-03-12 |  | 99d |  |  |  | 40h |
| 21 | 1.1.6.1.1 | Request quotation from vendors | 1d | 2021-03-08 | 2021-03-08 | 18 | 99d | 0d |  | Project Manager | 8h |
| 22 | 1.1.6.1.2 | Purchase licenses | 1d | 2021-03-09 | 2021-03-09 | 21 | 99d | 0d |  | Project Manager | 8h |
| 23 | 1.1.6.1.3 | License installers / keys delivered | 3d | 2021-03-10 | 2021-03-12 | 22 | 99d | 0d |  | Database Admin | 24h |
| 24 | 1.1.6.2 | **Performance Testing** | 24d | 2021-03-08 | 2021-04-08 |  | 273d |  |  |  | 48h |
| 25 | 1.1.6.2.1 | Identification of performance testing tool | 1d | 2021-03-08 | 2021-03-08 | 18 | 273d | 0d |  | Performance Engineer | 8h |
| 26 | 1.1.6.2.2 | Request quotation from vendors | 1d | 2021-03-29 | 2021-03-29 | 25 | 273d | 0d |  | Project Manager | 8h |
| 27 | 1.1.6.2.3 | Purchase licenses | 1d | 2021-04-05 | 2021-04-05 | 26 | 273d | 0d |  | Project Manager | 8h |
| 28 | 1.1.6.2.4 | License installers / keys delivered | 3d | 2021-04-06 | 2021-04-08 | 27 | 273d |  |  | Performance Engineer | 24h |

| ID | WBS | Task | Duration | Start | Finish | Predecessors | Total slack | Free slack | Resources | Work |
| --- | --- | --- | --- | --- | --- | --- | --- | --- | --- | --- |
| 29 | 1.1.6.3 | **Servers** | 19d | 2021-03-10 | 2021-04-05 |  | 276d |  |  | 48h |
| 30 | 1.1.6.3.1 | Request quotation from vendors for hardware | 1d | 2021-03-10 | 2021-03-10 | 18 | 276d | 0d | Project Manager | 8h |
| 31 | 1.1.6.3.2 | Purchase servers | 1d | 2021-03-30 | 2021-03-30 | 30 | 276d | 0d | Project Manager | 8h |
| 32 | 1.1.6.3.3 | Servers allocated | 3d | 2021-03-31 | 2021-04-02 | 31 | 276d | 0d | Infrastructure Engineer | 24h |
| 33 | 1.1.6.3.4 | Access granted to users | 1d | 2021-04-05 | 2021-04-05 | 32 | 276d |  | Infrastructure Engineer | 8h |
| 34 | 1.1.6.4 | **Code Repository Tool** | 18d | 2021-03-08 | 2021-03-31 |  | 279d |  |  | 112h |
| 35 | 1.1.6.4.1 | Identification of code repository tool | 3d | 2021-03-08 | 2021-03-10 | 18 | 280d | 0d | Automation Engineer | 24h |
| 36 | 1.1.6.4.2 | Request quotation from vendors | 2d | 2021-03-11 | 2021-03-12 | 35 | 280d | 0d | Project Manager | 16h |
| 37 | 1.1.6.4.3 | Purchase licenses | 3d | 2021-03-19 | 2021-03-23 | 36 | 279d | 0d | Project Manager | 24h |
| 38 | 1.1.6.4.4 | License installers / keys delivered | 1d | 2021-03-24 | 2021-03-24 | 37 | 279d | 0d | Automation Engineer | 8h |
| 39 | 1.1.6.4.5 | Access granted to users | 2d | 2021-03-25 | 2021-03-26 | 38 | 279d | 0d | Automation Engineer | 16h |
| 40 | 1.1.6.4.6 | Software Installed / verified on developers laptops | 3d | 2021-03-29 | 2021-03-31 | 39 | 279d |  | Automation Engineer | 24h |
| 41 | 1.1.6.5 | **Security Scanning Tool** | 21d | 2021-03-08 | 2021-04-05 |  | 276d |  |  | 112h |
| 42 | 1.1.6.5.1 | Identification of scanning tool | 3d | 2021-03-08 | 2021-03-10 | 18 | 276d | 0d | Security Analyst | 24h |
| 43 | 1.1.6.5.2 | Request quotation from vendors | 2d | 2021-03-15 | 2021-03-16 | 42 | 276d | 0d | Project Manager | 16h |
| 44 | 1.1.6.5.3 | Purchase licenses | 3d | 2021-03-24 | 2021-03-26 | 43 | 276d | 0d | Project Manager | 24h |
| 45 | 1.1.6.5.4 | License installers / keys delivered | 1d | 2021-03-29 | 2021-03-29 | 44 | 276d | 0d | Security Analyst | 8h |
| 46 | 1.1.6.5.5 | Access created to users | 2d | 2021-03-30 | 2021-03-31 | 45 | 276d | 0d | Security Analyst | 16h |
| 47 | 1.1.6.5.6 | Software Installed / verified on necessary machines | 3d | 2021-04-01 | 2021-04-05 | 46 | 276d |  | Security Analyst | 24h |
| 48 | 1.1.6.6 | **Continuous integration/continuous deployment tool** | 21d | 2021-03-11 | 2021-04-08 |  | 273d |  |  | 96h |
| 49 | 1.1.6.6.1 | Identification of tool | 3d | 2021-03-11 | 2021-03-15 | 18 | 274d | 0d | Automation Engineer | 24h |
| 50 | 1.1.6.6.2 | Request quotation from vendors | 2d | 2021-03-17 | 2021-03-18 | 49 | 273d | 0d | Project Manager | 16h |
| 51 | 1.1.6.6.3 | Purchase licenses | 3d | 2021-03-31 | 2021-04-02 | 50 | 273d | 0d | Project Manager | 24h |
| 52 | 1.1.6.6.4 | License installers / keys delivered | 1d | 2021-04-05 | 2021-04-05 | 51 | 273d | 0d | Automation Engineer | 8h |
| 53 | 1.1.6.6.5 | Software installed / verified | 3d | 2021-04-06 | 2021-04-08 | 52 | 273d |  | Automation Engineer | 24h |

| ID | WBS | Task | Duration | Start | Finish | Predecessors | Total slack | Free slack | Resources | Work |
| --- | --- | --- | --- | --- | --- | --- | --- | --- | --- | --- |
| 54 | 1.2 | **Phase 1** | 297d | 2021-03-08 | 2022-04-26 |  | 0d |  |  | 4360h |
| 55 | 1.2.1 | **Develop Appointment module** | 213d | 2021-03-15 | 2022-01-05 |  | 34d |  |  | 840h |
| 56 | 1.2.1.1 | **DBMS:** | 7d | 2021-03-15 | 2021-03-23 |  | 99d |  |  | 56h |
| 57 | 1.2.1.1.1 | Install & Configure DBMS Engine & SQL Interface | 5d | 2021-03-15 | 2021-03-19 | 18, 23 | 99d | 0d | Database Admin | 40h |
| 58 | 1.2.1.1.2 | Test SQL interface software | 2d | 2021-03-22 | 2021-03-23 | 57 | 99d | 0d | Database Admin | 16h |
| 59 | 1.2.1.2 | **REST API Service Server:** | 43d | 2021-03-18 | 2021-05-17 |  | 95d |  |  | 312h |
| 60 | 1.2.1.2.1 | **Requirements** | 12d | 2021-03-18 | 2021-04-02 |  | 95d |  |  | 64h |
| 61 | 1.2.1.2.1.1 | Requirements gathering | 3d | 2021-03-18 | 2021-03-22 | 18 | 95d | 0d | Business Analyst - 1 | 24h |
| 62 | 1.2.1.2.1.2 | Documentation of requirements | 4d | 2021-03-29 | 2021-04-01 | 61 | 95d | 0d | Business Analyst - 1 | 32h |
| 63 | 1.2.1.2.1.3 | Review requirements | 1d | 2021-04-02 | 2021-04-02 | 62 | 237d | 0d | Client Resource | 8h |
| 64 | 1.2.1.2.2 | **Software Design** | 11d | 2021-04-05 | 2021-04-19 |  | 237d |  |  | 88h |
| 65 | 1.2.1.2.2.1 | Create design document | 8d | 2021-04-05 | 2021-04-14 | 63 | 237d | 0d | Technical Architect - 1 | 64h |
| 66 | 1.2.1.2.2.2 | Review of design | 3d | 2021-04-15 | 2021-04-19 | 65 | 237d | 0d | Technical Architect - 1 | 24h |
| 67 | 1.2.1.2.3 | **Software Development** | 14d | 2021-04-20 | 2021-05-07 |  | 237d |  |  | 112h |
| 68 | 1.2.1.2.3.1 | Development of software | 10d | 2021-04-20 | 2021-05-03 | 66 | 237d | 0d | Back End Developer - 1 | 80h |
| 69 | 1.2.1.2.3.2 | Code Review | 4d | 2021-05-04 | 2021-05-07 | 68 | 237d | 0d | Back End Developer - 1 | 32h |
| 70 | 1.2.1.2.4 | **Unit Testing** | 6d | 2021-05-10 | 2021-05-17 |  | 237d |  |  | 48h |
| 71 | 1.2.1.2.4.1 | Creation of test cases | 2d | 2021-05-10 | 2021-05-11 | 69 | 237d | 0d | Back End Developer - 1 | 16h |
| 72 | 1.2.1.2.4.2 | Execution of test cases | 4d | 2021-05-12 | 2021-05-17 | 71 | 237d | 158d | Back End Developer - 1 | 32h |
| 73 | 1.2.1.3 | **Client App:** | 194d | 2021-03-29 | 2021-12-23 |  | 24d |  |  | 400h |
| 74 | 1.2.1.3.1 | **Requirements** | 25d | 2021-03-29 | 2021-04-30 |  | 22d |  |  | 88h |
| 75 | 1.2.1.3.1.1 | Requirements Elicitation | 5d | 2021-03-29 | 2021-04-02 | 18 | 24d | 0d | Business Analyst - 2 | 40h |
| 76 | 1.2.1.3.1.2 | Documentation of requirements | 4d | 2021-04-23 | 2021-04-28 | 75 | 22d | 0d | Business Analyst - 2 | 32h |
| 77 | 1.2.1.3.1.3 | Review requirements | 2d | 2021-04-29 | 2021-04-30 | 76 | 22d | 0d | Client Resource | 16h |

| ID | WBS | Task | Duration | Start | Finish | Predecessors | Total slack | Free slack | Constraint | Resources | Work |
| --- | --- | --- | --- | --- | --- | --- | --- | --- | --- | --- | --- |
| 78 | 1.2.1.3.2 | **User Interface design** | 12d | 2021-05-17 | 2021-06-01 |  | 22d |  |  |  | 80h |
| 79 | 1.2.1.3.2.1 | Initial Wireframe design | 2d | 2021-05-17 | 2021-05-18 | 77 | 22d | 0d |  | Business Analyst - 2 | 16h |
| 80 | 1.2.1.3.2.2 | Review of wireframe | 1d | 2021-05-19 | 2021-05-19 | 79 | 22d | 0d |  | Client Resource | 8h |
| 81 | 1.2.1.3.2.3 | Create design based off feedback | 6d | 2021-05-20 | 2021-05-27 | 80 | 22d | 0d |  | Business Analyst - 2 | 48h |
| 82 | 1.2.1.3.2.4 | Review design | 1d | 2021-06-01 | 2021-06-01 | 81 | 85d | 6d |  | Client Resource | 8h |
| 83 | 1.2.1.3.3 | **Software Design** | 28d | 2021-05-03 | 2021-06-09 |  | 79d |  |  |  | 80h |
| 84 | 1.2.1.3.3.1 | Create design document | 6d | 2021-05-03 | 2021-06-03 | 77 | 79d | 0d |  | Technical Architect - 2 | 48h |
| 85 | 1.2.1.3.3.2 | Review of design | 4d | 2021-06-04 | 2021-06-09 | 84 | 79d | 0d |  | Technical Architect - 2 | 32h |
| 86 | 1.2.1.3.4 | **Software Development** | 81d | 2021-06-22 | 2021-10-12 |  | 77d |  |  |  | 104h |
| 87 | 1.2.1.3.4.1 | Development of software | 10d | 2021-06-22 | 2021-07-30 | 85, 82 | 79d | 0d |  | Front End Developer | 80h |
| 88 | 1.2.1.3.4.2 | Code Review | 3d | 2021-10-08 | 2021-10-12 | 87 | 77d | 0d | start no earlier than 2021-08-02 | Front End Developer | 24h |
| 89 | 1.2.1.3.5 | **Unit Testing** | 52d | 2021-10-13 | 2021-12-23 |  | 77d |  |  |  | 48h |
| 90 | 1.2.1.3.5.1 | Creation of test cases | 2d | 2021-10-13 | 2021-10-14 | 88 | 77d | 0d | start no earlier than 2021-08-05 | Front End Developer | 16h |
| 91 | 1.2.1.3.5.2 | Execution of test cases | 4d | 2021-12-20 | 2021-12-23 | 90 | 79d | 0d | start no earlier than 2021-08-09 | Front End Developer | 32h |
| 92 | 1.2.1.4 | **System Integration Testing** | 9d | 2021-12-24 | 2022-01-05 |  | 79d |  |  |  | 72h |
| 93 | 1.2.1.4.1 | Creation of System Integration Test Cases | 3d | 2021-12-24 | 2021-12-28 | 58, 72, 91 | 79d | 0d |  | Quality Assurance | 24h |
| 94 | 1.2.1.4.2 | Execution of System Integration Test Cases | 6d | 2021-12-29 | 2022-01-05 | 93 | 79d |  | start no earlier than 2021-10-18 | Performance Engineer | 48h |
| 95 | 1.2.2 | **Develop employee records module** | 218d | 2021-03-18 | 2022-01-17 |  | 16d |  |  |  | 928h |
| 96 | 1.2.2.1 | **DBMS:** | 10d | 2021-03-24 | 2021-04-06 |  | 99d |  |  |  | 80h |
| 97 | 1.2.2.1.1 | Install & Configure DBMS Engine & SQL Interface | 7d | 2021-03-24 | 2021-04-01 | 58 | 99d | 0d |  | Database Admin | 56h |
| 98 | 1.2.2.1.2 | Test SQL interface software | 3d | 2021-04-02 | 2021-04-06 | 97 | 99d | 0d |  | Database Admin | 24h |
| 99 | 1.2.2.2 | **REST API Service Server:** | 175d | 2021-03-23 | 2021-11-22 |  | 80d |  |  |  | 328h |
| 100 | 1.2.2.2.1 | **Requirements** | 31d | 2021-03-23 | 2021-05-04 |  | 80d |  |  |  | 80h |
| 101 | 1.2.2.2.1.1 | Requirements Elicitation | 4d | 2021-03-23 | 2021-03-26 | 18 | 80d | 0d |  | Business Analyst - 1 | 32h |
| 102 | 1.2.2.2.1.2 | Documentation of requirements | 3d | 2021-04-20 | 2021-04-22 | 101 | 80d | 0d |  | Business Analyst - 1 | 24h |
| 103 | 1.2.2.2.1.3 | Review requirements | 3d | 2021-04-28 | 2021-05-04 | 102 | 90d | 0d |  | Client Resource | 24h |

| ID | WBS | Task | Duration | Start | Finish | Predecessors | Total slack | Free slack | Constraint | Resources | Work |
| --- | --- | --- | --- | --- | --- | --- | --- | --- | --- | --- | --- |
| 104 | 1.2.2.2.2 | **Software Design** | 86d | 2021-05-11 | 2021-09-07 |  | 90d |  |  |  | 96h |
| 105 | 1.2.2.2.2.1 | Create design document | 8d | 2021-05-11 | 2021-06-07 | 103 | 90d | 0d |  | Technical Architect - 1 | 64h |
| 106 | 1.2.2.2.2.2 | Review of design | 4d | 2021-09-02 | 2021-09-07 | 105 | 90d | 0d |  | Technical Architect - 1 | 32h |
| 107 | 1.2.2.2.3 | **Software Development** | 34d | 2021-09-08 | 2021-10-25 |  | 90d |  |  |  | 112h |
| 108 | 1.2.2.2.3.1 | Development of software | 10d | 2021-09-08 | 2021-09-21 | 106 | 90d | 0d |  | Back End Developer - 2 | 80h |
| 109 | 1.2.2.2.3.2 | Code Review | 4d | 2021-10-20 | 2021-10-25 | 108 | 90d | 0d |  | Back End Developer - 2 | 32h |
| 110 | 1.2.2.2.4 | **Unit Testing** | 10d | 2021-11-09 | 2021-11-22 |  | 90d |  |  |  | 40h |
| 111 | 1.2.2.2.4.1 | Creation of test cases | 2d | 2021-11-09 | 2021-11-10 | 109 | 90d | 0d | start no earlier than 2021-10-26 | Back End Developer - 2 | 16h |
| 112 | 1.2.2.2.4.2 | Execution of test cases | 3d | 2021-11-18 | 2021-11-22 | 111 | 90d | 19d |  | Back End Developer - 2 | 24h |
| 113 | 1.2.2.3 | **Client App:** | 197d | 2021-03-18 | 2021-12-17 |  | 16d |  |  |  | 448h |
| 114 | 1.2.2.3.1 | **Requirements** | 9d | 2021-03-18 | 2021-03-30 |  | 16d |  |  |  | 72h |
| 115 | 1.2.2.3.1.1 | Requirements Elicitation | 3d | 2021-03-18 | 2021-03-22 | 18 | 16d | 0d |  | Business Analyst - 2 | 24h |
| 116 | 1.2.2.3.1.2 | Documentation of requirements | 4d | 2021-03-23 | 2021-03-26 | 115 | 16d | 0d |  | Business Analyst - 2 | 32h |
| 117 | 1.2.2.3.1.3 | Review requirements | 2d | 2021-03-29 | 2021-03-30 | 116 | 16d | 0d |  | Client Resource | 16h |
| 118 | 1.2.2.3.2 | **User Interface design** | 29d | 2021-04-29 | 2021-06-08 |  | 16d |  |  |  | 128h |
| 119 | 1.2.2.3.2.1 | Initial Wireframe design | 4d | 2021-04-29 | 2021-05-04 | 117 | 16d | 0d |  | Business Analyst - 2 | 32h |
| 120 | 1.2.2.3.2.2 | Review of wireframe | 3d | 2021-05-05 | 2021-05-07 | 119 | 16d | 0d |  | Client Resource | 24h |
| 121 | 1.2.2.3.2.3 | Create design based off feedback | 7d | 2021-05-19 | 2021-06-04 | 120 | 16d | 0d |  | Business Analyst - 2 | 56h |
| 122 | 1.2.2.3.2.4 | Review design | 2d | 2021-06-07 | 2021-06-08 | 121 | 73d | 0d |  | Client Resource | 16h |
| 123 | 1.2.2.3.3 | **Software Design** | 37d | 2021-03-31 | 2021-05-20 |  | 86d |  |  |  | 88h |
| 124 | 1.2.2.3.3.1 | Create design document | 8d | 2021-03-31 | 2021-04-21 | 117 | 86d | 0d |  | Technical Architect - 2 | 64h |
| 125 | 1.2.2.3.3.2 | Review of design | 3d | 2021-04-22 | 2021-05-20 | 124 | 86d | 13d |  | Technical Architect - 2 | 24h |
| 126 | 1.2.2.3.4 | **Software Development** | 80d | 2021-06-09 | 2021-09-28 |  | 71d |  |  |  | 96h |
| 127 | 1.2.2.3.4.1 | Development of software | 9d | 2021-06-09 | 2021-06-21 | 122, 125 | 73d | 0d | start no earlier than 2021-05-28 | Front End Developer | 72h |
| 128 | 1.2.2.3.4.2 | Code Review | 3d | 2021-09-24 | 2021-09-28 | 127 | 71d | 0d | start no earlier than 2021-06-22 | Front End Developer | 24h |

| ID | WBS | Task | Duration | Start | Finish | Predecessors | Total slack | Free slack | Constraint | Resources | Work |
| --- | --- | --- | --- | --- | --- | --- | --- | --- | --- | --- | --- |
| 129 | 1.2.2.3.5 | **Unit Testing** | 53d | 2021-10-06 | 2021-12-17 |  | 71d |  |  |  | 64h |
| 130 | 1.2.2.3.5.1 | Creation of test cases | 2d | 2021-10-06 | 2021-10-07 | 128 | 71d | 0d | start no earlier than 2021-06-25 | Front End Developer | 16h |
| 131 | 1.2.2.3.5.2 | Execution of test cases | 6d | 2021-12-10 | 2021-12-17 | 130 | 71d | 0d | start no earlier than 2021-06-29 | Front End Developer | 48h |
| 132 | 1.2.2.4 | **System Integration Testing** | 21d | 2021-12-20 | 2022-01-17 |  | 71d |  |  |  | 72h |
| 133 | 1.2.2.4.1 | Creation of System Integration Test Cases | 3d | 2021-12-20 | 2021-12-22 | 131, 98, 112 | 71d | 0d |  | Quality Assurance | 24h |
| 134 | 1.2.2.4.2 | Execution of System Integration Test Cases | 6d | 2021-12-23 | 2022-01-17 | 133 | 71d |  |  | Quality Assurance | 48h |
| 135 | 1.2.3 | **Develop Patient records module** | 297d | 2021-03-08 | 2022-04-26 |  | 0d |  |  |  | 944h |
| 136 | 1.2.3.1 | **DBMS:** | 12d | 2021-04-07 | 2021-04-22 |  | 99d |  |  |  | 96h |
| 137 | 1.2.3.1.1 | Install & Configure DBMS Engine & SQL Interface | 9d | 2021-04-07 | 2021-04-19 | 98 | 99d | 0d |  | Database Admin | 72h |
| 138 | 1.2.3.1.2 | Test SQL interface software | 3d | 2021-04-20 | 2021-04-22 | 137 | 99d | 0d |  | Database Admin | 24h |
| 139 | 1.2.3.2 | **REST API Service Server:** | 199d | 2021-03-08 | 2021-12-09 |  | 76d |  |  |  | 352h |
| 140 | 1.2.3.2.1 | **Requirements** | 31d | 2021-03-08 | 2021-04-19 |  | 79d |  |  |  | 112h |
| 141 | 1.2.3.2.1.1 | Requirements Elicitation | 4d | 2021-03-08 | 2021-03-11 | 18 | 79d | 0d |  | Business Analyst - 1 | 32h |
| 142 | 1.2.3.2.1.2 | Documentation of requirements | 6d | 2021-04-02 | 2021-04-09 | 141 | 79d | 0d |  | Business Analyst - 1 | 48h |
| 143 | 1.2.3.2.1.3 | Review requirements | 4d | 2021-04-12 | 2021-04-19 | 142 | 79d | 0d |  | Client Resource | 32h |
| 144 | 1.2.3.2.2 | **Software Design** | 118d | 2021-04-20 | 2021-09-30 |  | 79d |  |  |  | 72h |
| 145 | 1.2.3.2.2.1 | Create design document | 6d | 2021-04-20 | 2021-09-14 | 143 | 79d | 0d |  | Technical Architect - 1 | 48h |
| 146 | 1.2.3.2.2.2 | Review of design | 3d | 2021-09-28 | 2021-09-30 | 145 | 79d | 0d |  | Technical Architect - 1 | 24h |
| 147 | 1.2.3.2.3 | **Software Development** | 16d | 2021-10-12 | 2021-11-02 |  | 78d |  |  |  | 104h |
| 148 | 1.2.3.2.3.1 | Development of software | 10d | 2021-10-12 | 2021-10-25 | 146 | 79d | 0d |  | Back End Developer - 1 | 80h |
| 149 | 1.2.3.2.3.2 | Code Review | 3d | 2021-10-29 | 2021-11-02 | 148 | 78d | 0d |  | Back End Developer - 1 | 24h |
| 150 | 1.2.3.2.4 | **Unit Testing** | 21d | 2021-11-11 | 2021-12-09 |  | 76d |  |  |  | 64h |
| 151 | 1.2.3.2.4.1 | Creation of test cases | 3d | 2021-11-11 | 2021-11-15 | 149 | 78d | 0d |  | Back End Developer - 1 | 24h |
| 152 | 1.2.3.2.4.2 | Execution of test cases | 5d | 2021-12-03 | 2021-12-09 | 151 | 76d |  |  | Back End Developer - 1 | 40h |

| ID | WBS | Task | Duration | Start | Finish | Predecessors | Total slack | Free slack | Constraint | Resources | Work |
| --- | --- | --- | --- | --- | --- | --- | --- | --- | --- | --- | --- |
| 153 | 1.2.3.3 | **Client App:** | 275d | 2021-03-08 | 2022-03-25 |  | 0d |  |  |  | 440h |
| 154 | 1.2.3.3.1 | **Requirements** | 29d | 2021-03-08 | 2021-04-15 |  | 0d |  |  |  | 104h |
| 155 | 1.2.3.3.1.1 | Requirements Elicitation | 4d | 2021-03-08 | 2021-03-11 | 18 | 0d |  |  | Business Analyst - 2 | 32h |
| 156 | 1.2.3.3.1.2 | Documentation of requirements | 7d | 2021-04-05 | 2021-04-13 | 155 | 0d |  |  | Business Analyst - 2 | 56h |
| 157 | 1.2.3.3.1.3 | Review requirements | 2d | 2021-04-14 | 2021-04-15 | 156 | 0d |  |  | Client Resource | 16h |
| 158 | 1.2.3.3.2 | **User Interface design** | 34d | 2021-05-05 | 2021-06-21 |  | 0d |  |  |  | 112h |
| 159 | 1.2.3.3.2.1 | Initial Wireframe design | 4d | 2021-05-05 | 2021-05-10 | 157 | 0d |  |  | Business Analyst - 2 | 32h |
| 160 | 1.2.3.3.2.2 | Review of wireframe | 2d | 2021-05-11 | 2021-05-12 | 159 | 0d |  |  | Client Resource | 16h |
| 161 | 1.2.3.3.2.3 | Create design based off feedback | 6d | 2021-06-07 | 2021-06-14 | 160 | 0d |  |  | Business Analyst - 2 | 48h |
| 162 | 1.2.3.3.2.4 | Review design | 2d | 2021-06-15 | 2021-06-21 | 161 | 0d |  |  | Client Resource | 16h |
| 163 | 1.2.3.3.3 | **Software Design** | 9d | 2021-06-22 | 2021-07-02 |  | 0d |  |  |  | 72h |
| 164 | 1.2.3.3.3.1 | Create design document | 6d | 2021-06-22 | 2021-06-29 | 162 | 0d |  |  | Technical Architect - 2 | 48h |
| 165 | 1.2.3.3.3.2 | Review of design | 3d | 2021-06-30 | 2021-07-02 | 164 | 0d |  |  | Technical Architect - 2 | 24h |
| 166 | 1.2.3.3.4 | **Software Development** | 45d | 2021-08-02 | 2021-10-01 |  | 0d |  |  |  | 88h |
| 167 | 1.2.3.3.4.1 | Development of software | 8d | 2021-08-02 | 2021-09-20 | 162, 165 | 0d |  | start no earlier than 2021-05-10 | Front End Developer | 64h |
| 168 | 1.2.3.3.4.2 | Code Review | 3d | 2021-09-29 | 2021-10-01 | 167 | 0d |  |  | Front End Developer | 24h |
| 169 | 1.2.3.3.5 | **Unit Testing** | 85d | 2021-11-29 | 2022-03-25 |  | 0d |  |  |  | 64h |
| 170 | 1.2.3.3.5.1 | Creation of test cases | 3d | 2021-11-29 | 2021-12-01 | 168 | 0d |  | start no earlier than 2021-09-06 | Front End Developer | 24h |
| 171 | 1.2.3.3.5.2 | Execution of test cases | 5d | 2021-12-29 | 2022-03-25 | 170 | 0d |  |  | Front End Developer | 40h |
| 172 | 1.2.3.4 | **System Integration Testing** | 22d | 2022-03-28 | 2022-04-26 |  | 0d |  |  |  | 56h |
| 173 | 1.2.3.4.1 | Creation of System Integration Test Cases | 3d | 2022-03-28 | 2022-03-30 | 171, 138, 152 | 0d |  |  | Quality Assurance | 24h |
| 174 | 1.2.3.4.2 | Execution of System Integration Test Cases | 4d | 2022-04-21 | 2022-04-26 | 173 | 0d |  |  | Quality Assurance | 32h |
| 175 | 1.2.4 | **Develop Inventory Management Module** | 101d | 2021-03-12 | 2021-07-30 |  | 4d |  |  |  | 944h |
| 176 | 1.2.4.1 | **DBMS:** | 12d | 2021-04-23 | 2021-05-10 |  | 99d |  |  |  | 96h |
| 177 | 1.2.4.1.1 | Install & Configure DBMS Engine & SQL Interface | 9d | 2021-04-23 | 2021-05-05 | 138 | 99d | 0d |  | Database Admin | 72h |
| 178 | 1.2.4.1.2 | Test SQL interface software | 3d | 2021-05-06 | 2021-05-10 | 177 | 99d | 0d |  | Database Admin | 24h |

| ID | WBS | Task | Duration | Start | Finish | Predecessors | Total slack | Free slack | Resources | Work |
| --- | --- | --- | --- | --- | --- | --- | --- | --- | --- | --- |
| 179 | 1.2.4.2 | **REST API Service Server:** | 63d | 2021-03-12 | 2021-06-08 |  | 82d |  |  | 352h |
| 180 | 1.2.4.2.1 | **Requirements** | 33d | 2021-03-12 | 2021-04-27 |  | 82d |  |  | 112h |
| 181 | 1.2.4.2.1.1 | Requirements Elicitation | 4d | 2021-03-12 | 2021-03-17 | 18 | 82d | 0d | Business Analyst - 1 | 32h |
| 182 | 1.2.4.2.1.2 | Documentation of requirements | 6d | 2021-04-12 | 2021-04-19 | 181 | 83d | 0d | Business Analyst - 1 | 48h |
| 183 | 1.2.4.2.1.3 | Review requirements | 4d | 2021-04-20 | 2021-04-27 | 182 | 153d | 0d | Client Resource | 32h |
| 184 | 1.2.4.2.2 | **Software Design** | 9d | 2021-04-28 | 2021-05-10 |  | 153d |  |  | 72h |
| 185 | 1.2.4.2.2.1 | Create design document | 6d | 2021-04-28 | 2021-05-05 | 183 | 153d | 0d | Technical Architect - 1 | 48h |
| 186 | 1.2.4.2.2.2 | Review of design | 3d | 2021-05-06 | 2021-05-10 | 185 | 153d | 0d | Technical Architect - 1 | 24h |
| 187 | 1.2.4.2.3 | **Software Development** | 13d | 2021-05-11 | 2021-05-27 |  | 153d |  |  | 104h |
| 188 | 1.2.4.2.3.1 | Development of software | 10d | 2021-05-11 | 2021-05-24 | 186 | 153d | 0d | Back End Developer - 2 | 80h |
| 189 | 1.2.4.2.3.2 | Code Review | 3d | 2021-05-25 | 2021-05-27 | 188 | 153d | 0d | Back End Developer - 2 | 24h |
| 190 | 1.2.4.2.4 | **Unit Testing** | 8d | 2021-05-28 | 2021-06-08 |  | 153d |  |  | 64h |
| 191 | 1.2.4.2.4.1 | Creation of test cases | 3d | 2021-05-28 | 2021-06-01 | 189 | 153d | 0d | Back End Developer - 2 | 24h |
| 192 | 1.2.4.2.4.2 | Execution of test cases | 5d | 2021-06-02 | 2021-06-08 | 191 | 153d | 31d | Back End Developer - 2 | 40h |
| 193 | 1.2.4.3 | **Client App:** | 94d | 2021-03-12 | 2021-07-21 |  | 4d |  |  | 440h |
| 194 | 1.2.4.3.1 | **Requirements** | 32d | 2021-03-12 | 2021-04-26 |  | 4d |  |  | 104h |
| 195 | 1.2.4.3.1.1 | Requirements Elicitation | 4d | 2021-03-12 | 2021-03-17 | 18 | 4d | 0d | Business Analyst - 2 | 32h |
| 196 | 1.2.4.3.1.2 | Documentation of requirements | 7d | 2021-04-14 | 2021-04-22 | 195 | 4d | 0d | Business Analyst - 2 | 56h |
| 197 | 1.2.4.3.1.3 | Review requirements | 2d | 2021-04-23 | 2021-04-26 | 196 | 4d | 0d | Client Resource | 16h |
| 198 | 1.2.4.3.2 | **User Interface design** | 33d | 2021-05-11 | 2021-06-24 |  | 4d |  |  | 112h |
| 199 | 1.2.4.3.2.1 | Initial Wireframe design | 4d | 2021-05-11 | 2021-05-14 | 197 | 4d | 0d | Business Analyst - 2 | 32h |
| 200 | 1.2.4.3.2.2 | Review of wireframe | 2d | 2021-05-17 | 2021-05-18 | 199 | 4d | 0d | Client Resource | 16h |
| 201 | 1.2.4.3.2.3 | Create design based off feedback | 6d | 2021-06-15 | 2021-06-22 | 200 | 4d | 0d | Business Analyst - 2 | 48h |
| 202 | 1.2.4.3.2.4 | Review design | 2d | 2021-06-23 | 2021-06-24 | 201 | 122d | 0d | Client Resource | 16h |

| ID | WBS | Task | Duration | Start | Finish | Predecessors | Total slack | Free slack | Constraint | Resources | Work |
| --- | --- | --- | --- | --- | --- | --- | --- | --- | --- | --- | --- |
| 203 | 1.2.4.3.3 | **Software Design** | 15d | 2021-04-27 | 2021-05-17 |  | 150d |  |  |  | 72h |
| 204 | 1.2.4.3.3.1 | Create design document | 6d | 2021-04-27 | 2021-05-12 | 197 | 150d | 0d |  | Technical Architect - 2 | 48h |
| 205 | 1.2.4.3.3.2 | Review of design | 3d | 2021-05-13 | 2021-05-17 | 204 | 150d | 28d |  | Technical Architect - 2 | 24h |
| 206 | 1.2.4.3.4 | **Software Development** | 11d | 2021-06-25 | 2021-07-09 |  | 122d |  |  |  | 88h |
| 207 | 1.2.4.3.4.1 | Development of software | 8d | 2021-06-25 | 2021-07-06 | 202, 205 | 122d | 0d | start no earlier than 2021-02-08 | Front End Developer | 64h |
| 208 | 1.2.4.3.4.2 | Code Review | 3d | 2021-07-07 | 2021-07-09 | 207 | 122d | 0d |  | Front End Developer | 24h |
| 209 | 1.2.4.3.5 | **Unit Testing** | 8d | 2021-07-12 | 2021-07-21 |  | 122d |  |  |  | 64h |
| 210 | 1.2.4.3.5.1 | Creation of test cases | 3d | 2021-07-12 | 2021-07-14 | 208 | 122d | 0d |  | Front End Developer | 24h |
| 211 | 1.2.4.3.5.2 | Execution of test cases | 5d | 2021-07-15 | 2021-07-21 | 210 | 122d | 0d |  | Front End Developer | 40h |
| 212 | 1.2.4.4 | **System Integration Testing** | 7d | 2021-07-22 | 2021-07-30 |  | 122d |  |  |  | 56h |
| 213 | 1.2.4.4.1 | Creation of System Integration Test Cases | 3d | 2021-07-22 | 2021-07-26 | 178, 192, 211 | 122d | 0d |  | Quality Assurance | 24h |
| 214 | 1.2.4.4.2 | Execution of System Integration Test Cases | 4d | 2021-07-27 | 2021-07-30 | 213 | 122d | 0d |  | Quality Assurance | 32h |
| 215 | 1.2.5 | **Vulnerability Assessment** | 30d | 2021-08-02 | 2021-09-10 |  | 122d |  |  |  | 240h |
| 216 | 1.2.5.1 | Execution of vulnerability scan | 10d | 2021-08-02 | 2021-08-13 | 214 | 122d | 0d |  | Security Analyst | 80h |
| 217 | 1.2.5.2 | Creation of reports | 2d | 2021-08-16 | 2021-08-17 | 216 | 122d | 0d |  | Security Analyst | 16h |
| 218 | 1.2.5.3 | Vulnerability remediation by development team | 8d | 2021-08-18 | 2021-08-27 | 217 | 122d | 0d |  | Technical Architect - 1 | 64h |
| 219 | 1.2.5.4 | Re-scan for vulnerabilities | 7d | 2021-08-30 | 2021-09-07 | 218 | 122d | 0d |  | Security Analyst | 56h |
| 220 | 1.2.5.5 | Final report created | 3d | 2021-09-08 | 2021-09-10 | 219 | 122d | 0d |  | Security Analyst | 24h |
| 221 | 1.2.6 | **Performance Testing** | 13d | 2021-09-13 | 2021-09-29 |  | 122d |  |  |  | 104h |
| 222 | 1.2.6.1 | Creation of Performance Test Cases | 5d | 2021-09-13 | 2021-09-17 | 220 | 122d | 0d |  | Performance Engineer | 40h |
| 223 | 1.2.6.2 | Execution of test cases | 8d | 2021-09-20 | 2021-09-29 | 222 | 122d | 0d |  | Performance Engineer | 64h |
| 224 | 1.2.7 | **Regression Testing** | 11d | 2021-09-30 | 2021-10-14 |  | 122d |  |  |  | 88h |
| 225 | 1.2.7.1 | Creation of regression suite of test cases | 4d | 2021-09-30 | 2021-10-05 | 223 | 122d | 0d |  | Quality Assurance | 32h |
| 226 | 1.2.7.2 | Execution of regression suite | 7d | 2021-10-06 | 2021-10-14 | 225 | 122d | 0d |  | Quality Assurance | 56h |

| ID | WBS | Task | Duration | Start | Finish | Predecessors | Total slack | Free slack | Resources | Work |
| --- | --- | --- | --- | --- | --- | --- | --- | --- | --- | --- |
| 227 | 1.2.8 | **User Acceptance Testing** | 16d | 2021-10-15 | 2021-11-05 |  | 122d |  |  | 88h |
| 228 | 1.2.8.1 | Creation of User Acceptance Testing | 3d | 2021-10-15 | 2021-10-19 | 226 | 122d | 0d | Client Resource | 24h |
| 229 | 1.2.8.2 | Execution of User Acceptance testing | 7d | 2021-10-20 | 2021-11-04 | 228 | 122d | 0d | Client Resource | 56h |
| 230 | 1.2.8.3 | Client sign off for testing | 1d | 2021-11-05 | 2021-11-05 | 229 | 122d |  | Client Resource | 8h |
| 231 | 1.2.9 | **System Training** | 13d | 2021-10-15 | 2021-11-02 |  | 123d |  |  | 104h |
| 232 | 1.2.9.1 | Develop training materials and resources | 8d | 2021-10-15 | 2021-10-26 | 226 | 123d | 0d | Client Trainer | 64h |
| 233 | 1.2.9.2 | Staff training | 3d | 2021-10-27 | 2021-10-29 | 232 | 123d | 0d | Client Trainer | 24h |
| 234 | 1.2.9.3 | Staff workshops | 2d | 2021-11-01 | 2021-11-02 | 233 | 123d | 0d | Client Trainer | 16h |
| 235 | 1.2.10 | **Deployment** | 15d | 2021-10-15 | 2021-11-04 |  | 123d |  |  | 80h |
| 236 | 1.2.10.1 | Creation of rollout plan | 4d | 2021-10-15 | 2021-10-20 | 226 | 128d | 0d | Project Manager | 32h |
| 237 | 1.2.10.2 | Review of roll out plan | 2d | 2021-10-21 | 2021-10-22 | 236 | 128d | 0d | Project Manager | 16h |
| 238 | 1.2.10.3 | Dry-run of roll out plan | 2d | 2021-10-25 | 2021-10-26 | 237 | 128d | 5d | Project Manager | 16h |
| 239 | 1.2.10.4 | Execution of rollout | 2d | 2021-11-03 | 2021-11-04 | 234, 238 | 123d |  | Project Manager | 16h |
| 240 | 1.3 | **Phase 2** | 247d | 2021-04-23 | 2022-04-04 |  | 16d |  |  | 3416h |
| 241 | 1.3.1 | **Develop Patient Facing Record History** | 237d | 2021-05-07 | 2022-04-04 |  | 16d |  |  | 840h |
| 242 | 1.3.1.1 | **DBMS:** | 7d | 2021-05-11 | 2021-05-19 |  | 99d |  |  | 56h |
| 243 | 1.3.1.1.1 | Install & Configure DBMS Engine & SQL Interface | 5d | 2021-05-11 | 2021-05-17 | 178 | 99d | 0d | Database Admin | 40h |
| 244 | 1.3.1.1.2 | Test SQL interface software | 2d | 2021-05-18 | 2021-05-19 | 243 | 99d | 0d | Database Admin | 16h |
| 245 | 1.3.1.2 | **REST API Service Server:** | 141d | 2021-05-07 | 2021-11-19 |  | 88d |  |  | 312h |
| 246 | 1.3.1.2.1 | **Requirements** | 12d | 2021-05-07 | 2021-05-24 |  | 88d |  |  | 64h |
| 247 | 1.3.1.2.1.1 | Requirements Elicitation | 3d | 2021-05-07 | 2021-05-11 | 62, 102, 142, 182 | 88d | 0d | Business Analyst - 1 | 24h |
| 248 | 1.3.1.2.1.2 | Documentation of requirements | 4d | 2021-05-18 | 2021-05-21 | 247 | 88d | 0d | Business Analyst - 1 | 32h |
| 249 | 1.3.1.2.1.3 | Review requirements | 1d | 2021-05-24 | 2021-05-24 | 248 | 102d | 0d | Client Resource | 8h |
| 250 | 1.3.1.2.2 | **Software Design** | 51d | 2021-06-08 | 2021-08-17 |  | 102d |  |  | 88h |
| 251 | 1.3.1.2.2.1 | Create design document | 8d | 2021-06-08 | 2021-06-17 | 249 | 102d | 0d | Technical Architect - 1 | 64h |
| 252 | 1.3.1.2.2.2 | Review of design | 3d | 2021-08-13 | 2021-08-17 | 251 | 102d | 0d | Technical Architect - 1 | 24h |

| ID | WBS | Task | Duration | Start | Finish | Predecessors | Total slack | Free slack | Constraint | Resources | Work |
| --- | --- | --- | --- | --- | --- | --- | --- | --- | --- | --- | --- |
| 253 | 1.3.1.2.3 | **Software Development** | 24d | 2021-08-18 | 2021-09-20 |  | 102d |  |  |  | 112h |
| 254 | 1.3.1.2.3.1 | Development of software | 10d | 2021-08-18 | 2021-08-31 | 252 | 102d | 0d |  | Back End Developer - 1 | 80h |
| 255 | 1.3.1.2.3.2 | Code Review | 4d | 2021-09-01 | 2021-09-20 | 254 | 102d | 0d |  | Back End Developer - 1 | 32h |
| 256 | 1.3.1.2.4 | **Unit Testing** | 40d | 2021-09-27 | 2021-11-19 |  | 102d |  |  |  | 48h |
| 257 | 1.3.1.2.4.1 | Creation of test cases | 2d | 2021-09-27 | 2021-11-03 | 255 | 102d | 0d |  | Back End Developer - 1 | 16h |
| 258 | 1.3.1.2.4.2 | Execution of test cases | 4d | 2021-11-16 | 2021-11-19 | 257 | 103d | 27d |  | Back End Developer - 1 | 32h |
| 259 | 1.3.1.3 | **Client App:** | 193d | 2021-07-08 | 2022-04-04 |  | 16d |  |  |  | 400h |
| 260 | 1.3.1.3.1 | **Requirements** | 18d | 2021-07-08 | 2021-08-02 |  | 16d |  |  |  | 88h |
| 261 | 1.3.1.3.1.1 | Requirements Elicitation | 5d | 2021-07-08 | 2021-07-14 | 81, 121, 161, 201, 202 | 16d | 0d |  | Business Analyst - 2 | 40h |
| 262 | 1.3.1.3.1.2 | Documentation of requirements | 4d | 2021-07-26 | 2021-07-29 | 261 | 16d | 0d |  | Business Analyst - 2 | 32h |
| 263 | 1.3.1.3.1.3 | Review requirements | 2d | 2021-07-30 | 2021-08-02 | 262 | 16d | 0d |  | Client Resource | 16h |
| 264 | 1.3.1.3.2 | **User Interface design** | 10d | 2021-08-11 | 2021-08-24 |  | 16d |  |  |  | 80h |
| 265 | 1.3.1.3.2.1 | Initial Wireframe design | 2d | 2021-08-11 | 2021-08-12 | 263 | 16d | 0d |  | Business Analyst - 2 | 16h |
| 266 | 1.3.1.3.2.2 | Review of wireframe | 1d | 2021-08-13 | 2021-08-13 | 265 | 16d | 0d |  | Client Resource | 8h |
| 267 | 1.3.1.3.2.3 | Create design based off feedback | 6d | 2021-08-16 | 2021-08-23 | 266 | 16d | 0d |  | Business Analyst - 2 | 48h |
| 268 | 1.3.1.3.2.4 | Review design | 1d | 2021-08-24 | 2021-08-24 | 267 | 18d | 0d |  | Client Resource | 8h |
| 269 | 1.3.1.3.3 | **Software Design** | 10d | 2021-08-10 | 2021-08-23 |  | 176d |  |  |  | 80h |
| 270 | 1.3.1.3.3.1 | Create design document | 6d | 2021-08-10 | 2021-08-17 | 263 | 176d | 0d |  | Technical Architect - 2 | 48h |
| 271 | 1.3.1.3.3.2 | Review of design | 4d | 2021-08-18 | 2021-08-23 | 270 | 176d |  |  | Technical Architect - 2 | 32h |
| 272 | 1.3.1.3.4 | **Software Development** | 53d | 2021-10-15 | 2021-12-28 |  | 16d |  |  |  | 104h |
| 273 | 1.3.1.3.4.1 | Development of software | 10d | 2021-10-15 | 2021-11-26 | 263, 268 | 18d | 0d | start no earlier than 2021-06-14 | Front End Developer | 80h |
| 274 | 1.3.1.3.4.2 | Code Review | 3d | 2021-12-24 | 2021-12-28 | 273 | 16d | 0d | start no earlier than 2021-10-07 | Front End Developer | 24h |
| 275 | 1.3.1.3.5 | **Unit Testing** | 6d | 2022-03-28 | 2022-04-04 |  | 16d |  |  |  | 48h |
| 276 | 1.3.1.3.5.1 | Creation of test cases | 2d | 2022-03-28 | 2022-03-29 | 274 | 16d | 0d | start no earlier than 2021-10-12 | Front End Developer | 16h |
| 277 | 1.3.1.3.5.2 | Execution of test cases | 4d | 2022-03-30 | 2022-04-04 | 276 | 16d |  |  | Front End Developer | 32h |

| ID | WBS | Task | Duration | Start | Finish | Predecessors | Total slack | Free slack | Constraint | Resources | Work |
| --- | --- | --- | --- | --- | --- | --- | --- | --- | --- | --- | --- |
| 278 | 1.3.1.4 | **System Integration Testing** | 9d | 2021-12-29 | 2022-01-10 |  | 76d |  |  |  | 72h |
| 279 | 1.3.1.4.1 | Creation of System Integration Test Cases | 3d | 2021-12-29 | 2021-12-31 | 244, 258, 274 | 76d | 0d |  | Quality Assurance | 24h |
| 280 | 1.3.1.4.2 | Execution of System Integration Test Cases | 6d | 2022-01-03 | 2022-01-10 | 279 | 76d |  |  | Quality Assurance | 48h |
| 281 | 1.3.2 | **Develop Patient Facing Appointment Module** | 182d | 2021-05-12 | 2022-01-20 |  | 44d |  |  |  | 928h |
| 282 | 1.3.2.1 | **DBMS:** | 10d | 2021-05-20 | 2021-06-02 |  | 99d |  |  |  | 80h |
| 283 | 1.3.2.1.1 | Install & Configure DBMS Engine & SQL Interface | 7d | 2021-05-20 | 2021-05-28 | 244 | 99d | 0d |  | Database Admin | 56h |
| 284 | 1.3.2.1.2 | Test SQL interface software | 3d | 2021-05-31 | 2021-06-02 | 283 | 99d | 0d |  | Database Admin | 24h |
| 285 | 1.3.2.2 | **REST API Service Server:** | 142d | 2021-05-12 | 2021-11-25 |  | 78d |  |  |  | 328h |
| 286 | 1.3.2.2.1 | **Requirements** | 14d | 2021-05-12 | 2021-05-31 |  | 80d |  |  |  | 80h |
| 287 | 1.3.2.2.1.1 | Requirements Elicitation | 4d | 2021-05-12 | 2021-05-17 | 62, 102, 142, 182, 249 | 80d | 0d |  | Business Analyst - 1 | 32h |
| 288 | 1.3.2.2.1.2 | Documentation of requirements | 3d | 2021-05-24 | 2021-05-26 | 287 | 80d | 0d |  | Business Analyst - 1 | 24h |
| 289 | 1.3.2.2.1.3 | Review requirements | 3d | 2021-05-27 | 2021-05-31 | 288 | 80d | 0d |  | Client Resource | 24h |
| 290 | 1.3.2.2.2 | **Software Design** | 65d | 2021-06-18 | 2021-09-16 |  | 80d |  |  |  | 96h |
| 291 | 1.3.2.2.2.1 | Create design document | 8d | 2021-06-18 | 2021-07-26 | 289 | 80d | 0d |  | Technical Architect - 1 | 64h |
| 292 | 1.3.2.2.2.2 | Review of design | 4d | 2021-09-08 | 2021-09-16 | 291 | 80d | 0d |  | Technical Architect - 1 | 32h |
| 293 | 1.3.2.2.3 | **Software Development** | 28d | 2021-09-22 | 2021-10-29 |  | 80d |  |  |  | 112h |
| 294 | 1.3.2.2.3.1 | Development of software | 10d | 2021-09-22 | 2021-10-05 | 292 | 80d | 0d |  | Back End Developer - 2 | 80h |
| 295 | 1.3.2.2.3.2 | Code Review | 4d | 2021-10-26 | 2021-10-29 | 294 | 80d | 0d |  | Back End Developer - 2 | 32h |
| 296 | 1.3.2.2.4 | **Unit Testing** | 11d | 2021-11-11 | 2021-11-25 |  | 78d |  |  |  | 40h |
| 297 | 1.3.2.2.4.1 | Creation of test cases | 2d | 2021-11-11 | 2021-11-12 | 295 | 78d | 0d | start no earlier than 2021-11-01 | Back End Developer - 2 | 16h |
| 298 | 1.3.2.2.4.2 | Execution of test cases | 3d | 2021-11-23 | 2021-11-25 | 297 | 78d | 10d |  | Back End Developer - 2 | 24h |
| 299 | 1.3.2.3 | **Client App:** | 118d | 2021-06-29 | 2021-12-09 |  | 10d |  |  |  | 448h |
| 300 | 1.3.2.3.1 | **Requirements** | 9d | 2021-06-29 | 2021-07-09 |  | 10d |  |  |  | 72h |
| 301 | 1.3.2.3.1.1 | Requirements Elicitation | 3d | 2021-06-29 | 2021-07-01 | 81, 121, 161, 201, 268 | 10d | 0d |  | Business Analyst - 2 | 24h |
| 302 | 1.3.2.3.1.2 | Documentation of requirements | 4d | 2021-07-02 | 2021-07-07 | 301 | 10d | 0d |  | Business Analyst - 2 | 32h |
| 303 | 1.3.2.3.1.3 | Review requirements | 2d | 2021-07-08 | 2021-07-09 | 302 | 10d | 0d |  | Client Resource | 16h |

| ID | WBS | Task | Duration | Start | Finish | Predecessors | Total slack | Free slack | Resources | Work |
| --- | --- | --- | --- | --- | --- | --- | --- | --- | --- | --- |
| 304 | 1.3.2.3.2 | **User Interface design** | 25d | 2021-07-30 | 2021-09-02 |  | 10d |  |  | 128h |
| 305 | 1.3.2.3.2.1 | Initial Wireframe design | 4d | 2021-07-30 | 2021-08-04 | 303 | 10d | 0d | Business Analyst - 2 | 32h |
| 306 | 1.3.2.3.2.2 | Review of wireframe | 3d | 2021-08-05 | 2021-08-09 | 305 | 10d | 0d | Client Resource | 24h |
| 307 | 1.3.2.3.2.3 | Create design based off feedback | 7d | 2021-08-13 | 2021-08-31 | 306 | 10d | 0d | Business Analyst - 2 | 56h |
| 308 | 1.3.2.3.2.4 | Review design | 2d | 2021-09-01 | 2021-09-02 | 307 | 66d | 0d | Client Resource | 16h |
| 309 | 1.3.2.3.3 | **Software Design** | 11d | 2021-07-12 | 2021-07-26 |  | 196d |  |  | 88h |
| 310 | 1.3.2.3.3.1 | Create design document | 8d | 2021-07-12 | 2021-07-21 | 303 | 196d | 0d | Technical Architect - 2 | 64h |
| 311 | 1.3.2.3.3.2 | Review of design | 3d | 2021-07-22 | 2021-07-26 | 310 | 196d |  | Technical Architect - 2 | 24h |
| 312 | 1.3.2.3.4 | **Software Development** | 14d | 2021-09-06 | 2021-09-23 |  | 66d |  |  | 96h |
| 313 | 1.3.2.3.4.1 | Development of software | 9d | 2021-09-06 | 2021-09-16 | 303, 308 | 66d | 0d | Front End Developer | 72h |
| 314 | 1.3.2.3.4.2 | Code Review | 3d | 2021-09-21 | 2021-09-23 | 313 | 66d | 0d | Front End Developer | 24h |
| 315 | 1.3.2.3.5 | **Unit Testing** | 49d | 2021-10-04 | 2021-12-09 |  | 68d |  |  | 64h |
| 316 | 1.3.2.3.5.1 | Creation of test cases | 2d | 2021-10-04 | 2021-10-05 | 314 | 68d | 0d | Front End Developer | 16h |
| 317 | 1.3.2.3.5.2 | Execution of test cases | 6d | 2021-12-02 | 2021-12-09 | 316 | 68d | 0d | Front End Developer | 48h |
| 318 | 1.3.2.4 | **System Integration Testing** | 30d | 2021-12-10 | 2022-01-20 |  | 68d |  |  | 72h |
| 319 | 1.3.2.4.1 | Creation of System Integration Test Cases | 3d | 2021-12-10 | 2021-12-14 | 284, 298, 317 | 68d | 0d | Quality Assurance | 24h |
| 320 | 1.3.2.4.2 | Execution of System Integration Test Cases | 6d | 2021-12-15 | 2022-01-20 | 319 | 68d |  | Quality Assurance | 48h |
| 321 | 1.3.3 | **Develop Patient Self Service Check-in** | 103d | 2021-04-23 | 2021-09-14 |  | 47d |  |  | 944h |
| 322 | 1.3.3.1 | **DBMS:** | 12d | 2021-06-03 | 2021-06-18 |  | 99d |  |  | 96h |
| 323 | 1.3.3.1.1 | Install & Configure DBMS Engine & SQL Interface | 9d | 2021-06-03 | 2021-06-15 | 284 | 99d | 0d | Database Admin | 72h |
| 324 | 1.3.3.1.2 | Test SQL interface software | 3d | 2021-06-16 | 2021-06-18 | 323 | 99d | 0d | Database Admin | 24h |
| 325 | 1.3.3.2 | **REST API Service Server:** | 50d | 2021-04-23 | 2021-07-01 |  | 99d |  |  | 352h |
| 326 | 1.3.3.2.1 | **Requirements** | 20d | 2021-04-23 | 2021-05-20 |  | 99d |  |  | 112h |
| 327 | 1.3.3.2.1.1 | Requirements Elicitation | 4d | 2021-04-23 | 2021-04-28 | 62, 102, 142, 182, 289 | 99d | 0d | Business Analyst - 1 | 32h |
| 328 | 1.3.3.2.1.2 | Documentation of requirements | 6d | 2021-04-29 | 2021-05-06 | 327 | 99d | 0d | Business Analyst - 1 | 48h |
| 329 | 1.3.3.2.1.3 | Review requirements | 4d | 2021-05-10 | 2021-05-20 | 328 | 107d | 0d | Client Resource | 32h |

| ID | WBS | Task | Duration | Start | Finish | Predecessors | Total slack | Free slack | Resources | Work |
| --- | --- | --- | --- | --- | --- | --- | --- | --- | --- | --- |
| 330 | 1.3.3.2.2 | **Software Design** | 9d | 2021-05-21 | 2021-06-02 |  | 107d |  |  | 72h |
| 331 | 1.3.3.2.2.1 | Create design document | 6d | 2021-05-21 | 2021-05-28 | 329 | 107d | 0d | Technical Architect - 1 | 48h |
| 332 | 1.3.3.2.2.2 | Review of design | 3d | 2021-05-31 | 2021-06-02 | 331 | 107d | 0d | Technical Architect - 1 | 24h |
| 333 | 1.3.3.2.3 | **Software Development** | 13d | 2021-06-03 | 2021-06-21 |  | 107d |  |  | 104h |
| 334 | 1.3.3.2.3.1 | Development of software | 10d | 2021-06-03 | 2021-06-16 | 332 | 107d | 0d | Back End Developer - 1 | 80h |
| 335 | 1.3.3.2.3.2 | Code Review | 3d | 2021-06-17 | 2021-06-21 | 334 | 107d | 0d | Back End Developer - 1 | 24h |
| 336 | 1.3.3.2.4 | **Unit Testing** | 8d | 2021-06-22 | 2021-07-01 |  | 107d |  |  | 64h |
| 337 | 1.3.3.2.4.1 | Creation of test cases | 3d | 2021-06-22 | 2021-06-24 | 335 | 107d | 0d | Back End Developer - 1 | 24h |
| 338 | 1.3.3.2.4.2 | Execution of test cases | 5d | 2021-06-25 | 2021-07-01 | 337 | 107d | 46d | Back End Developer - 1 | 40h |
| 339 | 1.3.3.3 | **Client App:** | 58d | 2021-06-23 | 2021-09-10 |  | 4d |  |  | 440h |
| 340 | 1.3.3.3.1 | **Requirements** | 25d | 2021-06-23 | 2021-07-27 |  | 4d |  |  | 104h |
| 341 | 1.3.3.3.1.1 | Requirements Elicitation | 4d | 2021-06-23 | 2021-06-28 | 81, 121, 161, 201, 303 | 4d | 0d | Business Analyst - 2 | 32h |
| 342 | 1.3.3.3.1.2 | Documentation of requirements | 7d | 2021-07-15 | 2021-07-23 | 341 | 4d | 0d | Business Analyst - 2 | 56h |
| 343 | 1.3.3.3.1.3 | Review requirements | 2d | 2021-07-26 | 2021-07-27 | 342 | 4d | 0d | Client Resource | 16h |
| 344 | 1.3.3.3.2 | **User Interface design** | 27d | 2021-08-05 | 2021-09-10 |  | 4d |  |  | 112h |
| 345 | 1.3.3.3.2.1 | Initial Wireframe design | 4d | 2021-08-05 | 2021-08-10 | 343 | 4d | 0d | Business Analyst - 2 | 32h |
| 346 | 1.3.3.3.2.2 | Review of wireframe | 2d | 2021-08-11 | 2021-08-12 | 345 | 4d | 0d | Client Resource | 16h |
| 347 | 1.3.3.3.2.3 | Create design based off feedback | 6d | 2021-09-01 | 2021-09-08 | 346 | 4d | 0d | Business Analyst - 2 | 48h |
| 348 | 1.3.3.3.2.4 | Review design | 2d | 2021-09-09 | 2021-09-10 | 347 | 162d |  | Client Resource | 16h |
| 349 | 1.3.3.3.3 | **Software Design** | 9d | 2021-07-28 | 2021-08-09 |  | 61d |  |  | 72h |
| 350 | 1.3.3.3.3.1 | Create design document | 6d | 2021-07-28 | 2021-08-04 | 343 | 61d | 0d | Technical Architect - 2 | 48h |
| 351 | 1.3.3.3.3.2 | Review of design | 3d | 2021-08-05 | 2021-08-09 | 350 | 61d | 0d | Technical Architect - 2 | 24h |
| 352 | 1.3.3.3.4 | **Software Development** | 11d | 2021-08-10 | 2021-08-24 |  | 61d |  |  | 88h |
| 353 | 1.3.3.3.4.1 | Development of software | 8d | 2021-08-10 | 2021-08-19 | 343, 351 | 61d | 0d | Front End Developer | 64h |
| 354 | 1.3.3.3.4.2 | Code Review | 3d | 2021-08-20 | 2021-08-24 | 353 | 61d | 0d | Front End Developer | 24h |

| ID | WBS | Task | Duration | Start | Finish | Predecessors | Total slack | Free slack | Resources | Work |
| --- | --- | --- | --- | --- | --- | --- | --- | --- | --- | --- |
| 355 | 1.3.3.3.5 | **Unit Testing** | 8d | 2021-08-25 | 2021-09-03 |  | 61d |  |  | 64h |
| 356 | 1.3.3.3.5.1 | Creation of test cases | 3d | 2021-08-25 | 2021-08-27 | 354 | 61d | 0d | Front End Developer | 24h |
| 357 | 1.3.3.3.5.2 | Execution of test cases | 5d | 2021-08-30 | 2021-09-03 | 356 | 61d | 0d | Front End Developer | 40h |
| 358 | 1.3.3.4 | **System Integration Testing** | 7d | 2021-09-06 | 2021-09-14 |  | 61d |  |  | 56h |
| 359 | 1.3.3.4.1 | Creation of System Integration Test Cases | 3d | 2021-09-06 | 2021-09-08 | 324, 338, 357 | 61d | 0d | Quality Assurance | 24h |
| 360 | 1.3.3.4.2 | Execution of System Integration Test Cases | 4d | 2021-09-09 | 2021-09-14 | 359 | 61d | 0d | Quality Assurance | 32h |
| 361 | 1.3.4 | **Vulnerability Assessment** | 30d | 2021-09-15 | 2021-10-26 |  | 61d |  |  | 240h |
| 362 | 1.3.4.1 | Execution of vulnerability scan | 10d | 2021-09-15 | 2021-09-28 | 360 | 61d | 0d | Security Analyst | 80h |
| 363 | 1.3.4.2 | Creation of reports | 2d | 2021-09-29 | 2021-09-30 | 362 | 61d | 0d | Security Analyst | 16h |
| 364 | 1.3.4.3 | Vulnerability remediation by development team | 8d | 2021-10-01 | 2021-10-12 | 363 | 61d | 0d | Technical Architect - 1 | 64h |
| 365 | 1.3.4.4 | Re-scan for vulnerabilities | 7d | 2021-10-13 | 2021-10-21 | 364 | 61d | 0d | Security Analyst | 56h |
| 366 | 1.3.4.5 | Final report created | 3d | 2021-10-22 | 2021-10-26 | 365 | 61d | 0d | Security Analyst | 24h |
| 367 | 1.3.5 | **Performance Testing** | 13d | 2021-10-27 | 2021-11-12 |  | 61d |  |  | 104h |
| 368 | 1.3.5.1 | Creation of Performance Test Cases | 5d | 2021-10-27 | 2021-11-02 | 366 | 61d | 0d | Performance Engineer | 40h |
| 369 | 1.3.5.2 | Execution of test cases | 8d | 2021-11-03 | 2021-11-12 | 368 | 61d | 0d | Performance Engineer | 64h |
| 370 | 1.3.6 | **Regression Testing** | 19d | 2021-11-15 | 2021-12-09 |  | 61d |  |  | 88h |
| 371 | 1.3.6.1 | Creation of regression suite of test cases | 4d | 2021-11-15 | 2021-11-18 | 369 | 61d | 0d | Quality Assurance | 32h |
| 372 | 1.3.6.2 | Execution of regression suite | 7d | 2021-11-19 | 2021-12-09 | 371 | 61d | 0d | Quality Assurance | 56h |
| 373 | 1.3.7 | **User Acceptance Testing** | 18d | 2021-12-10 | 2022-01-04 |  | 80d |  |  | 88h |
| 374 | 1.3.7.1 | Creation of User Acceptance Testing | 3d | 2021-12-10 | 2021-12-17 | 372 | 80d | 0d | Client Resource | 24h |
| 375 | 1.3.7.2 | Execution of User Acceptance testing | 7d | 2021-12-20 | 2021-12-30 | 374 | 80d | 0d | Client Resource | 56h |
| 376 | 1.3.7.3 | Client sign off for testing | 1d | 2022-01-04 | 2022-01-04 | 375 | 80d |  | Client Resource | 8h |
| 377 | 1.3.8 | **System Training** | 13d | 2021-12-10 | 2021-12-28 |  | 85d |  |  | 104h |
| 378 | 1.3.8.1 | Develop training materials and resources | 8d | 2021-12-10 | 2021-12-21 | 372 | 85d | 0d | Client Trainer | 64h |
| 379 | 1.3.8.2 | Staff training | 3d | 2021-12-22 | 2021-12-24 | 378 | 85d | 0d | Client Trainer | 24h |
| 380 | 1.3.8.3 | Staff workshops | 2d | 2021-12-27 | 2021-12-28 | 379 | 85d |  | Client Trainer | 16h |

| ID | WBS | Task | Duration | Start | Finish | Predecessors | Total slack | Free slack | Resources | Work |
| --- | --- | --- | --- | --- | --- | --- | --- | --- | --- | --- |
| 381 | 1.3.9 | **Deployment** | 37d | 2021-12-10 | 2022-01-31 |  | 61d |  |  | 80h |
| 382 | 1.3.9.1 | Creation of rollout plan | 4d | 2021-12-10 | 2022-01-21 | 372 | 61d | 0d | Project Manager | 32h |
| 383 | 1.3.9.2 | Review of roll out plan | 2d | 2022-01-24 | 2022-01-25 | 382 | 61d | 0d | Project Manager | 16h |
| 384 | 1.3.9.3 | Dry-run of roll out plan | 2d | 2022-01-26 | 2022-01-27 | 383 | 61d | 0d | Project Manager | 16h |
| 385 | 1.3.9.4 | Execution of rollout | 2d | 2022-01-28 | 2022-01-31 | 384 | 61d |  | Project Manager | 16h |
| 386 | 1.4 | **Phase 3** | 235d | 2021-05-27 | 2022-04-20 |  | 4d |  |  | 4592h |
| 387 | 1.4.1 | **Develop report generation module** | 221d | 2021-06-16 | 2022-04-20 |  | 4d |  |  | 840h |
| 388 | 1.4.1.1 | **DBMS:** | 7d | 2021-06-21 | 2021-06-29 |  | 99d |  |  | 56h |
| 389 | 1.4.1.1.1 | Install & Configure DBMS Engine & SQL Interface | 5d | 2021-06-21 | 2021-06-25 | 324 | 99d | 0d | Database Admin | 40h |
| 390 | 1.4.1.1.2 | Test SQL interface software | 2d | 2021-06-28 | 2021-06-29 | 389 | 99d | 0d | Database Admin | 16h |
| 391 | 1.4.1.2 | **REST API Service Server:** | 117d | 2021-06-16 | 2021-11-25 |  | 84d |  |  | 312h |
| 392 | 1.4.1.2.1 | **Requirements** | 8d | 2021-06-16 | 2021-06-25 |  | 85d |  |  | 64h |
| 393 | 1.4.1.2.1.1 | Requirements gathering | 3d | 2021-06-16 | 2021-06-18 | 248, 288, 328 | 85d | 0d | Business Analyst - 1 | 24h |
| 394 | 1.4.1.2.1.2 | Documentation of requirements | 4d | 2021-06-21 | 2021-06-24 | 393 | 85d | 0d | Business Analyst - 1 | 32h |
| 395 | 1.4.1.2.1.3 | Review requirements | 1d | 2021-06-25 | 2021-06-25 | 394 | 85d | 0d | Client Resource | 8h |
| 396 | 1.4.1.2.2 | **SoftwareDesign** | 37d | 2021-07-13 | 2021-09-01 |  | 85d |  |  | 88h |
| 397 | 1.4.1.2.2.1 | Create design document | 8d | 2021-07-13 | 2021-08-03 | 395 | 85d | 0d | Technical Architect - 1 | 64h |
| 398 | 1.4.1.2.2.2 | Review of design | 3d | 2021-08-30 | 2021-09-01 | 397 | 85d | 0d | Technical Architect - 1 | 24h |
| 399 | 1.4.1.2.3 | **SoftwareDevelopment** | 17d | 2021-09-02 | 2021-09-24 |  | 85d |  |  | 112h |
| 400 | 1.4.1.2.3.1 | Development of software | 10d | 2021-09-02 | 2021-09-15 | 398 | 85d | 0d | Back End Developer - 1 | 80h |
| 401 | 1.4.1.2.3.2 | Code Review | 4d | 2021-09-21 | 2021-09-24 | 400 | 85d | 0d | Back End Developer - 1 | 32h |
| 402 | 1.4.1.2.4 | **Unit Testing** | 16d | 2021-11-04 | 2021-11-25 |  | 84d |  |  | 48h |
| 403 | 1.4.1.2.4.1 | Creation of test cases | 2d | 2021-11-04 | 2021-11-05 | 401 | 84d | 0d | Back End Developer - 1 | 16h |
| 404 | 1.4.1.2.4.2 | Execution of test cases | 4d | 2021-11-22 | 2021-11-25 | 403 | 84d | 80d | Back End Developer - 1 | 32h |

| ID | WBS | Task | Duration | Start | Finish | Predecessors | Total slack | Free slack | Resources | Work |
| --- | --- | --- | --- | --- | --- | --- | --- | --- | --- | --- |
| 405 | 1.4.1.3 | **Client App:** | 121d | 2021-09-30 | 2022-03-17 |  | 4d |  |  | 400h |
| 406 | 1.4.1.3.1 | **Requirements** | 25d | 2021-09-30 | 2021-11-03 |  | 4d |  |  | 88h |
| 407 | 1.4.1.3.1.1 | Requirements Elicitation | 5d | 2021-09-30 | 2021-10-11 | 267, 307, 347 | 4d | 0d | Business Analyst - 2 | 40h |
| 408 | 1.4.1.3.1.2 | Documentation of requirements | 4d | 2021-10-27 | 2021-11-01 | 407 | 4d | 0d | Business Analyst - 2 | 32h |
| 409 | 1.4.1.3.1.3 | Review requirements | 2d | 2021-11-02 | 2021-11-03 | 408 | 4d | 0d | Client Resource | 16h |
| 410 | 1.4.1.3.2 | **User Interface design** | 21d | 2021-11-04 | 2021-12-02 |  | 4d |  |  | 80h |
| 411 | 1.4.1.3.2.1 | Initial Wireframe design | 2d | 2021-11-04 | 2021-11-05 | 409 | 4d | 0d | Business Analyst - 2 | 16h |
| 412 | 1.4.1.3.2.2 | Review of wireframe | 1d | 2021-11-08 | 2021-11-08 | 411 | 4d | 0d | Client Resource | 8h |
| 413 | 1.4.1.3.2.3 | Create design based off feedback | 6d | 2021-11-24 | 2021-12-01 | 412 | 4d | 0d | Business Analyst - 2 | 48h |
| 414 | 1.4.1.3.2.4 | Review design | 1d | 2021-12-02 | 2021-12-02 | 413 | 4d | 0d | Client Resource | 8h |
| 415 | 1.4.1.3.3 | **Software Design** | 24d | 2021-12-03 | 2022-01-05 |  | 4d |  |  | 80h |
| 416 | 1.4.1.3.3.1 | Create design document | 6d | 2021-12-03 | 2021-12-22 | 409, 414 | 4d | 0d | Technical Architect - 2 | 48h |
| 417 | 1.4.1.3.3.2 | Review of design | 4d | 2021-12-23 | 2022-01-05 | 416 | 4d | 0d | Technical Architect - 2 | 32h |
| 418 | 1.4.1.3.4 | **Software Development** | 21d | 2022-01-27 | 2022-02-24 |  | 4d |  |  | 104h |
| 419 | 1.4.1.3.4.1 | Development of software | 10d | 2022-01-27 | 2022-02-09 | 417 | 4d | 0d | Front End Developer | 80h |
| 420 | 1.4.1.3.4.2 | Code Review | 3d | 2022-02-22 | 2022-02-24 | 419 | 4d | 0d | Front End Developer | 24h |
| 421 | 1.4.1.3.5 | **Unit Testing** | 15d | 2022-02-25 | 2022-03-17 |  | 4d |  |  | 48h |
| 422 | 1.4.1.3.5.1 | Creation of test cases | 2d | 2022-02-25 | 2022-02-28 | 420 | 4d | 0d | Front End Developer | 16h |
| 423 | 1.4.1.3.5.2 | Execution of test cases | 4d | 2022-03-14 | 2022-03-17 | 422 | 4d | 0d | Front End Developer | 32h |
| 424 | 1.4.1.4 | **System Integration Testing** | 24d | 2022-03-18 | 2022-04-20 |  | 4d |  |  | 72h |
| 425 | 1.4.1.4.1 | Creation of System Integration Test Cases | 3d | 2022-03-18 | 2022-03-22 | 390, 404, 423 | 4d | 0d | Quality Assurance | 24h |
| 426 | 1.4.1.4.2 | Execution of System Integration Test Cases | 6d | 2022-03-23 | 2022-04-20 | 425 | 4d |  | Quality Assurance | 48h |
| 427 | 1.4.2 | **Develop external inventory management module** | 207d | 2021-06-30 | 2022-04-14 |  | 8d |  |  | 928h |
| 428 | 1.4.2.1 | **DBMS:** | 10d | 2021-06-30 | 2021-07-13 |  | 99d |  |  | 80h |
| 429 | 1.4.2.1.1 | Install & Configure DBMS Engine & SQL Interface | 7d | 2021-06-30 | 2021-07-08 | 390 | 99d | 0d | Database Admin | 56h |
| 430 | 1.4.2.1.2 | Test SQL interface software | 3d | 2021-07-09 | 2021-07-13 | 429 | 99d | 0d | Database Admin | 24h |

| ID | WBS | Task | Duration | Start | Finish | Predecessors | Total slack | Free slack | Resources | Work |
| --- | --- | --- | --- | --- | --- | --- | --- | --- | --- | --- |
| 431 | 1.4.2.2 | **REST API Service Server:** | 100d | 2021-07-01 | 2021-11-17 |  | 90d |  |  | 328h |
| 432 | 1.4.2.2.1 | **Requirements** | 10d | 2021-07-01 | 2021-07-14 |  | 90d |  |  | 80h |
| 433 | 1.4.2.2.1.1 | Requirements Elicitation | 4d | 2021-07-01 | 2021-07-06 | 248, 288, 328, 395 | 90d | 0d | Business Analyst - 1 | 32h |
| 434 | 1.4.2.2.1.2 | Documentation of requirements | 3d | 2021-07-07 | 2021-07-09 | 433 | 90d | 0d | Business Analyst - 1 | 24h |
| 435 | 1.4.2.2.1.3 | Review requirements | 3d | 2021-07-12 | 2021-07-14 | 434 | 90d | 0d | Client Resource | 24h |
| 436 | 1.4.2.2.2 | **Software Design** | 47d | 2021-07-20 | 2021-09-22 |  | 90d |  |  | 96h |
| 437 | 1.4.2.2.2.1 | Create design document | 8d | 2021-07-20 | 2021-08-04 | 435 | 90d | 0d | Technical Architect - 1 | 64h |
| 438 | 1.4.2.2.2.2 | Review of design | 4d | 2021-09-17 | 2021-09-22 | 437 | 90d | 0d | Technical Architect - 1 | 32h |
| 439 | 1.4.2.2.3 | **Software Development** | 22d | 2021-10-06 | 2021-11-04 |  | 90d |  |  | 112h |
| 440 | 1.4.2.2.3.1 | Development of software | 10d | 2021-10-06 | 2021-10-19 | 438 | 90d | 0d | Back End Developer - 2 | 80h |
| 441 | 1.4.2.2.3.2 | Code Review | 4d | 2021-11-01 | 2021-11-04 | 440 | 90d | 0d | Back End Developer - 2 | 32h |
| 442 | 1.4.2.2.4 | **Unit Testing** | 9d | 2021-11-05 | 2021-11-17 |  | 90d |  |  | 40h |
| 443 | 1.4.2.2.4.1 | Creation of test cases | 2d | 2021-11-05 | 2021-11-08 | 441 | 90d | 0d | Back End Developer - 2 | 16h |
| 444 | 1.4.2.2.4.2 | Execution of test cases | 3d | 2021-11-15 | 2021-11-17 | 443 | 90d | 82d | Back End Developer - 2 | 24h |
| 445 | 1.4.2.3 | **Client App:** | 94d | 2021-11-02 | 2022-03-11 |  | 10d |  |  | 448h |
| 446 | 1.4.2.3.1 | **Requirements** | 18d | 2021-11-02 | 2021-11-25 |  | 10d |  |  | 72h |
| 447 | 1.4.2.3.1.1 | Requirements Elicitation | 3d | 2021-11-02 | 2021-11-08 | 267, 307, 347, 414 | 10d | 0d | Business Analyst - 2 | 24h |
| 448 | 1.4.2.3.1.2 | Documentation of requirements | 4d | 2021-11-18 | 2021-11-23 | 447 | 10d | 0d | Business Analyst - 2 | 32h |
| 449 | 1.4.2.3.1.3 | Review requirements | 2d | 2021-11-24 | 2021-11-25 | 448 | 10d | 0d | Client Resource | 16h |
| 450 | 1.4.2.3.2 | **User Interface design** | 19d | 2021-12-08 | 2022-01-03 |  | 10d |  |  | 128h |
| 451 | 1.4.2.3.2.1 | Initial Wireframe design | 4d | 2021-12-08 | 2021-12-13 | 449 | 10d | 0d | Business Analyst - 2 | 32h |
| 452 | 1.4.2.3.2.2 | Review of wireframe | 3d | 2021-12-14 | 2021-12-16 | 451 | 10d | 0d | Client Resource | 24h |
| 453 | 1.4.2.3.2.3 | Create design based off feedback | 7d | 2021-12-22 | 2021-12-30 | 452 | 10d | 0d | Business Analyst - 2 | 56h |
| 454 | 1.4.2.3.2.4 | Review design | 2d | 2021-12-31 | 2022-01-03 | 453 | 10d | 0d | Client Resource | 16h |

| ID | WBS | Task | Duration | Start | Finish | Predecessors | Total slack | Free slack | Resources | Work |
| --- | --- | --- | --- | --- | --- | --- | --- | --- | --- | --- |
| 455 | 1.4.2.3.3 | **Software Design** | 16d | 2021-11-26 | 2021-12-17 |  | 92d |  |  | 88h |
| 456 | 1.4.2.3.3.1 | Create design document | 8d | 2021-11-26 | 2021-12-14 | 449 | 92d | 0d | Technical Architect - 2 | 64h |
| 457 | 1.4.2.3.3.2 | Review of design | 3d | 2021-12-15 | 2021-12-17 | 456 | 92d |  | Technical Architect - 2 | 24h |
| 458 | 1.4.2.3.4 | **Software Development** | 30d | 2022-01-04 | 2022-02-14 |  | 8d |  |  | 96h |
| 459 | 1.4.2.3.4.1 | Development of software | 9d | 2022-01-04 | 2022-01-14 | 449, 454 | 10d | 0d | Front End Developer | 72h |
| 460 | 1.4.2.3.4.2 | Code Review | 3d | 2022-02-10 | 2022-02-14 | 459 | 8d | 0d | Front End Developer | 24h |
| 461 | 1.4.2.3.5 | **Unit Testing** | 19d | 2022-02-15 | 2022-03-11 |  | 8d |  |  | 64h |
| 462 | 1.4.2.3.5.1 | Creation of test cases | 2d | 2022-02-15 | 2022-02-16 | 460 | 8d | 0d | Front End Developer | 16h |
| 463 | 1.4.2.3.5.2 | Execution of test cases | 6d | 2022-03-04 | 2022-03-11 | 462 | 8d | 0d | Front End Developer | 48h |
| 464 | 1.4.2.4 | **System Integration Testing** | 24d | 2022-03-14 | 2022-04-14 |  | 8d |  |  | 72h |
| 465 | 1.4.2.4.1 | Creation of System Integration Test Cases | 3d | 2022-03-14 | 2022-03-16 | 430, 444, 463 | 8d | 0d | Quality Assurance | 24h |
| 466 | 1.4.2.4.2 | Execution of System Integration Test Cases | 6d | 2022-03-17 | 2022-04-14 | 465 | 8d |  | Quality Assurance | 48h |
| 467 | 1.4.3 | **Develop payment and accounting module** | 205d | 2021-06-25 | 2022-04-07 |  | 13d |  |  | 944h |
| 468 | 1.4.3.1 | **DBMS:** | 12d | 2021-07-14 | 2021-07-29 |  | 99d |  |  | 96h |
| 469 | 1.4.3.1.1 | Install & Configure DBMS Engine & SQL Interface | 9d | 2021-07-14 | 2021-07-26 | 430 | 99d | 0d | Database Admin | 72h |
| 470 | 1.4.3.1.2 | Test SQL interface software | 3d | 2021-07-27 | 2021-07-29 | 469 | 99d | 0d | Database Admin | 24h |
| 471 | 1.4.3.2 | **REST API Service Server:** | 115d | 2021-06-25 | 2021-12-02 |  | 91d |  |  | 352h |
| 472 | 1.4.3.2.1 | **Requirements** | 21d | 2021-06-25 | 2021-07-23 |  | 91d |  |  | 112h |
| 473 | 1.4.3.2.1.1 | Requirements Elicitation | 4d | 2021-06-25 | 2021-06-30 | 248, 288, 328, 435 | 91d | 0d | Business Analyst - 1 | 32h |
| 474 | 1.4.3.2.1.2 | Documentation of requirements | 6d | 2021-07-12 | 2021-07-19 | 473 | 91d | 0d | Business Analyst - 1 | 48h |
| 475 | 1.4.3.2.1.3 | Review requirements | 4d | 2021-07-20 | 2021-07-23 | 474 | 91d | 0d | Client Resource | 32h |
| 476 | 1.4.3.2.2 | **Software Design** | 38d | 2021-08-05 | 2021-09-27 |  | 91d |  |  | 72h |
| 477 | 1.4.3.2.2.1 | Create design document | 6d | 2021-08-05 | 2021-08-12 | 475 | 91d | 0d | Technical Architect - 1 | 48h |
| 478 | 1.4.3.2.2.2 | Review of design | 3d | 2021-09-23 | 2021-09-27 | 477 | 91d | 0d | Technical Architect - 1 | 24h |

| ID | WBS | Task | Duration | Start | Finish | Predecessors | Total slack | Free slack | Resources | Work |
| --- | --- | --- | --- | --- | --- | --- | --- | --- | --- | --- |
| 479 | 1.4.3.2.3 | **Software Development** | 23d | 2021-09-28 | 2021-10-28 |  | 91d |  |  | 104h |
| 480 | 1.4.3.2.3.1 | Development of software | 10d | 2021-09-28 | 2021-10-11 | 478 | 91d | 0d | Back End Developer - 1 | 80h |
| 481 | 1.4.3.2.3.2 | Code Review | 3d | 2021-10-26 | 2021-10-28 | 480 | 91d | 0d | Back End Developer - 1 | 24h |
| 482 | 1.4.3.2.4 | **Unit Testing** | 19d | 2021-11-08 | 2021-12-02 |  | 93d |  |  | 64h |
| 483 | 1.4.3.2.4.1 | Creation of test cases | 3d | 2021-11-08 | 2021-11-10 | 481 | 93d | 0d | Back End Developer - 1 | 24h |
| 484 | 1.4.3.2.4.2 | Execution of test cases | 5d | 2021-11-26 | 2021-12-02 | 483 | 93d | 80d | Back End Developer - 1 | 40h |
| 485 | 1.4.3.3 | **Client App:** | 111d | 2021-10-21 | 2022-03-24 |  | 13d |  |  | 440h |
| 486 | 1.4.3.3.1 | **Requirements** | 22d | 2021-10-21 | 2021-11-19 |  | 15d |  |  | 104h |
| 487 | 1.4.3.3.1.1 | Requirements Elicitation | 4d | 2021-10-21 | 2021-10-26 | 267, 307, 347, 449 | 15d | 0d | Business Analyst - 2 | 32h |
| 488 | 1.4.3.3.1.2 | Documentation of requirements | 7d | 2021-11-09 | 2021-11-17 | 487 | 15d | 0d | Business Analyst - 2 | 56h |
| 489 | 1.4.3.3.1.3 | Review requirements | 2d | 2021-11-18 | 2021-11-19 | 488 | 15d | 0d | Client Resource | 16h |
| 490 | 1.4.3.3.2 | **User Interface design** | 16d | 2021-12-02 | 2021-12-23 |  | 15d |  |  | 112h |
| 491 | 1.4.3.3.2.1 | Initial Wireframe design | 4d | 2021-12-02 | 2021-12-07 | 489 | 15d | 0d | Business Analyst - 2 | 32h |
| 492 | 1.4.3.3.2.2 | Review of wireframe | 2d | 2021-12-08 | 2021-12-09 | 491 | 15d | 0d | Client Resource | 16h |
| 493 | 1.4.3.3.2.3 | Create design based off feedback | 6d | 2021-12-14 | 2021-12-21 | 492 | 15d | 0d | Business Analyst - 2 | 48h |
| 494 | 1.4.3.3.2.4 | Review design | 2d | 2021-12-22 | 2021-12-23 | 493 | 15d | 0d | Client Resource | 16h |
| 495 | 1.4.3.3.3 | **Software Design** | 12d | 2021-12-24 | 2022-01-10 |  | 13d |  |  | 72h |
| 496 | 1.4.3.3.3.1 | Create design document | 6d | 2021-12-24 | 2021-12-31 | 494 | 15d | 0d | Technical Architect - 2 | 48h |
| 497 | 1.4.3.3.3.2 | Review of design | 3d | 2022-01-06 | 2022-01-10 | 496 | 13d | 0d | Technical Architect - 2 | 24h |
| 498 | 1.4.3.3.4 | **Software Development** | 26d | 2022-01-17 | 2022-02-21 |  | 13d |  |  | 88h |
| 499 | 1.4.3.3.4.1 | Development of software | 8d | 2022-01-17 | 2022-01-26 | 497, 489 | 13d | 0d | Front End Developer | 64h |
| 500 | 1.4.3.3.4.2 | Code Review | 3d | 2022-02-17 | 2022-02-21 | 499 | 13d | 0d | Front End Developer | 24h |
| 501 | 1.4.3.3.5 | **Unit Testing** | 18d | 2022-03-01 | 2022-03-24 |  | 13d |  |  | 64h |
| 502 | 1.4.3.3.5.1 | Creation of test cases | 3d | 2022-03-01 | 2022-03-03 | 500 | 13d | 0d | Front End Developer | 24h |
| 503 | 1.4.3.3.5.2 | Execution of test cases | 5d | 2022-03-18 | 2022-03-24 | 502 | 13d | 0d | Front End Developer | 40h |

| ID | WBS | Task | Duration | Start | Finish | Predecessors | Total slack | Free slack | Constraint | Resources | Work |
| --- | --- | --- | --- | --- | --- | --- | --- | --- | --- | --- | --- |
| 504 | 1.4.3.4 | **System Integration Testing** | 10d | 2022-03-25 | 2022-04-07 |  | 13d |  |  |  | 56h |
| 505 | 1.4.3.4.1 | Creation of System Integration Test Cases | 3d | 2022-03-25 | 2022-04-01 | 470, 484, 503 | 13d | 0d | start no earlier than 2022-02-28 | Quality Assurance | 24h |
| 506 | 1.4.3.4.2 | Execution of System Integration Test Cases | 4d | 2022-04-04 | 2022-04-07 | 505 | 13d |  | start no earlier than 2022-03-30 | Quality Assurance | 32h |
| 507 | 1.4.4 | **Develop outgoing module** | 137d | 2021-05-27 | 2021-12-03 |  | 102d |  |  |  | 1040h |
| 508 | 1.4.4.1 | **DBMS:** | 11d | 2021-07-30 | 2021-08-13 |  | 99d |  |  |  | 88h |
| 509 | 1.4.4.1.1 | Install & Configure DBMS Engine & SQL Interface | 8d | 2021-07-30 | 2021-08-10 | 470 | 99d | 0d |  | Database Admin | 64h |
| 510 | 1.4.4.1.2 | Test SQL interface software | 3d | 2021-08-11 | 2021-08-13 | 509 | 99d | 72d |  | Database Admin | 24h |
| 511 | 1.4.4.2 | **REST API Service Server:** | 48d | 2021-05-27 | 2021-08-02 |  | 113d |  |  |  | 384h |
| 512 | 1.4.4.2.1 | **Requirements** | 17d | 2021-05-27 | 2021-06-18 |  | 113d |  |  |  | 136h |
| 513 | 1.4.4.2.1.1 | Requirements Elicitation | 6d | 2021-05-27 | 2021-06-03 | 248, 288, 328, 475 | 113d | 0d |  | Business Analyst - 1 | 48h |
| 514 | 1.4.4.2.1.2 | Documentation of requirements | 8d | 2021-06-04 | 2021-06-15 | 513 | 113d | 0d |  | Business Analyst - 1 | 64h |
| 515 | 1.4.4.2.1.3 | Review requirements | 3d | 2021-06-16 | 2021-06-18 | 514 | 113d | 0d |  | Client Resource | 24h |
| 516 | 1.4.4.2.2 | **Software Design** | 10d | 2021-06-21 | 2021-07-02 |  | 113d |  |  |  | 80h |
| 517 | 1.4.4.2.2.1 | Create design document | 7d | 2021-06-21 | 2021-06-29 | 515 | 113d | 0d |  | Technical Architect - 1 | 56h |
| 518 | 1.4.4.2.2.2 | Review of design | 3d | 2021-06-30 | 2021-07-02 | 517 | 113d | 0d |  | Technical Architect - 1 | 24h |
| 519 | 1.4.4.2.3 | **Software Development** | 13d | 2021-07-05 | 2021-07-21 |  | 113d |  |  |  | 104h |
| 520 | 1.4.4.2.3.1 | Development of software | 10d | 2021-07-05 | 2021-07-16 | 518 | 113d | 0d |  | Back End Developer - 2 | 80h |
| 521 | 1.4.4.2.3.2 | Code Review | 3d | 2021-07-19 | 2021-07-21 | 520 | 113d | 0d |  | Back End Developer - 2 | 24h |
| 522 | 1.4.4.2.4 | **Unit Testing** | 8d | 2021-07-22 | 2021-08-02 |  | 113d |  |  |  | 64h |
| 523 | 1.4.4.2.4.1 | Creation of test cases | 3d | 2021-07-22 | 2021-07-26 | 521 | 113d | 0d |  | Back End Developer - 2 | 24h |
| 524 | 1.4.4.2.4.2 | Execution of test cases | 5d | 2021-07-27 | 2021-08-02 | 523 | 191d |  |  | Back End Developer - 2 | 40h |
| 525 | 1.4.4.3 | **Client App:** | 54d | 2021-09-09 | 2021-11-23 |  | 27d |  |  |  | 504h |
| 526 | 1.4.4.3.1 | **Requirements** | 19d | 2021-09-09 | 2021-10-05 |  | 27d |  |  |  | 152h |
| 527 | 1.4.4.3.1.1 | Requirements Elicitation | 8d | 2021-09-09 | 2021-09-20 | 267, 307, 347, 494 | 27d | 0d |  | Business Analyst - 2 | 64h |
| 528 | 1.4.4.3.1.2 | Documentation of requirements | 7d | 2021-09-21 | 2021-09-29 | 527 | 27d | 0d |  | Business Analyst - 2 | 56h |
| 529 | 1.4.4.3.1.3 | Review requirements | 4d | 2021-09-30 | 2021-10-05 | 528 | 27d | 0d |  | Client Resource | 32h |

| ID | WBS | Task | Duration | Start | Finish | Predecessors | Total slack | Free slack | Resources | Work |
| --- | --- | --- | --- | --- | --- | --- | --- | --- | --- | --- |
| 530 | 1.4.4.3.2 | **User Interface design** | 14d | 2021-10-06 | 2021-10-25 |  | 27d |  |  | 112h |
| 531 | 1.4.4.3.2.1 | Initial Wireframe design | 3d | 2021-10-06 | 2021-10-08 | 529 | 27d | 0d | Business Analyst - 2 | 24h |
| 532 | 1.4.4.3.2.2 | Review of wireframe | 1d | 2021-10-11 | 2021-10-11 | 531 | 27d | 0d | Client Resource | 8h |
| 533 | 1.4.4.3.2.3 | Create design based off feedback | 7d | 2021-10-12 | 2021-10-20 | 532 | 27d | 0d | Business Analyst - 2 | 56h |
| 534 | 1.4.4.3.2.4 | Review design | 3d | 2021-10-21 | 2021-10-25 | 533 | 27d | 0d | Client Resource | 24h |
| 535 | 1.4.4.3.3 | **Software Design** | 9d | 2021-10-06 | 2021-10-18 |  | 136d |  |  | 72h |
| 536 | 1.4.4.3.3.1 | Create design document | 6d | 2021-10-06 | 2021-10-13 | 529 | 136d | 0d | Technical Architect - 2 | 48h |
| 537 | 1.4.4.3.3.2 | Review of design | 3d | 2021-10-14 | 2021-10-18 | 536 | 136d |  | Technical Architect - 2 | 24h |
| 538 | 1.4.4.3.4 | **Software Development** | 13d | 2021-10-26 | 2021-11-11 |  | 27d |  |  | 104h |
| 539 | 1.4.4.3.4.1 | Development of software | 10d | 2021-10-26 | 2021-11-08 | 529, 534 | 27d | 0d | Front End Developer | 80h |
| 540 | 1.4.4.3.4.2 | Code Review | 3d | 2021-11-09 | 2021-11-11 | 539 | 27d | 0d | Front End Developer | 24h |
| 541 | 1.4.4.3.5 | **Unit Testing** | 8d | 2021-11-12 | 2021-11-23 |  | 27d |  |  | 64h |
| 542 | 1.4.4.3.5.1 | Creation of test cases | 3d | 2021-11-12 | 2021-11-16 | 540 | 27d | 0d | Front End Developer | 24h |
| 543 | 1.4.4.3.5.2 | Execution of test cases | 5d | 2021-11-17 | 2021-11-23 | 542 | 27d | 0d | Front End Developer | 40h |
| 544 | 1.4.4.4 | **System Integration Testing** | 8d | 2021-11-24 | 2021-12-03 |  | 27d |  |  | 64h |
| 545 | 1.4.4.4.1 | Creation of System Integration Test Cases | 3d | 2021-11-24 | 2021-11-26 | 510, 523, 543 | 27d | 0d | Quality Assurance | 24h |
| 546 | 1.4.4.4.2 | Execution of System Integration Test Cases | 5d | 2021-11-29 | 2021-12-03 | 545 | 27d | 0d | Quality Assurance | 40h |
| 547 | 1.4.5 | **Vulnerability Assessment** | 30d | 2021-12-06 | 2022-01-14 |  | 27d |  |  | 240h |
| 548 | 1.4.5.1 | Execution of vulnerability scan | 10d | 2021-12-06 | 2021-12-17 | 546 | 27d | 0d | Security Analyst | 80h |
| 549 | 1.4.5.2 | Creation of reports | 2d | 2021-12-20 | 2021-12-21 | 548 | 27d | 0d | Security Analyst | 16h |
| 550 | 1.4.5.3 | Vulnerability remediationby development team | 8d | 2021-12-22 | 2021-12-31 | 549 | 27d | 0d | Technical Architect - 1 | 64h |
| 551 | 1.4.5.4 | Re-scan for vulnerabilities | 7d | 2022-01-03 | 2022-01-11 | 550 | 27d | 0d | Security Analyst | 56h |
| 552 | 1.4.5.5 | Final reportcreated | 3d | 2022-01-12 | 2022-01-14 | 551 | 27d | 0d | Security Analyst | 24h |
| 553 | 1.4.6 | **Performance Testing** | 13d | 2022-01-17 | 2022-02-02 |  | 27d |  |  | 104h |
| 554 | 1.4.6.1 | Creation of Performance Test Cases | 5d | 2022-01-17 | 2022-01-21 | 552 | 27d | 0d | Performance Engineer | 40h |
| 555 | 1.4.6.2 | Execution of test cases | 8d | 2022-01-24 | 2022-02-02 | 554 | 27d | 0d | Performance Engineer | 64h |

| ID | WBS | Task | Duration | Start | Finish | Predecessors | Total slack | Free slack | Resources | Work |
| --- | --- | --- | --- | --- | --- | --- | --- | --- | --- | --- |
| 556 | 1.4.7 | **Regression Testing** | 11d | 2022-02-03 | 2022-02-17 |  | 27d |  |  | 88h |
| 557 | 1.4.7.1 | Creation of regression suite of test cases | 4d | 2022-02-03 | 2022-02-08 | 555 | 27d | 0d | Quality Assurance | 32h |
| 558 | 1.4.7.2 | Execution of regression suite | 7d | 2022-02-09 | 2022-02-17 | 557 | 27d | 0d | Quality Assurance | 56h |
| 559 | 1.4.8 | **User Acceptance Testing** | 11d | 2022-02-18 | 2022-03-04 |  | 37d |  |  | 88h |
| 560 | 1.4.8.1 | Creation of User Acceptance Testing | 3d | 2022-02-18 | 2022-02-22 | 558 | 37d | 0d | Client Resource | 24h |
| 561 | 1.4.8.2 | Execution of User Acceptance testing | 7d | 2022-02-23 | 2022-03-03 | 560 | 37d | 0d | Client Resource | 56h |
| 562 | 1.4.8.3 | Client sign off for testing | 1d | 2022-03-04 | 2022-03-04 | 561 | 37d |  | Client Resource | 8h |
| 563 | 1.4.9 | **System Training** | 13d | 2022-02-18 | 2022-03-08 |  | 35d |  |  | 104h |
| 564 | 1.4.9.1 | Develop training materials and resources | 8d | 2022-02-18 | 2022-03-01 | 558 | 35d | 0d | Client Trainer | 64h |
| 565 | 1.4.9.2 | Staff training | 3d | 2022-03-02 | 2022-03-04 | 564 | 35d | 0d | Client Trainer | 24h |
| 566 | 1.4.9.3 | Staff workshops | 2d | 2022-03-07 | 2022-03-08 | 565 | 35d |  | Client Trainer | 16h |
| 567 | 1.4.10 | **Deployment** | 10d | 2022-02-18 | 2022-03-03 |  | 27d |  |  | 80h |
| 568 | 1.4.10.1 | Creation of rollout plan | 4d | 2022-02-18 | 2022-02-23 | 558 | 27d | 0d | Project Manager | 32h |
| 569 | 1.4.10.2 | Review of roll out plan | 2d | 2022-02-24 | 2022-02-25 | 568 | 27d | 0d | Project Manager | 16h |
| 570 | 1.4.10.3 | Dry-runof roll out plan | 2d | 2022-02-28 | 2022-03-01 | 569 | 27d | 0d | Project Manager | 16h |
| 571 | 1.4.10.4 | Execution of rollout | 2d | 2022-03-02 | 2022-03-03 | 570 | 27d | 0d | Project Manager | 16h |
| 572 | 1.4.11 | **Warranty / Maintenance Period** | 11d | 2022-03-04 | 2022-03-18 |  | 27d |  |  | 136h |
| 573 | 1.4.11.1 | Pay vendor invoices | 2d | 2022-03-04 | 2022-03-07 | 571 | 34d | 0d | Project Manager | 16h |
| 574 | 1.4.11.2 | Close out any open purchase orders | 2d | 2022-03-08 | 2022-03-09 | 573 | 34d |  | Project Manager | 16h |
| 575 | 1.4.11.3 | Conduct lessons learned | 2d | 2022-03-10 | 2022-03-11 | 571 | 32d |  | Project Manager | 16h |
| 576 | 1.4.11.4 | Creation of support documentation | 5d | 2022-03-04 | 2022-03-10 | 571 | 27d | 0d | Technical Architect - 1 | 40h |
| 577 | 1.4.11.5 | Knowledge transfer of solution to support personnel | 6d | 2022-03-11 | 2022-03-18 | 576 | 27d |  | Technical Architect - 1 | 48h |
