# -Grp3-A3

Schedule from MS Project, 2021-01-04 to 2022-06-17.

## Calendars

- Standard: Mon-Fri 08:00-12:00, 13:00-17:00; Sat-Sun off.

## Resources

| Resource |
| --- |
| Project Manager |
| Technical Architect |
| Performance Engineer |
| Security Analyst |
| Quality Assurance |
| Database Admin |
| Back End Developer |
| Business Analyst |
| Client Resource |
| v |
| Infrastructure Engineer |
| Automation Engineer |
| Atu |
| Front End Developer |
| 2 - Back end Developer |
| 1-Business An |
| Business Analyst - 1 |
| Business Analyst - 2 |
| Client Trainer |
| Back End Developer - 1 |
| Back End Developer - 2 |
| Front End Developer 1 |
| Front End Developer -1 |
| Front End Developer - 2 |

## Schedule

| ID | WBS | Task | Duration | Start | Finish | Predecessors | Total slack | Free slack | Constraint | Resources | Work |
| --- | --- | --- | --- | --- | --- | --- | --- | --- | --- | --- | --- |
| 1 | 1 | **Pre-Development** | 70d | 2021-01-04 | 2021-04-09 |  | 0d |  |  |  | 816h |
| 2 | 1.1 | Project Kickoff | 1d | 2021-01-04 | 2021-01-04 |  | 0d |  | start no earlier than 2021-01-04 | Project Manager | 8h |
| 3 | 1.2 | **High – Level Business Requirements** | 17d | 2021-01-05 | 2021-01-27 |  | 0d |  |  |  | 136h |
| 4 | 1.2.1 | Hold requirements elicitation sessions | 8d | 2021-01-05 | 2021-01-14 | 2 | 0d |  | start no earlier than 2021-01-04 | Business Analyst - 1 | 64h |
| 5 | 1.2.2 | Document High level business requirements | 6d | 2021-01-15 | 2021-01-22 | 4 | 0d |  |  | Business Analyst - 1 | 48h |
| 6 | 1.2.3 | Review / approve high-level business requirements | 3d | 2021-01-25 | 2021-01-27 | 5 | 0d |  |  | Client Resource | 24h |
| 7 | 1.3 | **Project Schedule** | 11d | 2021-01-28 | 2021-02-11 |  | 0d |  |  |  | 88h |
| 8 | 1.3.1 | Meet with appropriate teams to get preliminary estimates | 3d | 2021-01-28 | 2021-02-01 | 6 | 0d |  |  | Project Manager | 24h |
| 9 | 1.3.2 | Documentation project timeline (including dependencies) | 5d | 2021-02-02 | 2021-02-08 | 8 | 0d |  |  | Project Manager | 40h |
| 10 | 1.3.3 | Review project schedule | 3d | 2021-02-09 | 2021-02-11 | 9 | 0d |  |  | Project Manager | 24h |
| 11 | 1.4 | **Project resource requests** | 2d | 2021-02-12 | 2021-02-15 |  | 0d |  |  |  | 16h |
| 12 | 1.4.1 | Put in requests for resources | 1d | 2021-02-12 | 2021-02-12 | 10 | 0d |  |  | Project Manager | 8h |
| 13 | 1.4.2 | Get resources assigned | 1d | 2021-02-15 | 2021-02-15 | 12 | 0d |  |  | Project Manager | 8h |
| 14 | 1.5 | **Funding Release** | 14d | 2021-02-16 | 2021-03-05 |  | 0d |  |  |  | 112h |
| 15 | 1.5.1 | Creation of Funding Release | 8d | 2021-02-16 | 2021-02-25 | 13 | 0d |  |  | Project Manager | 64h |
| 16 | 1.5.2 | Review of Funding Release | 3d | 2021-02-26 | 2021-03-02 | 15 | 0d |  |  | Project Manager | 24h |
| 17 | 1.5.3 | Approval of Funding Release | 3d | 2021-03-03 | 2021-03-05 | 16 | 0d |  |  | Project Manager | 24h |
| 18 | 1.6 | **Infrastructure Setup** | 25d | 2021-03-08 | 2021-04-09 |  | 137d |  |  |  | 456h |
| 19 | 1.6.1 | **Database Software** | 5d | 2021-03-08 | 2021-03-12 |  | 137d |  |  |  | 40h |
| 20 | 1.6.1.1 | Request quotation from vendors | 1d | 2021-03-08 | 2021-03-08 | 17 | 137d | 0d |  | Project Manager | 8h |
| 21 | 1.6.1.2 | Purchase licenses | 1d | 2021-03-09 | 2021-03-09 | 20 | 137d | 0d |  | Project Manager | 8h |
| 22 | 1.6.1.3 | License installers / keys delivered | 3d | 2021-03-10 | 2021-03-12 | 21 | 137d | 0d |  | Database Admin | 24h |
| 23 | 1.6.2 | **Performance Testing** | 9d | 2021-03-08 | 2021-03-18 |  | 326d |  |  |  | 48h |
| 24 | 1.6.2.1 | Identification of performance testing tool | 1d | 2021-03-08 | 2021-03-08 | 17 | 326d | 0d |  | Performance Engineer | 8h |
| 25 | 1.6.2.2 | Request quotation from vendors | 1d | 2021-03-11 | 2021-03-11 | 24 | 326d | 0d |  | Project Manager | 8h |
| 26 | 1.6.2.3 | Purchase licenses | 1d | 2021-03-15 | 2021-03-15 | 25 | 326d | 0d |  | Project Manager | 8h |
| 27 | 1.6.2.4 | License installers / keys delivered | 3d | 2021-03-16 | 2021-03-18 | 26 | 326d |  |  | Performance Engineer | 24h |

| ID | WBS | Task | Duration | Start | Finish | Predecessors | Total slack | Free slack | Resources | Work |
| --- | --- | --- | --- | --- | --- | --- | --- | --- | --- | --- |
| 28 | 1.6.3 | **Servers** | 7d | 2021-03-10 | 2021-03-18 |  | 326d |  |  | 48h |
| 29 | 1.6.3.1 | Request quotation from vendors for hardware | 1d | 2021-03-10 | 2021-03-10 | 17 | 327d | 0d | Project Manager | 8h |
| 30 | 1.6.3.2 | Purchase servers | 1d | 2021-03-12 | 2021-03-12 | 29 | 326d | 0d | Project Manager | 8h |
| 31 | 1.6.3.3 | Servers allocated | 3d | 2021-03-15 | 2021-03-17 | 30 | 326d | 0d | Infrastructure Engineer | 24h |
| 32 | 1.6.3.4 | Access granted to users | 1d | 2021-03-18 | 2021-03-18 | 31 | 326d |  | Infrastructure Engineer | 8h |
| 33 | 1.6.4 | **Code Repository Tool** | 21d | 2021-03-08 | 2021-04-05 |  | 314d |  |  | 112h |
| 34 | 1.6.4.1 | Identification of code repository tool | 3d | 2021-03-08 | 2021-03-10 | 17 | 314d | 0d | Automation Engineer | 24h |
| 35 | 1.6.4.2 | Request quotation from vendors | 2d | 2021-03-16 | 2021-03-17 | 34 | 314d | 0d | Project Manager | 16h |
| 36 | 1.6.4.3 | Purchase licenses | 3d | 2021-03-24 | 2021-03-26 | 35 | 314d | 0d | Project Manager | 24h |
| 37 | 1.6.4.4 | License installers / keys delivered | 1d | 2021-03-29 | 2021-03-29 | 36 | 314d | 0d | Automation Engineer | 8h |
| 38 | 1.6.4.5 | Access granted to users | 2d | 2021-03-30 | 2021-03-31 | 37 | 314d | 0d | Automation Engineer | 16h |
| 39 | 1.6.4.6 | Software Installed / verified on developers laptops | 3d | 2021-04-01 | 2021-04-05 | 38 | 314d |  | Automation Engineer | 24h |
| 40 | 1.6.5 | **Security Scanning Tool** | 24d | 2021-03-08 | 2021-04-08 |  | 311d |  |  | 112h |
| 41 | 1.6.5.1 | Identification of scanning tool | 3d | 2021-03-08 | 2021-03-10 | 17 | 311d | 0d | Security Analyst | 24h |
| 42 | 1.6.5.2 | Request quotation from vendors | 2d | 2021-03-18 | 2021-03-19 | 41 | 311d | 0d | Project Manager | 16h |
| 43 | 1.6.5.3 | Purchase licenses | 3d | 2021-03-29 | 2021-03-31 | 42 | 311d | 0d | Project Manager | 24h |
| 44 | 1.6.5.4 | License installers / keys delivered | 1d | 2021-04-01 | 2021-04-01 | 43 | 311d | 0d | Security Analyst | 8h |
| 45 | 1.6.5.5 | Access created to users | 2d | 2021-04-02 | 2021-04-05 | 44 | 311d | 0d | Security Analyst | 16h |
| 46 | 1.6.5.6 | Software Installed / verified on necessary machines | 3d | 2021-04-06 | 2021-04-08 | 45 | 311d |  | Security Analyst | 24h |
| 47 | 1.6.6 | **Continuous integration/continuous deployment tool** | 22d | 2021-03-11 | 2021-04-09 |  | 310d |  |  | 96h |
| 48 | 1.6.6.1 | Identification of tool | 3d | 2021-03-11 | 2021-03-15 | 17 | 310d | 0d | Automation Engineer | 24h |
| 49 | 1.6.6.2 | Request quotation from vendors | 2d | 2021-03-22 | 2021-03-23 | 48 | 310d | 0d | Project Manager | 16h |
| 50 | 1.6.6.3 | Purchase licenses | 3d | 2021-04-01 | 2021-04-05 | 49 | 310d | 0d | Project Manager | 24h |
| 51 | 1.6.6.4 | License installers / keys delivered | 1d | 2021-04-06 | 2021-04-06 | 50 | 310d | 0d | Automation Engineer | 8h |
| 52 | 1.6.6.5 | Software installed / verified | 3d | 2021-04-07 | 2021-04-09 | 51 | 310d |  | Automation Engineer | 24h |

| ID | WBS | Task | Duration | Start | Finish | Predecessors | Total slack | Free slack | Resources | Work |
| --- | --- | --- | --- | --- | --- | --- | --- | --- | --- | --- |
| 53 | 2 | **Phase 1** | 299d | 2021-03-08 | 2022-04-28 |  | 0d |  |  | 4360h |
| 54 | 2.1 | **Develop Appointment module** | 57d | 2021-03-08 | 2021-05-25 |  | 0d |  |  | 840h |
| 55 | 2.1.1 | **DBMS:** | 7d | 2021-03-15 | 2021-03-23 |  | 137d |  |  | 56h |
| 56 | 2.1.1.1 | Install & Configure DBMS Engine & SQL Interface | 5d | 2021-03-15 | 2021-03-19 | 17, 22 | 137d | 0d | Database Admin | 40h |
| 57 | 2.1.1.2 | Test SQL interface software | 2d | 2021-03-22 | 2021-03-23 | 56 | 137d | 0d | Database Admin | 16h |
| 58 | 2.1.2 | **REST API Service Server:** | 45d | 2021-03-08 | 2021-05-07 |  | 56d |  |  | 312h |
| 59 | 2.1.2.1 | **Requirements** | 8d | 2021-03-08 | 2021-03-17 |  | 56d |  |  | 64h |
| 60 | 2.1.2.1.1 | Requirements gathering | 3d | 2021-03-08 | 2021-03-10 | 17 | 56d | 0d | Business Analyst - 1 | 24h |
| 61 | 2.1.2.1.2 | Documentation of requirements | 4d | 2021-03-11 | 2021-03-16 | 60 | 56d | 0d | Business Analyst - 1 | 32h |
| 62 | 2.1.2.1.3 | Review requirements | 1d | 2021-03-17 | 2021-03-17 | 61 | 56d | 0d | Client Resource | 8h |
| 63 | 2.1.2.2 | **Software Design** | 17d | 2021-03-18 | 2021-04-09 |  | 281d |  |  | 88h |
| 64 | 2.1.2.2.1 | Create design document | 8d | 2021-03-18 | 2021-03-29 | 62 | 281d | 0d | Technical Architect | 64h |
| 65 | 2.1.2.2.2 | Review of design | 3d | 2021-04-07 | 2021-04-09 | 64 | 281d | 0d | Technical Architect | 24h |
| 66 | 2.1.2.3 | **Software Development** | 14d | 2021-04-12 | 2021-04-29 |  | 281d |  |  | 112h |
| 67 | 2.1.2.3.1 | Development of software | 10d | 2021-04-12 | 2021-04-23 | 65 | 281d | 0d | Back End Developer - 1 | 80h |
| 68 | 2.1.2.3.2 | Code Review | 4d | 2021-04-26 | 2021-04-29 | 67 | 281d | 0d | Back End Developer - 1 | 32h |
| 69 | 2.1.2.4 | **Unit Testing** | 6d | 2021-04-30 | 2021-05-07 |  | 281d |  |  | 48h |
| 70 | 2.1.2.4.1 | Creation of test cases | 2d | 2021-04-30 | 2021-05-03 | 68 | 281d | 0d | Back End Developer - 1 | 16h |
| 71 | 2.1.2.4.2 | Execution of test cases | 4d | 2021-05-04 | 2021-05-07 | 70 | 281d | 3d | Back End Developer - 1 | 32h |
| 72 | 2.1.3 | **Client App:** | 48d | 2021-03-08 | 2021-05-12 |  | 0d |  |  | 400h |
| 73 | 2.1.3.1 | **Requirements** | 11d | 2021-03-08 | 2021-03-22 |  | 0d |  |  | 88h |
| 74 | 2.1.3.1.1 | Requirements Elicitation | 5d | 2021-03-08 | 2021-03-12 | 17 | 0d |  | Business Analyst - 2 | 40h |
| 75 | 2.1.3.1.2 | Documentation of requirements | 4d | 2021-03-15 | 2021-03-18 | 74 | 0d |  | Business Analyst - 2 | 32h |
| 76 | 2.1.3.1.3 | Review requirements | 2d | 2021-03-19 | 2021-03-22 | 75 | 0d |  | Client Resource | 16h |

| ID | WBS | Task | Duration | Start | Finish | Predecessors | Total slack | Free slack | Resources | Work |
| --- | --- | --- | --- | --- | --- | --- | --- | --- | --- | --- |
| 77 | 2.1.3.2 | **User Interface design** | 10d | 2021-03-23 | 2021-04-05 |  | 0d |  |  | 80h |
| 78 | 2.1.3.2.1 | Initial Wireframe design | 2d | 2021-03-23 | 2021-03-24 | 76 | 0d |  | Business Analyst - 2 | 16h |
| 79 | 2.1.3.2.2 | Review of wireframe | 1d | 2021-03-25 | 2021-03-25 | 78 | 0d |  | Client Resource | 8h |
| 80 | 2.1.3.2.3 | Create design based off feedback | 6d | 2021-03-26 | 2021-04-02 | 79 | 0d |  | Business Analyst - 2 | 48h |
| 81 | 2.1.3.2.4 | Review design | 1d | 2021-04-05 | 2021-04-05 | 80 | 0d |  | Client Resource | 8h |
| 82 | 2.1.3.3 | **Software Design** | 13d | 2021-03-30 | 2021-04-15 |  | 278d |  |  | 80h |
| 83 | 2.1.3.3.1 | Create design document | 6d | 2021-03-30 | 2021-04-06 | 76 | 278d | 0d | Technical Architect | 48h |
| 84 | 2.1.3.3.2 | Review of design | 4d | 2021-04-12 | 2021-04-15 | 83 | 278d | 0d | Technical Architect | 32h |
| 85 | 2.1.3.4 | **Software Development** | 13d | 2021-04-16 | 2021-05-04 |  | 278d |  |  | 104h |
| 86 | 2.1.3.4.1 | Development of software | 10d | 2021-04-16 | 2021-04-29 | 84, 81 | 278d | 0d | Front End Developer | 80h |
| 87 | 2.1.3.4.2 | Code Review | 3d | 2021-04-30 | 2021-05-04 | 86 | 278d | 0d | Front End Developer | 24h |
| 88 | 2.1.3.5 | **Unit Testing** | 6d | 2021-05-05 | 2021-05-12 |  | 278d |  |  | 48h |
| 89 | 2.1.3.5.1 | Creation of test cases | 2d | 2021-05-05 | 2021-05-06 | 87 | 278d | 0d | Front End Developer | 16h |
| 90 | 2.1.3.5.2 | Execution of test cases | 4d | 2021-05-07 | 2021-05-12 | 89 | 278d | 0d | Front End Developer | 32h |
| 91 | 2.1.4 | **System Integration Testing** | 9d | 2021-05-13 | 2021-05-25 |  | 278d |  |  | 72h |
| 92 | 2.1.4.1 | Creation of System Integration Test Cases | 3d | 2021-05-13 | 2021-05-17 | 57, 71, 90 | 278d | 0d | Quality Assurance | 24h |
| 93 | 2.1.4.2 | Execution of System Integration Test Cases | 6d | 2021-05-18 | 2021-05-25 | 92 | 278d |  | Quality Assurance | 48h |
| 94 | 2.2 | **Develop employee records module** | 163d | 2021-03-18 | 2021-11-01 |  | 13d |  |  | 928h |
| 95 | 2.2.1 | **DBMS:** | 10d | 2021-03-24 | 2021-04-06 |  | 137d |  |  | 80h |
| 96 | 2.2.1.1 | Install & Configure DBMS Engine & SQL Interface | 7d | 2021-03-24 | 2021-04-01 | 57 | 137d | 0d | Database Admin | 56h |
| 97 | 2.2.1.2 | Test SQL interface software | 3d | 2021-04-02 | 2021-04-06 | 96 | 137d | 0d | Database Admin | 24h |
| 98 | 2.2.2 | **REST API Service Server:** | 81d | 2021-03-18 | 2021-07-08 |  | 56d |  |  | 328h |
| 99 | 2.2.2.1 | **Requirements** | 10d | 2021-03-18 | 2021-03-31 |  | 56d |  |  | 80h |
| 100 | 2.2.2.1.1 | Requirements Elicitation | 4d | 2021-03-18 | 2021-03-23 | 62 | 56d | 0d | Business Analyst - 1 | 32h |
| 101 | 2.2.2.1.2 | Documentation of requirements | 3d | 2021-03-24 | 2021-03-26 | 100 | 56d | 0d | Business Analyst - 1 | 24h |
| 102 | 2.2.2.1.3 | Review requirements | 3d | 2021-03-29 | 2021-03-31 | 101 | 56d | 0d | Client Resource | 24h |

| ID | WBS | Task | Duration | Start | Finish | Predecessors | Total slack | Free slack | Constraint | Resources | Work |
| --- | --- | --- | --- | --- | --- | --- | --- | --- | --- | --- | --- |
| 103 | 2.2.2.2 | **Software Design** | 20d | 2021-04-16 | 2021-05-13 |  | 232d |  |  |  | 96h |
| 104 | 2.2.2.2.1 | Create design document | 8d | 2021-04-16 | 2021-04-27 | 102 | 232d | 0d |  | Technical Architect | 64h |
| 105 | 2.2.2.2.2 | Review of design | 4d | 2021-05-10 | 2021-05-13 | 104 | 232d | 0d |  | Technical Architect | 32h |
| 106 | 2.2.2.3 | **Software Development** | 35d | 2021-05-14 | 2021-07-01 |  | 232d |  |  |  | 112h |
| 107 | 2.2.2.3.1 | Development of software | 10d | 2021-05-14 | 2021-05-27 | 105 | 232d | 0d |  | Back End Developer - 2 | 80h |
| 108 | 2.2.2.3.2 | Code Review | 4d | 2021-06-28 | 2021-07-01 | 107 | 234d | 0d |  | Back End Developer - 2 | 32h |
| 109 | 2.2.2.4 | **Unit Testing** | 5d | 2021-07-02 | 2021-07-08 |  | 234d |  |  |  | 40h |
| 110 | 2.2.2.4.1 | Creation of test cases | 2d | 2021-07-02 | 2021-07-05 | 108 | 234d | 0d |  | Back End Developer - 2 | 16h |
| 111 | 2.2.2.4.2 | Execution of test cases | 3d | 2021-07-06 | 2021-07-08 | 110 | 234d | 70d |  | Back End Developer - 2 | 24h |
| 112 | 2.2.3 | **Client App:** | 138d | 2021-04-06 | 2021-10-14 |  | 0d |  |  |  | 448h |
| 113 | 2.2.3.1 | **Requirements** | 9d | 2021-04-06 | 2021-04-16 |  | 0d |  |  |  | 72h |
| 114 | 2.2.3.1.1 | Requirements Elicitation | 3d | 2021-04-06 | 2021-04-08 | 81 | 0d |  |  | Business Analyst - 2 | 24h |
| 115 | 2.2.3.1.2 | Documentation of requirements | 4d | 2021-04-09 | 2021-04-14 | 114 | 0d |  |  | Business Analyst - 2 | 32h |
| 116 | 2.2.3.1.3 | Review requirements | 2d | 2021-04-15 | 2021-04-16 | 115 | 0d |  |  | Client Resource | 16h |
| 117 | 2.2.3.2 | **User Interface design** | 45d | 2021-05-04 | 2021-07-05 |  | 190d |  |  |  | 128h |
| 118 | 2.2.3.2.1 | Initial Wireframe design | 4d | 2021-05-04 | 2021-05-13 | 116 | 190d | 0d |  | Business Analyst - 2 | 32h |
| 119 | 2.2.3.2.2 | Review of wireframe | 3d | 2021-05-17 | 2021-05-19 | 118 | 190d | 0d |  | Client Resource | 24h |
| 120 | 2.2.3.2.3 | Create design based off feedback | 7d | 2021-05-24 | 2021-06-30 | 119 | 190d | 0d |  | Business Analyst - 2 | 56h |
| 121 | 2.2.3.2.4 | Review design | 2d | 2021-07-02 | 2021-07-05 | 120 | 190d | 25d |  | Client Resource | 16h |
| 122 | 2.2.3.3 | **Software Design** | 74d | 2021-04-28 | 2021-08-09 |  | 165d |  |  |  | 88h |
| 123 | 2.2.3.3.1 | Create design document | 8d | 2021-04-28 | 2021-05-07 | 116 | 165d | 0d |  | Technical Architect | 64h |
| 124 | 2.2.3.3.2 | Review of design | 3d | 2021-05-14 | 2021-08-09 | 123 | 165d | 0d |  | Technical Architect | 24h |
| 125 | 2.2.3.4 | **Software Development** | 12d | 2021-08-10 | 2021-08-25 |  | 165d |  |  |  | 96h |
| 126 | 2.2.3.4.1 | Development of software | 9d | 2021-08-10 | 2021-08-20 | 121, 124 | 165d | 0d | start no earlier than 2021-05-28 | Front End Developer | 72h |
| 127 | 2.2.3.4.2 | Code Review | 3d | 2021-08-23 | 2021-08-25 | 126 | 165d | 0d |  | Front End Developer | 24h |

| ID | WBS | Task | Duration | Start | Finish | Predecessors | Total slack | Free slack | Resources | Work |
| --- | --- | --- | --- | --- | --- | --- | --- | --- | --- | --- |
| 128 | 2.2.3.5 | **Unit Testing** | 36d | 2021-08-26 | 2021-10-14 |  | 164d |  |  | 64h |
| 129 | 2.2.3.5.1 | Creation of test cases | 2d | 2021-08-26 | 2021-08-27 | 127 | 165d | 0d | Front End Developer | 16h |
| 130 | 2.2.3.5.2 | Execution of test cases | 6d | 2021-09-10 | 2021-10-14 | 129 | 164d | 0d | Front End Developer | 48h |
| 131 | 2.2.4 | **System Integration Testing** | 9d | 2021-10-20 | 2021-11-01 |  | 164d |  |  | 72h |
| 132 | 2.2.4.1 | Creation of System Integration Test Cases | 3d | 2021-10-20 | 2021-10-22 | 130, 97, 111 | 164d | 0d | Quality Assurance | 24h |
| 133 | 2.2.4.2 | Execution of System Integration Test Cases | 6d | 2021-10-25 | 2021-11-01 | 132 | 164d |  | Quality Assurance | 48h |
| 134 | 2.3 | **Develop Patient records module** | 281d | 2021-04-01 | 2022-04-28 |  | 12d |  |  | 944h |
| 135 | 2.3.1 | **DBMS:** | 12d | 2021-04-07 | 2021-04-22 |  | 137d |  |  | 96h |
| 136 | 2.3.1.1 | Install & Configure DBMS Engine & SQL Interface | 9d | 2021-04-07 | 2021-04-19 | 97 | 137d | 0d | Database Admin | 72h |
| 137 | 2.3.1.2 | Test SQL interface software | 3d | 2021-04-20 | 2021-04-22 | 136 | 137d | 0d | Database Admin | 24h |
| 138 | 2.3.2 | **REST API Service Server:** | 252d | 2021-04-01 | 2022-03-18 |  | 56d |  |  | 352h |
| 139 | 2.3.2.1 | **Requirements** | 16d | 2021-04-01 | 2021-04-22 |  | 56d |  |  | 112h |
| 140 | 2.3.2.1.1 | Requirements Elicitation | 4d | 2021-04-01 | 2021-04-06 | 102 | 56d | 0d | Business Analyst - 1 | 32h |
| 141 | 2.3.2.1.2 | Documentation of requirements | 6d | 2021-04-07 | 2021-04-14 | 140 | 56d | 0d | Business Analyst - 1 | 48h |
| 142 | 2.3.2.1.3 | Review requirements | 4d | 2021-04-19 | 2021-04-22 | 141 | 56d | 0d | Client Resource | 32h |
| 143 | 2.3.2.2 | **Software Design** | 15d | 2022-01-28 | 2022-02-17 |  | 56d |  |  | 72h |
| 144 | 2.3.2.2.1 | Create design document | 6d | 2022-01-28 | 2022-02-04 | 142 | 56d | 0d | Technical Architect | 48h |
| 145 | 2.3.2.2.2 | Review of design | 3d | 2022-02-15 | 2022-02-17 | 144 | 56d | 0d | Technical Architect | 24h |
| 146 | 2.3.2.3 | **Software Development** | 13d | 2022-02-18 | 2022-03-08 |  | 56d |  |  | 104h |
| 147 | 2.3.2.3.1 | Development of software | 10d | 2022-02-18 | 2022-03-03 | 145 | 56d | 0d | Back End Developer - 1 | 80h |
| 148 | 2.3.2.3.2 | Code Review | 3d | 2022-03-04 | 2022-03-08 | 147 | 56d | 0d | Back End Developer - 1 | 24h |
| 149 | 2.3.2.4 | **Unit Testing** | 8d | 2022-03-09 | 2022-03-18 |  | 56d |  |  | 64h |
| 150 | 2.3.2.4.1 | Creation of test cases | 3d | 2022-03-09 | 2022-03-11 | 148 | 56d | 0d | Back End Developer - 1 | 24h |
| 151 | 2.3.2.4.2 | Execution of test cases | 5d | 2022-03-14 | 2022-03-18 | 150 | 56d | 20d | Back End Developer - 1 | 40h |

| ID | WBS | Task | Duration | Start | Finish | Predecessors | Total slack | Free slack | Resources | Work |
| --- | --- | --- | --- | --- | --- | --- | --- | --- | --- | --- |
| 152 | 2.3.3 | **Client App:** | 260d | 2021-04-19 | 2022-04-15 |  | 0d |  |  | 440h |
| 153 | 2.3.3.1 | **Requirements** | 13d | 2021-04-19 | 2021-05-05 |  | 0d |  |  | 104h |
| 154 | 2.3.3.1.1 | Requirements Elicitation | 4d | 2021-04-19 | 2021-04-22 | 116 | 0d |  | Business Analyst - 2 | 32h |
| 155 | 2.3.3.1.2 | Documentation of requirements | 7d | 2021-04-23 | 2021-05-03 | 154 | 0d |  | Business Analyst - 2 | 56h |
| 156 | 2.3.3.1.3 | Review requirements | 2d | 2021-05-04 | 2021-05-05 | 155 | 0d |  | Client Resource | 16h |
| 157 | 2.3.3.2 | **User Interface design** | 14d | 2021-05-06 | 2021-05-25 |  | 0d |  |  | 112h |
| 158 | 2.3.3.2.1 | Initial Wireframe design | 4d | 2021-05-06 | 2021-05-11 | 156 | 0d |  | Business Analyst - 2 | 32h |
| 159 | 2.3.3.2.2 | Review of wireframe | 2d | 2021-05-12 | 2021-05-13 | 158 | 0d |  | Client Resource | 16h |
| 160 | 2.3.3.2.3 | Create design based off feedback | 6d | 2021-05-14 | 2021-05-21 | 159 | 0d |  | Business Analyst - 2 | 48h |
| 161 | 2.3.3.2.4 | Review design | 2d | 2021-05-24 | 2021-05-25 | 160 | 0d |  | Client Resource | 16h |
| 162 | 2.3.3.3 | **Software Design** | 12d | 2022-02-07 | 2022-02-22 |  | 39d |  |  | 72h |
| 163 | 2.3.3.3.1 | Create design document | 6d | 2022-02-07 | 2022-02-14 | 161 | 39d | 0d | Technical Architect | 48h |
| 164 | 2.3.3.3.2 | Review of design | 3d | 2022-02-18 | 2022-02-22 | 163 | 39d | 0d | Technical Architect | 24h |
| 165 | 2.3.3.4 | **Software Development** | 14d | 2022-02-24 | 2022-03-15 |  | 38d |  |  | 88h |
| 166 | 2.3.3.4.1 | Development of software | 8d | 2022-02-24 | 2022-03-07 | 161, 164 | 39d | 0d | Front End Developer | 64h |
| 167 | 2.3.3.4.2 | Code Review | 3d | 2022-03-11 | 2022-03-15 | 166 | 38d | 0d | Front End Developer | 24h |
| 168 | 2.3.3.5 | **Unit Testing** | 21d | 2022-03-18 | 2022-04-15 |  | 36d |  |  | 64h |
| 169 | 2.3.3.5.1 | Creation of test cases | 3d | 2022-03-18 | 2022-03-22 | 167 | 36d | 0d | Front End Developer | 24h |
| 170 | 2.3.3.5.2 | Execution of test cases | 5d | 2022-04-11 | 2022-04-15 | 169 | 36d | 0d | Front End Developer | 40h |
| 171 | 2.3.4 | **System Integration Testing** | 7d | 2022-04-20 | 2022-04-28 |  | 36d |  |  | 56h |
| 172 | 2.3.4.1 | Creation of System Integration Test Cases | 3d | 2022-04-20 | 2022-04-22 | 170, 137, 151 | 36d | 0d | Quality Assurance | 24h |
| 173 | 2.3.4.2 | Execution of System Integration Test Cases | 4d | 2022-04-25 | 2022-04-28 | 172 | 36d |  | Quality Assurance | 32h |
| 174 | 2.4 | **Develop Inventory Management Module** | 76d | 2021-04-23 | 2021-08-06 |  | 23d |  |  | 944h |
| 175 | 2.4.1 | **DBMS:** | 12d | 2021-04-23 | 2021-05-10 |  | 137d |  |  | 96h |
| 176 | 2.4.1.1 | Install & Configure DBMS Engine & SQL Interface | 9d | 2021-04-23 | 2021-05-05 | 137 | 137d | 0d | Database Admin | 72h |
| 177 | 2.4.1.2 | Test SQL interface software | 3d | 2021-05-06 | 2021-05-10 | 176 | 137d | 0d | Database Admin | 24h |

| ID | WBS | Task | Duration | Start | Finish | Predecessors | Total slack | Free slack | Resources | Work |
| --- | --- | --- | --- | --- | --- | --- | --- | --- | --- | --- |
| 178 | 2.4.2 | **REST API Service Server:** | 46d | 2021-04-23 | 2021-06-25 |  | 90d |  |  | 352h |
| 179 | 2.4.2.1 | **Requirements** | 16d | 2021-04-23 | 2021-05-14 |  | 90d |  |  | 112h |
| 180 | 2.4.2.1.1 | Requirements Elicitation | 4d | 2021-04-23 | 2021-04-28 | 142 | 90d | 0d | Business Analyst - 1 | 32h |
| 181 | 2.4.2.1.2 | Documentation of requirements | 6d | 2021-04-29 | 2021-05-06 | 180 | 90d | 0d | Business Analyst - 1 | 48h |
| 182 | 2.4.2.1.3 | Review requirements | 4d | 2021-05-07 | 2021-05-14 | 181 | 90d | 0d | Client Resource | 32h |
| 183 | 2.4.2.2 | **Software Design** | 9d | 2021-05-17 | 2021-05-27 |  | 156d |  |  | 72h |
| 184 | 2.4.2.2.1 | Create design document | 6d | 2021-05-17 | 2021-05-24 | 182 | 156d | 0d | Technical Architect | 48h |
| 185 | 2.4.2.2.2 | Review of design | 3d | 2021-05-25 | 2021-05-27 | 184 | 156d | 0d | Technical Architect | 24h |
| 186 | 2.4.2.3 | **Software Development** | 13d | 2021-05-28 | 2021-06-15 |  | 156d |  |  | 104h |
| 187 | 2.4.2.3.1 | Development of software | 10d | 2021-05-28 | 2021-06-10 | 185 | 156d | 0d | Back End Developer - 2 | 80h |
| 188 | 2.4.2.3.2 | Code Review | 3d | 2021-06-11 | 2021-06-15 | 187 | 156d | 0d | Back End Developer - 2 | 24h |
| 189 | 2.4.2.4 | **Unit Testing** | 8d | 2021-06-16 | 2021-06-25 |  | 156d |  |  | 64h |
| 190 | 2.4.2.4.1 | Creation of test cases | 3d | 2021-06-16 | 2021-06-18 | 188 | 156d | 0d | Back End Developer - 2 | 24h |
| 191 | 2.4.2.4.2 | Execution of test cases | 5d | 2021-06-21 | 2021-06-25 | 190 | 156d | 23d | Back End Developer - 2 | 40h |
| 192 | 2.4.3 | **Client App:** | 46d | 2021-05-26 | 2021-07-28 |  | 0d |  |  | 440h |
| 193 | 2.4.3.1 | **Requirements** | 13d | 2021-05-26 | 2021-06-11 |  | 0d |  |  | 104h |
| 194 | 2.4.3.1.1 | Requirements Elicitation | 4d | 2021-05-26 | 2021-05-31 | 161 | 0d |  | Business Analyst - 2 | 32h |
| 195 | 2.4.3.1.2 | Documentation of requirements | 7d | 2021-06-01 | 2021-06-09 | 194 | 0d |  | Business Analyst - 2 | 56h |
| 196 | 2.4.3.1.3 | Review requirements | 2d | 2021-06-10 | 2021-06-11 | 195 | 0d |  | Client Resource | 16h |
| 197 | 2.4.3.2 | **User Interface design** | 14d | 2021-06-14 | 2021-07-01 |  | 0d |  |  | 112h |
| 198 | 2.4.3.2.1 | Initial Wireframe design | 4d | 2021-06-14 | 2021-06-17 | 196 | 0d |  | Business Analyst - 2 | 32h |
| 199 | 2.4.3.2.2 | Review of wireframe | 2d | 2021-06-18 | 2021-06-21 | 198 | 0d |  | Client Resource | 16h |
| 200 | 2.4.3.2.3 | Create design based off feedback | 6d | 2021-06-22 | 2021-06-29 | 199 | 0d |  | Business Analyst - 2 | 48h |
| 201 | 2.4.3.2.4 | Review design | 2d | 2021-06-30 | 2021-07-01 | 200 | 0d |  | Client Resource | 16h |

| ID | WBS | Task | Duration | Start | Finish | Predecessors | Total slack | Free slack | Resources | Work |
| --- | --- | --- | --- | --- | --- | --- | --- | --- | --- | --- |
| 202 | 2.4.3.3 | **Software Design** | 9d | 2021-06-14 | 2021-06-24 |  | 138d |  |  | 72h |
| 203 | 2.4.3.3.1 | Create design document | 6d | 2021-06-14 | 2021-06-21 | 196 | 138d | 0d | Technical Architect | 48h |
| 204 | 2.4.3.3.2 | Review of design | 3d | 2021-06-22 | 2021-06-24 | 203 | 138d | 5d | Technical Architect | 24h |
| 205 | 2.4.3.4 | **Software Development** | 11d | 2021-07-02 | 2021-07-16 |  | 133d |  |  | 88h |
| 206 | 2.4.3.4.1 | Development of software | 8d | 2021-07-02 | 2021-07-13 | 201, 204 | 133d | 0d | Front End Developer | 64h |
| 207 | 2.4.3.4.2 | Code Review | 3d | 2021-07-14 | 2021-07-16 | 206 | 133d | 0d | Front End Developer | 24h |
| 208 | 2.4.3.5 | **Unit Testing** | 8d | 2021-07-19 | 2021-07-28 |  | 133d |  |  | 64h |
| 209 | 2.4.3.5.1 | Creation of test cases | 3d | 2021-07-19 | 2021-07-21 | 207 | 133d | 0d | Front End Developer | 24h |
| 210 | 2.4.3.5.2 | Execution of test cases | 5d | 2021-07-22 | 2021-07-28 | 209 | 133d | 0d | Front End Developer | 40h |
| 211 | 2.4.4 | **System Integration Testing** | 7d | 2021-07-29 | 2021-08-06 |  | 133d |  |  | 56h |
| 212 | 2.4.4.1 | Creation of System Integration Test Cases | 3d | 2021-07-29 | 2021-08-02 | 177, 191, 210 | 133d | 0d | Quality Assurance | 24h |
| 213 | 2.4.4.2 | Execution of System Integration Test Cases | 4d | 2021-08-03 | 2021-08-06 | 212 | 133d | 0d | Quality Assurance | 32h |
| 214 | 2.5 | **Vulnerability Assessment** | 49d | 2021-08-09 | 2021-10-14 |  | 133d |  |  | 240h |
| 215 | 2.5.1 | Execution of vulnerability scan | 10d | 2021-08-09 | 2021-08-20 | 213 | 133d | 0d | Security Analyst | 80h |
| 216 | 2.5.2 | Creation of reports | 2d | 2021-08-23 | 2021-08-24 | 215 | 133d | 0d | Security Analyst | 16h |
| 217 | 2.5.3 | Vulnerability remediation by development team | 8d | 2021-08-25 | 2021-09-30 | 216 | 133d | 0d | Technical Architect | 64h |
| 218 | 2.5.4 | Re-scan for vulnerabilities | 7d | 2021-10-01 | 2021-10-11 | 217 | 133d | 0d | Security Analyst | 56h |
| 219 | 2.5.5 | Final report created | 3d | 2021-10-12 | 2021-10-14 | 218 | 133d | 0d | Security Analyst | 24h |
| 220 | 2.6 | **Performance Testing** | 13d | 2021-10-15 | 2021-11-02 |  | 133d |  |  | 104h |
| 221 | 2.6.1 | Creation of Performance Test Cases | 5d | 2021-10-15 | 2021-10-21 | 219 | 133d | 0d | Performance Engineer | 40h |
| 222 | 2.6.2 | Execution of test cases | 8d | 2021-10-22 | 2021-11-02 | 221 | 133d | 0d | Performance Engineer | 64h |
| 223 | 2.7 | **Regression Testing** | 11d | 2021-11-03 | 2021-11-17 |  | 133d |  |  | 88h |
| 224 | 2.7.1 | Creation of regression suite of test cases | 4d | 2021-11-03 | 2021-11-08 | 222 | 133d | 0d | Quality Assurance | 32h |
| 225 | 2.7.2 | Execution of regression suite | 7d | 2021-11-09 | 2021-11-17 | 224 | 133d | 0d | Quality Assurance | 56h |

| ID | WBS | Task | Duration | Start | Finish | Predecessors | Total slack | Free slack | Resources | Work |
| --- | --- | --- | --- | --- | --- | --- | --- | --- | --- | --- |
| 226 | 2.8 | **User Acceptance Testing** | 18d | 2021-11-19 | 2021-12-14 |  | 133d |  |  | 88h |
| 227 | 2.8.1 | Creation of User Acceptance Testing | 3d | 2021-11-19 | 2021-11-23 | 225 | 133d | 0d | Client Resource | 24h |
| 228 | 2.8.2 | Execution of User Acceptance testing | 7d | 2021-11-24 | 2021-12-13 | 227 | 133d | 0d | Client Resource | 56h |
| 229 | 2.8.3 | Client sign off for testing | 1d | 2021-12-14 | 2021-12-14 | 228 | 133d |  | Client Resource | 8h |
| 230 | 2.9 | **System Training** | 13d | 2021-11-18 | 2021-12-06 |  | 137d |  |  | 104h |
| 231 | 2.9.1 | Develop training materials and resources | 8d | 2021-11-18 | 2021-11-29 | 225 | 137d | 0d | Client Trainer | 64h |
| 232 | 2.9.2 | Staff training | 3d | 2021-11-30 | 2021-12-02 | 231 | 137d | 0d | Client Trainer | 24h |
| 233 | 2.9.3 | Staff workshops | 2d | 2021-12-03 | 2021-12-06 | 232 | 137d | 0d | Client Trainer | 16h |
| 234 | 2.10 | **Deployment** | 15d | 2021-11-18 | 2021-12-08 |  | 137d |  |  | 80h |
| 235 | 2.10.1 | Creation of rollout plan | 4d | 2021-11-18 | 2021-11-23 | 225 | 142d | 0d | Technical Architect | 32h |
| 236 | 2.10.2 | Review of roll out plan | 2d | 2021-11-24 | 2021-11-25 | 235 | 142d | 0d | Technical Architect | 16h |
| 237 | 2.10.3 | Dry-run of roll out plan | 2d | 2021-11-26 | 2021-11-29 | 236 | 142d | 5d | Technical Architect | 16h |
| 238 | 2.10.4 | Execution of rollout | 2d | 2021-12-07 | 2021-12-08 | 233, 237 | 137d |  | Technical Architect | 16h |
| 239 | 3 | **Phase 2** | 221d | 2021-05-11 | 2022-03-15 |  | 38d |  |  | 3416h |
| 240 | 3.1 | **Develop Patient Facing Record History** | 210d | 2021-05-11 | 2022-02-28 |  | 38d |  |  | 840h |
| 241 | 3.1.1 | **DBMS:** | 7d | 2021-05-11 | 2021-05-19 |  | 137d |  |  | 56h |
| 242 | 3.1.1.1 | Install & Configure DBMS Engine & SQL Interface | 5d | 2021-05-11 | 2021-05-17 | 177, 238 | 137d | 0d | Database Admin | 40h |
| 243 | 3.1.1.2 | Test SQL interface software | 2d | 2021-05-18 | 2021-05-19 | 242 | 137d | 0d | Database Admin | 16h |
| 244 | 3.1.2 | **REST API Service Server:** | 100d | 2021-05-17 | 2021-10-01 |  | 90d |  |  | 312h |
| 245 | 3.1.2.1 | **Requirements** | 8d | 2021-05-17 | 2021-05-26 |  | 90d |  |  | 64h |
| 246 | 3.1.2.1.1 | Requirements Elicitation | 3d | 2021-05-17 | 2021-05-19 | 182, 201 | 90d | 0d | Business Analyst - 1 | 24h |
| 247 | 3.1.2.1.2 | Documentation of requirements | 4d | 2021-05-20 | 2021-05-25 | 246 | 90d | 0d | Business Analyst - 1 | 32h |
| 248 | 3.1.2.1.3 | Review requirements | 1d | 2021-05-26 | 2021-05-26 | 247 | 90d | 0d | Client Resource | 8h |
| 249 | 3.1.2.2 | **Software Design** | 55d | 2021-05-28 | 2021-08-12 |  | 149d |  |  | 88h |
| 250 | 3.1.2.2.1 | Create design document | 8d | 2021-05-28 | 2021-06-08 | 248 | 149d | 0d | Technical Architect | 64h |
| 251 | 3.1.2.2.2 | Review of design | 3d | 2021-08-10 | 2021-08-12 | 250 | 149d | 0d | Technical Architect | 24h |

| ID | WBS | Task | Duration | Start | Finish | Predecessors | Total slack | Free slack | Resources | Work |
| --- | --- | --- | --- | --- | --- | --- | --- | --- | --- | --- |
| 252 | 3.1.2.3 | **Software Development** | 24d | 2021-08-13 | 2021-09-15 |  | 149d |  |  | 112h |
| 253 | 3.1.2.3.1 | Development of software | 10d | 2021-08-13 | 2021-08-26 | 251 | 149d | 0d | Back End Developer - 1 | 80h |
| 254 | 3.1.2.3.2 | Code Review | 4d | 2021-09-10 | 2021-09-15 | 253 | 149d | 0d | Back End Developer - 1 | 32h |
| 255 | 3.1.2.4 | **Unit Testing** | 8d | 2021-09-22 | 2021-10-01 |  | 149d |  |  | 48h |
| 256 | 3.1.2.4.1 | Creation of test cases | 2d | 2021-09-22 | 2021-09-23 | 254 | 149d | 0d | Back End Developer - 1 | 16h |
| 257 | 3.1.2.4.2 | Execution of test cases | 4d | 2021-09-28 | 2021-10-01 | 256 | 149d | 0d | Back End Developer - 1 | 32h |
| 258 | 3.1.3 | **Client App:** | 172d | 2021-07-02 | 2022-02-28 |  | 0d |  |  | 400h |
| 259 | 3.1.3.1 | **Requirements** | 11d | 2021-07-02 | 2021-07-16 |  | 0d |  |  | 88h |
| 260 | 3.1.3.1.1 | Requirements Elicitation | 5d | 2021-07-02 | 2021-07-08 | 201, 238 | 0d |  | Business Analyst - 2 | 40h |
| 261 | 3.1.3.1.2 | Documentation of requirements | 4d | 2021-07-09 | 2021-07-14 | 260 | 0d |  | Business Analyst - 2 | 32h |
| 262 | 3.1.3.1.3 | Review requirements | 2d | 2021-07-15 | 2021-07-16 | 261 | 0d |  | Client Resource | 16h |
| 263 | 3.1.3.2 | **User Interface design** | 10d | 2021-07-19 | 2021-07-30 |  | 0d |  |  | 80h |
| 264 | 3.1.3.2.1 | Initial Wireframe design | 2d | 2021-07-19 | 2021-07-20 | 262 | 0d |  | Business Analyst - 2 | 16h |
| 265 | 3.1.3.2.2 | Review of wireframe | 1d | 2021-07-21 | 2021-07-21 | 264 | 0d |  | Client Resource | 8h |
| 266 | 3.1.3.2.3 | Create design based off feedback | 6d | 2021-07-22 | 2021-07-29 | 265 | 0d |  | Business Analyst - 2 | 48h |
| 267 | 3.1.3.2.4 | Review design | 1d | 2021-07-30 | 2021-07-30 | 266 | 0d |  | Client Resource | 8h |
| 268 | 3.1.3.3 | **Software Design** | 95d | 2021-10-19 | 2022-02-28 |  | 79d |  |  | 80h |
| 269 | 3.1.3.3.1 | Create design document | 6d | 2021-10-19 | 2021-12-01 | 262 | 79d | 0d | Technical Architect | 48h |
| 270 | 3.1.3.3.2 | Review of design | 4d | 2022-02-23 | 2022-02-28 | 269 | 79d |  | Technical Architect | 32h |
| 271 | 3.1.3.4 | **Software Development** | 27d | 2021-08-02 | 2021-09-07 |  | 167d |  |  | 104h |
| 272 | 3.1.3.4.1 | Development of software | 10d | 2021-08-02 | 2021-09-02 | 262, 267 | 167d | 0d | Front End Developer | 80h |
| 273 | 3.1.3.4.2 | Code Review | 3d | 2021-09-03 | 2021-09-07 | 272 | 167d | 0d | Front End Developer | 24h |
| 274 | 3.1.3.5 | **Unit Testing** | 31d | 2021-09-08 | 2021-10-20 |  | 172d |  |  | 48h |
| 275 | 3.1.3.5.1 | Creation of test cases | 2d | 2021-09-08 | 2021-09-09 | 273 | 172d | 0d | Front End Developer | 16h |
| 276 | 3.1.3.5.2 | Execution of test cases | 4d | 2021-10-15 | 2021-10-20 | 275 | 172d |  | Front End Developer | 32h |

| ID | WBS | Task | Duration | Start | Finish | Predecessors | Total slack | Free slack | Resources | Work |
| --- | --- | --- | --- | --- | --- | --- | --- | --- | --- | --- |
| 277 | 3.1.4 | **System Integration Testing** | 36d | 2021-10-04 | 2021-11-22 |  | 149d |  |  | 72h |
| 278 | 3.1.4.1 | Creation of System Integration Test Cases | 3d | 2021-10-04 | 2021-10-06 | 243, 257, 273 | 149d | 0d | Quality Assurance | 24h |
| 279 | 3.1.4.2 | Execution of System Integration Test Cases | 6d | 2021-10-07 | 2021-11-22 | 278 | 149d |  | Quality Assurance | 48h |
| 280 | 3.2 | **Develop Patient Facing Appointment Module** | 206d | 2021-05-20 | 2022-03-03 |  | 52d |  |  | 928h |
| 281 | 3.2.1 | **DBMS:** | 10d | 2021-05-20 | 2021-06-02 |  | 137d |  |  | 80h |
| 282 | 3.2.1.1 | Install & Configure DBMS Engine & SQL Interface | 7d | 2021-05-20 | 2021-05-28 | 243 | 137d | 0d | Database Admin | 56h |
| 283 | 3.2.1.2 | Test SQL interface software | 3d | 2021-05-31 | 2021-06-02 | 282 | 137d | 0d | Database Admin | 24h |
| 284 | 3.2.2 | **REST API Service Server:** | 139d | 2021-05-27 | 2021-12-07 |  | 90d |  |  | 328h |
| 285 | 3.2.2.1 | **Requirements** | 10d | 2021-05-27 | 2021-06-09 |  | 90d |  |  | 80h |
| 286 | 3.2.2.1.1 | Requirements Elicitation | 4d | 2021-05-27 | 2021-06-01 | 248 | 90d | 0d | Business Analyst - 1 | 32h |
| 287 | 3.2.2.1.2 | Documentation of requirements | 3d | 2021-06-02 | 2021-06-04 | 286 | 90d | 0d | Business Analyst - 1 | 24h |
| 288 | 3.2.2.1.3 | Review requirements | 3d | 2021-06-07 | 2021-06-09 | 287 | 90d | 0d | Client Resource | 24h |
| 289 | 3.2.2.2 | **Software Design** | 86d | 2021-06-10 | 2021-10-07 |  | 120d |  |  | 96h |
| 290 | 3.2.2.2.1 | Create design document | 8d | 2021-06-10 | 2021-07-15 | 288 | 120d | 0d | Technical Architect | 64h |
| 291 | 3.2.2.2.2 | Review of design | 4d | 2021-10-04 | 2021-10-07 | 290 | 120d | 0d | Technical Architect | 32h |
| 292 | 3.2.2.3 | **Software Development** | 24d | 2021-10-20 | 2021-11-22 |  | 120d |  |  | 112h |
| 293 | 3.2.2.3.1 | Development of software | 10d | 2021-10-20 | 2021-11-02 | 291 | 120d | 0d | Back End Developer - 2 | 80h |
| 294 | 3.2.2.3.2 | Code Review | 4d | 2021-11-17 | 2021-11-22 | 293 | 120d | 0d | Back End Developer - 2 | 32h |
| 295 | 3.2.2.4 | **Unit Testing** | 7d | 2021-11-29 | 2021-12-07 |  | 120d |  |  | 40h |
| 296 | 3.2.2.4.1 | Creation of test cases | 2d | 2021-11-29 | 2021-11-30 | 294 | 120d | 0d | Back End Developer - 2 | 16h |
| 297 | 3.2.2.4.2 | Execution of test cases | 3d | 2021-12-03 | 2021-12-07 | 296 | 120d | 10d | Back End Developer - 2 | 24h |
| 298 | 3.2.3 | **Client App:** | 154d | 2021-08-02 | 2022-03-03 |  | 0d |  |  | 448h |
| 299 | 3.2.3.1 | **Requirements** | 9d | 2021-08-02 | 2021-08-12 |  | 0d |  |  | 72h |
| 300 | 3.2.3.1.1 | Requirements Elicitation | 3d | 2021-08-02 | 2021-08-04 | 267 | 0d |  | Business Analyst - 2 | 24h |
| 301 | 3.2.3.1.2 | Documentation of requirements | 4d | 2021-08-05 | 2021-08-10 | 300 | 0d |  | Business Analyst - 2 | 32h |
| 302 | 3.2.3.1.3 | Review requirements | 2d | 2021-08-11 | 2021-08-12 | 301 | 0d |  | Client Resource | 16h |

| ID | WBS | Task | Duration | Start | Finish | Predecessors | Total slack | Free slack | Resources | Work |
| --- | --- | --- | --- | --- | --- | --- | --- | --- | --- | --- |
| 303 | 3.2.3.2 | **User Interface design** | 48d | 2021-08-30 | 2021-11-03 |  | 110d |  |  | 128h |
| 304 | 3.2.3.2.1 | Initial Wireframe design | 4d | 2021-08-30 | 2021-09-08 | 302 | 110d | 0d | Business Analyst - 2 | 32h |
| 305 | 3.2.3.2.2 | Review of wireframe | 3d | 2021-09-14 | 2021-09-16 | 304 | 110d | 0d | Client Resource | 24h |
| 306 | 3.2.3.2.3 | Create design based off feedback | 7d | 2021-09-17 | 2021-10-29 | 305 | 110d | 0d | Business Analyst - 2 | 56h |
| 307 | 3.2.3.2.4 | Review design | 2d | 2021-11-02 | 2021-11-03 | 306 | 110d | 0d | Client Resource | 16h |
| 308 | 3.2.3.3 | **Software Design** | 66d | 2021-12-02 | 2022-03-03 |  | 76d |  |  | 88h |
| 309 | 3.2.3.3.1 | Create design document | 8d | 2021-12-02 | 2021-12-28 | 302 | 76d | 0d | Technical Architect | 64h |
| 310 | 3.2.3.3.2 | Review of design | 3d | 2022-03-01 | 2022-03-03 | 309 | 76d |  | Technical Architect | 24h |
| 311 | 3.2.3.4 | **Software Development** | 21d | 2021-11-04 | 2021-12-02 |  | 110d |  |  | 96h |
| 312 | 3.2.3.4.1 | Development of software | 9d | 2021-11-04 | 2021-11-16 | 302, 307 | 110d | 0d | Front End Developer | 72h |
| 313 | 3.2.3.4.2 | Code Review | 3d | 2021-11-30 | 2021-12-02 | 312 | 110d | 0d | Front End Developer | 24h |
| 314 | 3.2.3.5 | **Unit Testing** | 13d | 2021-12-03 | 2021-12-21 |  | 110d |  |  | 64h |
| 315 | 3.2.3.5.1 | Creation of test cases | 2d | 2021-12-03 | 2021-12-06 | 313 | 110d | 0d | Front End Developer | 16h |
| 316 | 3.2.3.5.2 | Execution of test cases | 6d | 2021-12-14 | 2021-12-21 | 315 | 110d | 0d | Front End Developer | 48h |
| 317 | 3.2.4 | **System Integration Testing** | 9d | 2022-01-04 | 2022-01-14 |  | 110d |  |  | 72h |
| 318 | 3.2.4.1 | Creation of System Integration Test Cases | 3d | 2022-01-04 | 2022-01-06 | 283, 297, 316 | 110d | 0d | Quality Assurance | 24h |
| 319 | 3.2.4.2 | Execution of System Integration Test Cases | 6d | 2022-01-07 | 2022-01-14 | 318 | 110d |  | Quality Assurance | 48h |
| 320 | 3.3 | **Develop Patient Self Service Check-in** | 99d | 2021-06-03 | 2021-10-19 |  | 51d |  |  | 944h |
| 321 | 3.3.1 | **DBMS:** | 12d | 2021-06-03 | 2021-06-18 |  | 137d |  |  | 96h |
| 322 | 3.3.1.1 | Install & Configure DBMS Engine & SQL Interface | 9d | 2021-06-03 | 2021-06-15 | 283 | 137d | 0d | Database Admin | 72h |
| 323 | 3.3.1.2 | Test SQL interface software | 3d | 2021-06-16 | 2021-06-18 | 322 | 137d | 0d | Database Admin | 24h |
| 324 | 3.3.2 | **REST API Service Server:** | 44d | 2021-06-10 | 2021-08-10 |  | 90d |  |  | 352h |
| 325 | 3.3.2.1 | **Requirements** | 14d | 2021-06-10 | 2021-06-29 |  | 90d |  |  | 112h |
| 326 | 3.3.2.1.1 | Requirements Elicitation | 4d | 2021-06-10 | 2021-06-15 | 288 | 90d | 0d | Business Analyst - 1 | 32h |
| 327 | 3.3.2.1.2 | Documentation of requirements | 6d | 2021-06-16 | 2021-06-23 | 326 | 90d | 0d | Business Analyst - 1 | 48h |
| 328 | 3.3.2.1.3 | Review requirements | 4d | 2021-06-24 | 2021-06-29 | 327 | 90d | 0d | Client Resource | 32h |

| ID | WBS | Task | Duration | Start | Finish | Predecessors | Total slack | Free slack | Resources | Work |
| --- | --- | --- | --- | --- | --- | --- | --- | --- | --- | --- |
| 329 | 3.3.2.2 | **Software Design** | 9d | 2021-06-30 | 2021-07-12 |  | 109d |  |  | 72h |
| 330 | 3.3.2.2.1 | Create design document | 6d | 2021-06-30 | 2021-07-07 | 328 | 109d | 0d | Technical Architect | 48h |
| 331 | 3.3.2.2.2 | Review of design | 3d | 2021-07-08 | 2021-07-12 | 330 | 109d | 0d | Technical Architect | 24h |
| 332 | 3.3.2.3 | **Software Development** | 13d | 2021-07-13 | 2021-07-29 |  | 109d |  |  | 104h |
| 333 | 3.3.2.3.1 | Development of software | 10d | 2021-07-13 | 2021-07-26 | 331 | 109d | 0d | Back End Developer - 1 | 80h |
| 334 | 3.3.2.3.2 | Code Review | 3d | 2021-07-27 | 2021-07-29 | 333 | 109d | 0d | Back End Developer - 1 | 24h |
| 335 | 3.3.2.4 | **Unit Testing** | 8d | 2021-07-30 | 2021-08-10 |  | 109d |  |  | 64h |
| 336 | 3.3.2.4.1 | Creation of test cases | 3d | 2021-07-30 | 2021-08-03 | 334 | 109d | 0d | Back End Developer - 1 | 24h |
| 337 | 3.3.2.4.2 | Execution of test cases | 5d | 2021-08-04 | 2021-08-10 | 336 | 109d | 43d | Back End Developer - 1 | 40h |
| 338 | 3.3.3 | **Client App:** | 41d | 2021-08-13 | 2021-10-08 |  | 0d |  |  | 440h |
| 339 | 3.3.3.1 | **Requirements** | 13d | 2021-08-13 | 2021-08-31 |  | 0d |  |  | 104h |
| 340 | 3.3.3.1.1 | Requirements Elicitation | 4d | 2021-08-13 | 2021-08-18 | 302 | 0d |  | Business Analyst - 2 | 32h |
| 341 | 3.3.3.1.2 | Documentation of requirements | 7d | 2021-08-19 | 2021-08-27 | 340 | 0d |  | Business Analyst - 2 | 56h |
| 342 | 3.3.3.1.3 | Review requirements | 2d | 2021-08-30 | 2021-08-31 | 341 | 0d |  | Client Resource | 16h |
| 343 | 3.3.3.2 | **User Interface design** | 14d | 2021-09-01 | 2021-09-20 |  | 0d |  |  | 112h |
| 344 | 3.3.3.2.1 | Initial Wireframe design | 4d | 2021-09-01 | 2021-09-06 | 342 | 0d |  | Business Analyst - 2 | 32h |
| 345 | 3.3.3.2.2 | Review of wireframe | 2d | 2021-09-07 | 2021-09-08 | 344 | 0d |  | Client Resource | 16h |
| 346 | 3.3.3.2.3 | Create design based off feedback | 6d | 2021-09-09 | 2021-09-16 | 345 | 0d |  | Business Analyst - 2 | 48h |
| 347 | 3.3.3.2.4 | Review design | 2d | 2021-09-17 | 2021-09-20 | 346 | 0d |  | Client Resource | 16h |
| 348 | 3.3.3.3 | **Software Design** | 9d | 2021-09-01 | 2021-09-13 |  | 66d |  |  | 72h |
| 349 | 3.3.3.3.1 | Create design document | 6d | 2021-09-01 | 2021-09-08 | 342 | 66d | 0d | Technical Architect | 48h |
| 350 | 3.3.3.3.2 | Review of design | 3d | 2021-09-09 | 2021-09-13 | 349 | 66d | 0d | Technical Architect | 24h |
| 351 | 3.3.3.4 | **Software Development** | 11d | 2021-09-14 | 2021-09-28 |  | 66d |  |  | 88h |
| 352 | 3.3.3.4.1 | Development of software | 8d | 2021-09-14 | 2021-09-23 | 342, 350 | 66d | 0d | Front End Developer | 64h |
| 353 | 3.3.3.4.2 | Code Review | 3d | 2021-09-24 | 2021-09-28 | 352 | 66d | 0d | Front End Developer | 24h |

| ID | WBS | Task | Duration | Start | Finish | Predecessors | Total slack | Free slack | Resources | Work |
| --- | --- | --- | --- | --- | --- | --- | --- | --- | --- | --- |
| 354 | 3.3.3.5 | **Unit Testing** | 8d | 2021-09-29 | 2021-10-08 |  | 66d |  |  | 64h |
| 355 | 3.3.3.5.1 | Creation of test cases | 3d | 2021-09-29 | 2021-10-01 | 353 | 66d | 0d | Front End Developer | 24h |
| 356 | 3.3.3.5.2 | Execution of test cases | 5d | 2021-10-04 | 2021-10-08 | 355 | 66d | 0d | Front End Developer | 40h |
| 357 | 3.3.4 | **System Integration Testing** | 7d | 2021-10-11 | 2021-10-19 |  | 66d |  |  | 56h |
| 358 | 3.3.4.1 | Creation of System Integration Test Cases | 3d | 2021-10-11 | 2021-10-13 | 323, 337, 356 | 66d | 0d | Quality Assurance | 24h |
| 359 | 3.3.4.2 | Execution of System Integration Test Cases | 4d | 2021-10-14 | 2021-10-19 | 358 | 66d | 0d | Quality Assurance | 32h |
| 360 | 3.4 | **Vulnerability Assessment** | 30d | 2021-10-20 | 2021-11-30 |  | 66d |  |  | 240h |
| 361 | 3.4.1 | Execution of vulnerability scan | 10d | 2021-10-20 | 2021-11-02 | 359 | 66d | 0d | Security Analyst | 80h |
| 362 | 3.4.2 | Creation of reports | 2d | 2021-11-03 | 2021-11-04 | 361 | 66d | 0d | Security Analyst | 16h |
| 363 | 3.4.3 | Vulnerability remediation by development team | 8d | 2021-11-05 | 2021-11-16 | 362 | 66d | 0d | Technical Architect | 64h |
| 364 | 3.4.4 | Re-scan for vulnerabilities | 7d | 2021-11-17 | 2021-11-25 | 363 | 66d | 0d | Security Analyst | 56h |
| 365 | 3.4.5 | Final report created | 3d | 2021-11-26 | 2021-11-30 | 364 | 66d | 0d | Security Analyst | 24h |
| 366 | 3.5 | **Performance Testing** | 13d | 2021-12-01 | 2021-12-17 |  | 66d |  |  | 104h |
| 367 | 3.5.1 | Creation of Performance Test Cases | 5d | 2021-12-01 | 2021-12-07 | 365 | 66d | 0d | Performance Engineer | 40h |
| 368 | 3.5.2 | Execution of test cases | 8d | 2021-12-08 | 2021-12-17 | 367 | 66d | 0d | Performance Engineer | 64h |
| 369 | 3.6 | **Regression Testing** | 11d | 2021-12-20 | 2022-01-03 |  | 66d |  |  | 88h |
| 370 | 3.6.1 | Creation of regression suite of test cases | 4d | 2021-12-20 | 2021-12-23 | 368 | 66d | 0d | Quality Assurance | 32h |
| 371 | 3.6.2 | Execution of regression suite | 7d | 2021-12-24 | 2022-01-03 | 370 | 66d | 0d | Quality Assurance | 56h |
| 372 | 3.7 | **User Acceptance Testing** | 17d | 2022-01-05 | 2022-01-27 |  | 101d |  |  | 88h |
| 373 | 3.7.1 | Creation of User Acceptance Testing | 3d | 2022-01-05 | 2022-01-07 | 371 | 101d | 0d | Client Resource | 24h |
| 374 | 3.7.2 | Execution of User Acceptance testing | 7d | 2022-01-13 | 2022-01-26 | 373 | 101d | 0d | Client Resource | 56h |
| 375 | 3.7.3 | Client sign off for testing | 1d | 2022-01-27 | 2022-01-27 | 374 | 101d |  | Client Resource | 8h |
| 376 | 3.8 | **System Training** | 13d | 2022-01-04 | 2022-01-20 |  | 106d |  |  | 104h |
| 377 | 3.8.1 | Develop training materials and resources | 8d | 2022-01-04 | 2022-01-13 | 371 | 106d | 0d | Client Trainer | 64h |
| 378 | 3.8.2 | Staff training | 3d | 2022-01-14 | 2022-01-18 | 377 | 106d | 0d | Client Trainer | 24h |
| 379 | 3.8.3 | Staff workshops | 2d | 2022-01-19 | 2022-01-20 | 378 | 106d |  | Client Trainer | 16h |

| ID | WBS | Task | Duration | Start | Finish | Predecessors | Total slack | Free slack | Resources | Work |
| --- | --- | --- | --- | --- | --- | --- | --- | --- | --- | --- |
| 380 | 3.9 | **Deployment** | 51d | 2022-01-04 | 2022-03-15 |  | 66d |  |  | 80h |
| 381 | 3.9.1 | Creation of rollout plan | 4d | 2022-01-04 | 2022-01-07 | 371 | 66d | 0d | Technical Architect | 32h |
| 382 | 3.9.2 | Review of roll out plan | 2d | 2022-01-10 | 2022-01-11 | 381 | 66d | 0d | Technical Architect | 16h |
| 383 | 3.9.3 | Dry-run of roll out plan | 2d | 2022-01-26 | 2022-01-27 | 382 | 66d | 0d | Technical Architect | 16h |
| 384 | 3.9.4 | Execution of rollout | 2d | 2022-03-14 | 2022-03-15 | 383 | 68d |  | Technical Architect | 16h |
| 385 | 4 | **Phase 3** | 260d | 2021-06-21 | 2022-06-17 |  | 0d |  |  | 4592h |
| 386 | 4.1 | **Develop report generation module** | 227d | 2021-06-21 | 2022-05-03 |  | 33d |  |  | 840h |
| 387 | 4.1.1 | **DBMS:** | 7d | 2021-06-21 | 2021-06-29 |  | 137d |  |  | 56h |
| 388 | 4.1.1.1 | Install & Configure DBMS Engine & SQL Interface | 5d | 2021-06-21 | 2021-06-25 | 323 | 137d | 0d | Database Admin | 40h |
| 389 | 4.1.1.2 | Test SQL interface software | 2d | 2021-06-28 | 2021-06-29 | 388 | 137d | 0d | Database Admin | 16h |
| 390 | 4.1.2 | **REST API Service Server:** | 72d | 2021-06-30 | 2021-10-07 |  | 90d |  |  | 312h |
| 391 | 4.1.2.1 | **Requirements** | 8d | 2021-06-30 | 2021-07-09 |  | 90d |  |  | 64h |
| 392 | 4.1.2.1.1 | Requirements gathering | 3d | 2021-06-30 | 2021-07-02 | 328, 375 | 90d | 0d | Business Analyst - 1 | 24h |
| 393 | 4.1.2.1.2 | Documentation of requirements | 4d | 2021-07-05 | 2021-07-08 | 392 | 90d | 0d | Business Analyst - 1 | 32h |
| 394 | 4.1.2.1.3 | Review requirements | 1d | 2021-07-09 | 2021-07-09 | 393 | 90d | 0d | Client Resource | 8h |
| 395 | 4.1.2.2 | **SoftwareDesign** | 23d | 2021-07-16 | 2021-08-17 |  | 153d |  |  | 88h |
| 396 | 4.1.2.2.1 | Create design document | 8d | 2021-07-16 | 2021-07-27 | 394 | 153d | 0d | Technical Architect | 64h |
| 397 | 4.1.2.2.2 | Review of design | 3d | 2021-08-13 | 2021-08-17 | 396 | 153d | 0d | Technical Architect | 24h |
| 398 | 4.1.2.3 | **SoftwareDevelopment** | 18d | 2021-08-27 | 2021-09-21 |  | 153d |  |  | 112h |
| 399 | 4.1.2.3.1 | Development of software | 10d | 2021-08-27 | 2021-09-09 | 397 | 153d | 0d | Back End Developer - 1 | 80h |
| 400 | 4.1.2.3.2 | Code Review | 4d | 2021-09-16 | 2021-09-21 | 399 | 153d | 0d | Back End Developer - 1 | 32h |
| 401 | 4.1.2.4 | **Unit Testing** | 10d | 2021-09-24 | 2021-10-07 |  | 153d |  |  | 48h |
| 402 | 4.1.2.4.1 | Creation of test cases | 2d | 2021-09-24 | 2021-09-27 | 400 | 153d | 0d | Back End Developer - 1 | 16h |
| 403 | 4.1.2.4.2 | Execution of test cases | 4d | 2021-10-04 | 2021-10-07 | 402 | 153d | 120d | Back End Developer - 1 | 32h |

| ID | WBS | Task | Duration | Start | Finish | Predecessors | Total slack | Free slack | Resources | Work |
| --- | --- | --- | --- | --- | --- | --- | --- | --- | --- | --- |
| 404 | 4.1.3 | **Client App:** | 133d | 2021-09-21 | 2022-03-24 |  | 0d |  |  | 400h |
| 405 | 4.1.3.1 | **Requirements** | 11d | 2021-09-21 | 2021-10-05 |  | 0d |  |  | 88h |
| 406 | 4.1.3.1.1 | Requirements Elicitation | 5d | 2021-09-21 | 2021-09-27 | 347, 375 | 0d |  | Business Analyst - 2 | 40h |
| 407 | 4.1.3.1.2 | Documentation of requirements | 4d | 2021-09-28 | 2021-10-01 | 406 | 0d |  | Business Analyst - 2 | 32h |
| 408 | 4.1.3.1.3 | Review requirements | 2d | 2021-10-04 | 2021-10-05 | 407 | 0d |  | Client Resource | 16h |
| 409 | 4.1.3.2 | **User Interface design** | 10d | 2021-10-06 | 2021-10-19 |  | 0d |  |  | 80h |
| 410 | 4.1.3.2.1 | Initial Wireframe design | 2d | 2021-10-06 | 2021-10-07 | 408 | 0d |  | Business Analyst - 2 | 16h |
| 411 | 4.1.3.2.2 | Review of wireframe | 1d | 2021-10-08 | 2021-10-08 | 410 | 0d |  | Client Resource | 8h |
| 412 | 4.1.3.2.3 | Create design based off feedback | 6d | 2021-10-11 | 2021-10-18 | 411 | 0d |  | Business Analyst - 2 | 48h |
| 413 | 4.1.3.2.4 | Review design | 1d | 2021-10-19 | 2021-10-19 | 412 | 0d |  | Client Resource | 8h |
| 414 | 4.1.3.3 | **Software Design** | 10d | 2021-10-20 | 2021-11-02 |  | 33d |  |  | 80h |
| 415 | 4.1.3.3.1 | Create design document | 6d | 2021-10-20 | 2021-10-27 | 408, 413 | 33d | 0d | Technical Architect | 48h |
| 416 | 4.1.3.3.2 | Review of design | 4d | 2021-10-28 | 2021-11-02 | 415 | 33d | 0d | Technical Architect | 32h |
| 417 | 4.1.3.4 | **Software Development** | 27d | 2021-11-03 | 2021-12-09 |  | 33d |  |  | 104h |
| 418 | 4.1.3.4.1 | Development of software | 10d | 2021-11-03 | 2021-11-29 | 416 | 33d | 0d | Front End Developer | 80h |
| 419 | 4.1.3.4.2 | Code Review | 3d | 2021-12-07 | 2021-12-09 | 418 | 33d | 0d | Front End Developer | 24h |
| 420 | 4.1.3.5 | **Unit Testing** | 75d | 2021-12-10 | 2022-03-24 |  | 33d |  |  | 48h |
| 421 | 4.1.3.5.1 | Creation of test cases | 2d | 2021-12-10 | 2021-12-13 | 419 | 33d | 0d | Front End Developer | 16h |
| 422 | 4.1.3.5.2 | Execution of test cases | 4d | 2022-01-11 | 2022-03-24 | 421 | 33d | 0d | Front End Developer | 32h |
| 423 | 4.1.4 | **System Integration Testing** | 28d | 2022-03-25 | 2022-05-03 |  | 33d |  |  | 72h |
| 424 | 4.1.4.1 | Creation of System Integration Test Cases | 3d | 2022-03-25 | 2022-03-29 | 389, 403, 422 | 33d | 0d | Quality Assurance | 24h |
| 425 | 4.1.4.2 | Execution of System Integration Test Cases | 6d | 2022-03-30 | 2022-05-03 | 424 | 33d |  | Quality Assurance | 48h |
| 426 | 4.2 | **Develop external inventory management module** | 235d | 2021-06-30 | 2022-05-24 |  | 18d |  |  | 928h |
| 427 | 4.2.1 | **DBMS:** | 10d | 2021-06-30 | 2021-07-13 |  | 137d |  |  | 80h |
| 428 | 4.2.1.1 | Install & Configure DBMS Engine & SQL Interface | 7d | 2021-06-30 | 2021-07-08 | 389 | 137d | 0d | Database Admin | 56h |
| 429 | 4.2.1.2 | Test SQL interface software | 3d | 2021-07-09 | 2021-07-13 | 428 | 137d | 0d | Database Admin | 24h |

| ID | WBS | Task | Duration | Start | Finish | Predecessors | Total slack | Free slack | Resources | Work |
| --- | --- | --- | --- | --- | --- | --- | --- | --- | --- | --- |
| 430 | 4.2.2 | **REST API Service Server:** | 110d | 2021-07-12 | 2021-12-10 |  | 90d |  |  | 328h |
| 431 | 4.2.2.1 | **Requirements** | 11d | 2021-07-12 | 2021-07-26 |  | 90d |  |  | 80h |
| 432 | 4.2.2.1.1 | Requirements Elicitation | 4d | 2021-07-12 | 2021-07-15 | 394 | 90d | 0d | Business Analyst - 1 | 32h |
| 433 | 4.2.2.1.2 | Documentation of requirements | 3d | 2021-07-16 | 2021-07-20 | 432 | 90d | 0d | Business Analyst - 1 | 24h |
| 434 | 4.2.2.1.3 | Review requirements | 3d | 2021-07-22 | 2021-07-26 | 433 | 90d | 0d | Client Resource | 24h |
| 435 | 4.2.2.2 | **Software Design** | 56d | 2021-07-28 | 2021-10-13 |  | 100d |  |  | 96h |
| 436 | 4.2.2.2.1 | Create design document | 8d | 2021-07-28 | 2021-08-06 | 434 | 100d | 0d | Technical Architect | 64h |
| 437 | 4.2.2.2.2 | Review of design | 4d | 2021-10-08 | 2021-10-13 | 436 | 100d | 0d | Technical Architect | 32h |
| 438 | 4.2.2.3 | **Software Development** | 18d | 2021-11-03 | 2021-11-26 |  | 100d |  |  | 112h |
| 439 | 4.2.2.3.1 | Development of software | 10d | 2021-11-03 | 2021-11-16 | 437 | 100d | 0d | Back End Developer - 2 | 80h |
| 440 | 4.2.2.3.2 | Code Review | 4d | 2021-11-23 | 2021-11-26 | 439 | 100d | 0d | Back End Developer - 2 | 32h |
| 441 | 4.2.2.4 | **Unit Testing** | 8d | 2021-12-01 | 2021-12-10 |  | 98d |  |  | 40h |
| 442 | 4.2.2.4.1 | Creation of test cases | 2d | 2021-12-01 | 2021-12-02 | 440 | 98d | 0d | Back End Developer - 2 | 16h |
| 443 | 4.2.2.4.2 | Execution of test cases | 3d | 2021-12-08 | 2021-12-10 | 442 | 98d | 80d | Back End Developer - 2 | 24h |
| 444 | 4.2.3 | **Client App:** | 118d | 2021-10-20 | 2022-04-01 |  | 0d |  |  | 448h |
| 445 | 4.2.3.1 | **Requirements** | 9d | 2021-10-20 | 2021-11-01 |  | 0d |  |  | 72h |
| 446 | 4.2.3.1.1 | Requirements Elicitation | 3d | 2021-10-20 | 2021-10-22 | 413 | 0d |  | Business Analyst - 2 | 24h |
| 447 | 4.2.3.1.2 | Documentation of requirements | 4d | 2021-10-25 | 2021-10-28 | 446 | 0d |  | Business Analyst - 2 | 32h |
| 448 | 4.2.3.1.3 | Review requirements | 2d | 2021-10-29 | 2021-11-01 | 447 | 0d |  | Client Resource | 16h |
| 449 | 4.2.3.2 | **User Interface design** | 41d | 2021-11-17 | 2022-01-12 |  | 17d |  |  | 128h |
| 450 | 4.2.3.2.1 | Initial Wireframe design | 4d | 2021-11-17 | 2021-11-26 | 448 | 17d | 0d | Business Analyst - 2 | 32h |
| 451 | 4.2.3.2.2 | Review of wireframe | 3d | 2021-11-29 | 2021-12-01 | 450 | 17d | 0d | Client Resource | 24h |
| 452 | 4.2.3.2.3 | Create design based off feedback | 7d | 2021-12-07 | 2022-01-10 | 451 | 17d | 0d | Business Analyst - 2 | 56h |
| 453 | 4.2.3.2.4 | Review design | 2d | 2022-01-11 | 2022-01-12 | 452 | 17d | 0d | Client Resource | 16h |

| ID | WBS | Task | Duration | Start | Finish | Predecessors | Total slack | Free slack | Resources | Work |
| --- | --- | --- | --- | --- | --- | --- | --- | --- | --- | --- |
| 454 | 4.2.3.3 | **Software Design** | 50d | 2021-12-29 | 2022-03-08 |  | 73d |  |  | 88h |
| 455 | 4.2.3.3.1 | Create design document | 8d | 2021-12-29 | 2022-01-17 | 448 | 74d | 0d | Technical Architect | 64h |
| 456 | 4.2.3.3.2 | Review of design | 3d | 2022-03-04 | 2022-03-08 | 455 | 73d |  | Technical Architect | 24h |
| 457 | 4.2.3.4 | **Software Development** | 41d | 2022-01-13 | 2022-03-10 |  | 17d |  |  | 96h |
| 458 | 4.2.3.4.1 | Development of software | 9d | 2022-01-13 | 2022-02-23 | 448, 453 | 17d | 0d | Front End Developer | 72h |
| 459 | 4.2.3.4.2 | Code Review | 3d | 2022-03-08 | 2022-03-10 | 458 | 18d | 0d | Front End Developer | 24h |
| 460 | 4.2.3.5 | **Unit Testing** | 13d | 2022-03-16 | 2022-04-01 |  | 18d |  |  | 64h |
| 461 | 4.2.3.5.1 | Creation of test cases | 2d | 2022-03-16 | 2022-03-17 | 459 | 18d | 0d | Front End Developer | 16h |
| 462 | 4.2.3.5.2 | Execution of test cases | 6d | 2022-03-25 | 2022-04-01 | 461 | 18d | 0d | Front End Developer | 48h |
| 463 | 4.2.4 | **System Integration Testing** | 37d | 2022-04-04 | 2022-05-24 |  | 18d |  |  | 72h |
| 464 | 4.2.4.1 | Creation of System Integration Test Cases | 3d | 2022-04-04 | 2022-04-06 | 429, 443, 462 | 18d | 0d | Quality Assurance | 24h |
| 465 | 4.2.4.2 | Execution of System Integration Test Cases | 6d | 2022-04-07 | 2022-05-24 | 464 | 18d |  | Quality Assurance | 48h |
| 466 | 4.3 | **Develop payment and accounting module** | 200d | 2021-07-14 | 2022-04-19 |  | 43d |  |  | 944h |
| 467 | 4.3.1 | **DBMS:** | 12d | 2021-07-14 | 2021-07-29 |  | 137d |  |  | 96h |
| 468 | 4.3.1.1 | Install & Configure DBMS Engine & SQL Interface | 9d | 2021-07-14 | 2021-07-26 | 429 | 137d | 0d | Database Admin | 72h |
| 469 | 4.3.1.2 | Test SQL interface software | 3d | 2021-07-27 | 2021-07-29 | 468 | 137d | 0d | Database Admin | 24h |
| 470 | 4.3.2 | **REST API Service Server:** | 81d | 2021-07-27 | 2021-11-16 |  | 90d |  |  | 352h |
| 471 | 4.3.2.1 | **Requirements** | 16d | 2021-07-27 | 2021-08-17 |  | 90d |  |  | 112h |
| 472 | 4.3.2.1.1 | Requirements Elicitation | 4d | 2021-07-27 | 2021-07-30 | 434 | 90d | 0d | Business Analyst - 1 | 32h |
| 473 | 4.3.2.1.2 | Documentation of requirements | 6d | 2021-08-02 | 2021-08-09 | 472 | 90d | 0d | Business Analyst - 1 | 48h |
| 474 | 4.3.2.1.3 | Review requirements | 4d | 2021-08-10 | 2021-08-17 | 473 | 90d | 0d | Client Resource | 32h |
| 475 | 4.3.2.2 | **Software Design** | 44d | 2021-08-18 | 2021-10-18 |  | 146d |  |  | 72h |
| 476 | 4.3.2.2.1 | Create design document | 6d | 2021-08-18 | 2021-10-01 | 474 | 146d | 0d | Technical Architect | 48h |
| 477 | 4.3.2.2.2 | Review of design | 3d | 2021-10-14 | 2021-10-18 | 476 | 146d | 0d | Technical Architect | 24h |

| ID | WBS | Task | Duration | Start | Finish | Predecessors | Total slack | Free slack | Resources | Work |
| --- | --- | --- | --- | --- | --- | --- | --- | --- | --- | --- |
| 478 | 4.3.2.3 | **Software Development** | 13d | 2021-10-19 | 2021-11-04 |  | 146d |  |  | 104h |
| 479 | 4.3.2.3.1 | Development of software | 10d | 2021-10-19 | 2021-11-01 | 477 | 146d | 0d | Back End Developer - 1 | 80h |
| 480 | 4.3.2.3.2 | Code Review | 3d | 2021-11-02 | 2021-11-04 | 479 | 146d | 0d | Back End Developer - 1 | 24h |
| 481 | 4.3.2.4 | **Unit Testing** | 8d | 2021-11-05 | 2021-11-16 |  | 146d |  |  | 64h |
| 482 | 4.3.2.4.1 | Creation of test cases | 3d | 2021-11-05 | 2021-11-09 | 480 | 146d | 0d | Back End Developer - 1 | 24h |
| 483 | 4.3.2.4.2 | Execution of test cases | 5d | 2021-11-10 | 2021-11-16 | 482 | 146d | 103d | Back End Developer - 1 | 40h |
| 484 | 4.3.3 | **Client App:** | 114d | 2021-11-02 | 2022-04-08 |  | 0d |  |  | 440h |
| 485 | 4.3.3.1 | **Requirements** | 13d | 2021-11-02 | 2021-11-18 |  | 0d |  |  | 104h |
| 486 | 4.3.3.1.1 | Requirements Elicitation | 4d | 2021-11-02 | 2021-11-05 | 448 | 0d |  | Business Analyst - 2 | 32h |
| 487 | 4.3.3.1.2 | Documentation of requirements | 7d | 2021-11-08 | 2021-11-16 | 486 | 0d |  | Business Analyst - 2 | 56h |
| 488 | 4.3.3.1.3 | Review requirements | 2d | 2021-11-17 | 2021-11-18 | 487 | 0d |  | Client Resource | 16h |
| 489 | 4.3.3.2 | **User Interface design** | 14d | 2021-11-19 | 2021-12-08 |  | 0d |  |  | 112h |
| 490 | 4.3.3.2.1 | Initial Wireframe design | 4d | 2021-11-19 | 2021-11-24 | 488 | 0d |  | Business Analyst - 2 | 32h |
| 491 | 4.3.3.2.2 | Review of wireframe | 2d | 2021-11-25 | 2021-11-26 | 490 | 0d |  | Client Resource | 16h |
| 492 | 4.3.3.2.3 | Create design based off feedback | 6d | 2021-11-29 | 2021-12-06 | 491 | 0d |  | Business Analyst - 2 | 48h |
| 493 | 4.3.3.2.4 | Review design | 2d | 2021-12-07 | 2021-12-08 | 492 | 0d |  | Client Resource | 16h |
| 494 | 4.3.3.3 | **Software Design** | 9d | 2021-12-09 | 2021-12-21 |  | 43d |  |  | 72h |
| 495 | 4.3.3.3.1 | Create design document | 6d | 2021-12-09 | 2021-12-16 | 493 | 43d | 0d | Technical Architect | 48h |
| 496 | 4.3.3.3.2 | Review of design | 3d | 2021-12-17 | 2021-12-21 | 495 | 43d | 0d | Technical Architect | 24h |
| 497 | 4.3.3.4 | **Software Development** | 11d | 2021-12-22 | 2022-01-05 |  | 43d |  |  | 88h |
| 498 | 4.3.3.4.1 | Development of software | 8d | 2021-12-22 | 2021-12-31 | 496, 488 | 43d | 0d | Front End Developer | 64h |
| 499 | 4.3.3.4.2 | Code Review | 3d | 2022-01-03 | 2022-01-05 | 498 | 43d | 0d | Front End Developer | 24h |
| 500 | 4.3.3.5 | **Unit Testing** | 67d | 2022-01-06 | 2022-04-08 |  | 43d |  |  | 64h |
| 501 | 4.3.3.5.1 | Creation of test cases | 3d | 2022-01-06 | 2022-01-10 | 499 | 43d | 0d | Front End Developer | 24h |
| 502 | 4.3.3.5.2 | Execution of test cases | 5d | 2022-04-04 | 2022-04-08 | 501 | 43d | 0d | Front End Developer | 40h |

| ID | WBS | Task | Duration | Start | Finish | Predecessors | Total slack | Free slack | Resources | Work |
| --- | --- | --- | --- | --- | --- | --- | --- | --- | --- | --- |
| 503 | 4.3.4 | **System Integration Testing** | 7d | 2022-04-11 | 2022-04-19 |  | 43d |  |  | 56h |
| 504 | 4.3.4.1 | Creation of System Integration Test Cases | 3d | 2022-04-11 | 2022-04-13 | 469, 483, 502 | 43d | 0d | Quality Assurance | 24h |
| 505 | 4.3.4.2 | Execution of System Integration Test Cases | 4d | 2022-04-14 | 2022-04-19 | 504 | 43d |  | Quality Assurance | 32h |
| 506 | 4.4 | **Develop outgoing module** | 161d | 2021-07-30 | 2022-03-11 |  | 70d |  |  | 1040h |
| 507 | 4.4.1 | **DBMS:** | 11d | 2021-07-30 | 2021-08-13 |  | 137d |  |  | 88h |
| 508 | 4.4.1.1 | Install & Configure DBMS Engine & SQL Interface | 8d | 2021-07-30 | 2021-08-10 | 469 | 137d | 0d | Database Admin | 64h |
| 509 | 4.4.1.2 | Test SQL interface software | 3d | 2021-08-11 | 2021-08-13 | 508 | 137d |  | Database Admin | 24h |
| 510 | 4.4.2 | **REST API Service Server:** | 88d | 2021-08-18 | 2021-12-17 |  | 90d |  |  | 384h |
| 511 | 4.4.2.1 | **Requirements** | 19d | 2021-08-18 | 2021-09-13 |  | 90d |  |  | 136h |
| 512 | 4.4.2.1.1 | Requirements Elicitation | 6d | 2021-08-18 | 2021-08-25 | 474 | 90d | 0d | Business Analyst - 1 | 48h |
| 513 | 4.4.2.1.2 | Documentation of requirements | 8d | 2021-08-26 | 2021-09-06 | 512 | 90d | 0d | Business Analyst - 1 | 64h |
| 514 | 4.4.2.1.3 | Review requirements | 3d | 2021-09-09 | 2021-09-13 | 513 | 90d | 0d | Client Resource | 24h |
| 515 | 4.4.2.2 | **Software Design** | 10d | 2021-09-14 | 2021-09-27 |  | 90d |  |  | 80h |
| 516 | 4.4.2.2.1 | Create design document | 7d | 2021-09-14 | 2021-09-22 | 514 | 90d | 0d | Technical Architect | 56h |
| 517 | 4.4.2.2.2 | Review of design | 3d | 2021-09-23 | 2021-09-27 | 516 | 90d | 0d | Technical Architect | 24h |
| 518 | 4.4.2.3 | **Software Development** | 13d | 2021-09-28 | 2021-10-14 |  | 90d |  |  | 104h |
| 519 | 4.4.2.3.1 | Development of software | 10d | 2021-09-28 | 2021-10-11 | 517 | 90d | 0d | Back End Developer - 2 | 80h |
| 520 | 4.4.2.3.2 | Code Review | 3d | 2021-10-12 | 2021-10-14 | 519 | 90d | 0d | Back End Developer - 2 | 24h |
| 521 | 4.4.2.4 | **Unit Testing** | 46d | 2021-10-15 | 2021-12-17 |  | 90d |  |  | 64h |
| 522 | 4.4.2.4.1 | Creation of test cases | 3d | 2021-10-15 | 2021-10-19 | 520 | 90d | 0d | Back End Developer - 2 | 24h |
| 523 | 4.4.2.4.2 | Execution of test cases | 5d | 2021-12-13 | 2021-12-17 | 522 | 130d |  | Back End Developer - 2 | 40h |
| 524 | 4.4.3 | **Client App:** | 67d | 2021-12-09 | 2022-03-11 |  | 0d |  |  | 504h |
| 525 | 4.4.3.1 | **Requirements** | 19d | 2021-12-09 | 2022-01-04 |  | 0d |  |  | 152h |
| 526 | 4.4.3.1.1 | Requirements Elicitation | 8d | 2021-12-09 | 2021-12-20 | 493 | 0d |  | Business Analyst - 2 | 64h |
| 527 | 4.4.3.1.2 | Documentation of requirements | 7d | 2021-12-21 | 2021-12-29 | 526 | 0d |  | Business Analyst - 2 | 56h |
| 528 | 4.4.3.1.3 | Review requirements | 4d | 2021-12-30 | 2022-01-04 | 527 | 0d |  | Client Resource | 32h |

| ID | WBS | Task | Duration | Start | Finish | Predecessors | Total slack | Free slack | Resources | Work |
| --- | --- | --- | --- | --- | --- | --- | --- | --- | --- | --- |
| 529 | 4.4.3.2 | **User Interface design** | 14d | 2022-01-05 | 2022-01-24 |  | 0d |  |  | 112h |
| 530 | 4.4.3.2.1 | Initial Wireframe design | 3d | 2022-01-05 | 2022-01-07 | 528 | 0d |  | Business Analyst - 2 | 24h |
| 531 | 4.4.3.2.2 | Review of wireframe | 1d | 2022-01-10 | 2022-01-10 | 530 | 0d |  | Client Resource | 8h |
| 532 | 4.4.3.2.3 | Create design based off feedback | 7d | 2022-01-11 | 2022-01-19 | 531 | 0d |  | Business Analyst - 2 | 56h |
| 533 | 4.4.3.2.4 | Review design | 3d | 2022-01-20 | 2022-01-24 | 532 | 0d |  | Client Resource | 24h |
| 534 | 4.4.3.3 | **Software Design** | 39d | 2022-01-18 | 2022-03-11 |  | 70d |  |  | 72h |
| 535 | 4.4.3.3.1 | Create design document | 6d | 2022-01-18 | 2022-01-25 | 528 | 70d | 0d | Technical Architect | 48h |
| 536 | 4.4.3.3.2 | Review of design | 3d | 2022-03-09 | 2022-03-11 | 535 | 70d |  | Technical Architect | 24h |
| 537 | 4.4.3.4 | **Software Development** | 13d | 2022-01-25 | 2022-02-10 |  | 0d |  |  | 104h |
| 538 | 4.4.3.4.1 | Development of software | 10d | 2022-01-25 | 2022-02-07 | 528, 533 | 0d |  | Front End Developer | 80h |
| 539 | 4.4.3.4.2 | Code Review | 3d | 2022-02-08 | 2022-02-10 | 538 | 0d |  | Front End Developer | 24h |
| 540 | 4.4.3.5 | **Unit Testing** | 8d | 2022-02-11 | 2022-02-22 |  | 0d |  |  | 64h |
| 541 | 4.4.3.5.1 | Creation of test cases | 3d | 2022-02-11 | 2022-02-15 | 539 | 0d |  | Front End Developer | 24h |
| 542 | 4.4.3.5.2 | Execution of test cases | 5d | 2022-02-16 | 2022-02-22 | 541 | 0d |  | Front End Developer | 40h |
| 543 | 4.4.4 | **System Integration Testing** | 8d | 2022-02-23 | 2022-03-04 |  | 0d |  |  | 64h |
| 544 | 4.4.4.1 | Creation of System Integration Test Cases | 3d | 2022-02-23 | 2022-02-25 | 509, 522, 542 | 0d |  | Quality Assurance | 24h |
| 545 | 4.4.4.2 | Execution of System Integration Test Cases | 5d | 2022-02-28 | 2022-03-04 | 544 | 0d |  | Quality Assurance | 40h |
| 546 | 4.5 | **Vulnerability Assessment** | 30d | 2022-03-07 | 2022-04-15 |  | 0d |  |  | 240h |
| 547 | 4.5.1 | Execution of vulnerability scan | 10d | 2022-03-07 | 2022-03-18 | 545 | 0d |  | Security Analyst | 80h |
| 548 | 4.5.2 | Creation of reports | 2d | 2022-03-21 | 2022-03-22 | 547 | 0d |  | Security Analyst | 16h |
| 549 | 4.5.3 | Vulnerability remediationby development team | 8d | 2022-03-23 | 2022-04-01 | 548 | 0d |  | Technical Architect | 64h |
| 550 | 4.5.4 | Re-scan for vulnerabilities | 7d | 2022-04-04 | 2022-04-12 | 549 | 0d |  | Security Analyst | 56h |
| 551 | 4.5.5 | Final reportcreated | 3d | 2022-04-13 | 2022-04-15 | 550 | 0d |  | Security Analyst | 24h |
| 552 | 4.6 | **Performance Testing** | 13d | 2022-04-18 | 2022-05-04 |  | 0d |  |  | 104h |
| 553 | 4.6.1 | Creation of Performance Test Cases | 5d | 2022-04-18 | 2022-04-22 | 551 | 0d |  | Performance Engineer | 40h |
| 554 | 4.6.2 | Execution of test cases | 8d | 2022-04-25 | 2022-05-04 | 553 | 0d |  | Performance Engineer | 64h |

| ID | WBS | Task | Duration | Start | Finish | Predecessors | Total slack | Free slack | Resources | Work |
| --- | --- | --- | --- | --- | --- | --- | --- | --- | --- | --- |
| 555 | 4.7 | **Regression Testing** | 11d | 2022-05-05 | 2022-05-19 |  | 0d |  |  | 88h |
| 556 | 4.7.1 | Creation of regression suite of test cases | 4d | 2022-05-05 | 2022-05-10 | 554 | 0d |  | Quality Assurance | 32h |
| 557 | 4.7.2 | Execution of regression suite | 7d | 2022-05-11 | 2022-05-19 | 556 | 0d |  | Quality Assurance | 56h |
| 558 | 4.8 | **User Acceptance Testing** | 11d | 2022-05-20 | 2022-06-03 |  | 10d |  |  | 88h |
| 559 | 4.8.1 | Creation of User Acceptance Testing | 3d | 2022-05-20 | 2022-05-24 | 557 | 10d | 0d | Client Resource | 24h |
| 560 | 4.8.2 | Execution of User Acceptance testing | 7d | 2022-05-25 | 2022-06-02 | 559 | 10d | 0d | Client Resource | 56h |
| 561 | 4.8.3 | Client sign off for testing | 1d | 2022-06-03 | 2022-06-03 | 560 | 10d |  | Client Resource | 8h |
| 562 | 4.9 | **System Training** | 13d | 2022-05-20 | 2022-06-07 |  | 8d |  |  | 104h |
| 563 | 4.9.1 | Develop training materials and resources | 8d | 2022-05-20 | 2022-05-31 | 557 | 8d | 0d | Client Trainer | 64h |
| 564 | 4.9.2 | Staff training | 3d | 2022-06-01 | 2022-06-03 | 563 | 8d | 0d | Client Trainer | 24h |
| 565 | 4.9.3 | Staff workshops | 2d | 2022-06-06 | 2022-06-07 | 564 | 8d |  | Client Trainer | 16h |
| 566 | 4.10 | **Deployment** | 10d | 2022-05-20 | 2022-06-02 |  | 0d |  |  | 80h |
| 567 | 4.10.1 | Creation of rollout plan | 4d | 2022-05-20 | 2022-05-25 | 557 | 0d |  | Technical Architect | 32h |
| 568 | 4.10.2 | Review of roll out plan | 2d | 2022-05-26 | 2022-05-27 | 567 | 0d |  | Technical Architect | 16h |
| 569 | 4.10.3 | Dry-runof roll out plan | 2d | 2022-05-30 | 2022-05-31 | 568 | 0d |  | Technical Architect | 16h |
| 570 | 4.10.4 | Execution of rollout | 2d | 2022-06-01 | 2022-06-02 | 569 | 0d |  | Technical Architect | 16h |
| 571 | 4.11 | **Warranty / Maintenance Period** | 11d | 2022-06-03 | 2022-06-17 |  | 0d |  |  | 136h |
| 572 | 4.11.1 | Pay vendor invoices | 2d | 2022-06-03 | 2022-06-06 | 570 | 7d | 0d | Project Manager | 16h |
| 573 | 4.11.2 | Close out any open purchase orders | 2d | 2022-06-07 | 2022-06-08 | 572 | 7d |  | Project Manager | 16h |
| 574 | 4.11.3 | Conduct lessons learned | 2d | 2022-06-09 | 2022-06-10 | 570 | 5d |  | Project Manager | 16h |
| 575 | 4.11.4 | Creation of support documentation | 5d | 2022-06-03 | 2022-06-09 | 570 | 0d |  | Technical Architect | 40h |
| 576 | 4.11.5 | Knowledge transfer of solution to support personnel | 6d | 2022-06-10 | 2022-06-17 | 575 | 0d |  | Technical Architect | 48h |
